# PSEGLI JMUX Replacement Engineering Phase 1 Schedule_20250210v2

Schedule from MS Project, 2025-08-04 to 2027-02-03, A marks actual dates.

## Calendars

- Standard: Mon-Fri 08:00-12:00, 13:00-17:00; Sat-Sun off. Exceptions (off unless hours are given): 2025-09-01 (Labor day), 2025-11-24 to 2025-11-26 (Thanksgiving Freeze 2025), 2025-11-27 to 2025-11-28 (Thanksgiving), 2025-12-22 to 2025-12-31 (Christmas Freeze 2025), 2026-01-01 (New Year), 2026-05-25 (Memorial 2026), 2026-07-03 (4th 2026), 2026-09-07 (Labor Day 2026), 2026-11-23 to 2026-11-27 (Thanksgiving Freeze 2026), 2026-12-21 to 2027-01-01 (December Freeze 2026).

## Resources

| Resource |
| --- |
| BMcD |
| PSEGLI |

## Schedule

| ID | WBS | Task | Type | Duration | Start | Finish | Predecessors | Complete | Remaining | Baseline start | Baseline finish | Baseline duration | Total slack | Free slack | Constraint | Resources | Work | Actual work |
| --- | --- | --- | --- | --- | --- | --- | --- | --- | --- | --- | --- | --- | --- | --- | --- | --- | --- | --- |
| 1 | 1 | **PSEGLI JMUX Replacement Engineering Phase 2** |  | 360d | 2025-08-04 A | 2027-02-03 |  | 9% | 328.51d | 2024-10-31 | 2026-01-20 | 310d | 0d |  |  |  | 12152h | 528h |
| 2 | 1.1 | Purchase Order Received | manual | 1d | 2025-08-04 A | 2025-08-04 A |  | 100% |  | 2024-10-31 | 2024-10-31 | 1d |  |  |  | PSEGLI | 8h | 8h |
| 3 | 1.2 | **Staging Support** |  | 5d | 2025-09-29 | 2025-10-03 |  |  |  |  |  |  | 0d |  |  |  |  |  |
| 4 | 1.2.1 | Staging Support | manual | 5d | 2025-09-29 | 2025-10-03 | 2 |  |  |  |  |  |  |  |  |  |  |  |
| 5 | 1.3 | **Construction Support Coordinator** |  | 120d | 2025-09-29 A | 2026-04-02 |  | 75% | 30d |  |  |  | 0d |  |  |  |  |  |
| 6 | 1.3.1 | Construction Support Coordinator | manual | 6mo | 2025-09-29 A | 2026-04-02 |  | 75% | 1.5mo |  |  |  |  |  | start no earlier than 2025-09-29 |  |  |  |
| 7 | 1.4 | **Detailed Engineering Site Surveys** |  | 40d | 2025-10-13 A | 2025-12-12 A |  | 100% |  | 2024-11-18 | 2025-02-28 | 74d |  |  |  |  | 40h | 40h |
| 8 | 1.4.1 | Site Survey Week 1 |  | 1w | 2025-10-13 A | 2025-10-17 A |  | 100% |  | 2024-11-18 | 2024-11-22 | 1w |  |  | start no earlier than 2025-10-13 | BMcD | 40h | 40h |
| 9 | 1.4.2 | Site Survey Week 2 |  | 1w | 2025-11-03 A | 2025-11-07 A |  | 100% |  | 2025-01-27 | 2025-01-31 | 1w |  |  | start no earlier than 2025-11-03 |  |  |  |
| 10 | 1.4.3 | Site Survey Week 3 |  | 1w | 2025-12-08 A | 2025-12-12 A |  | 100% |  | 2025-02-24 | 2025-02-28 | 1w |  |  | start no earlier than 2025-12-08 |  |  |  |
| 11 | 1.5 | **MPLS Network Node Design** |  | 131d | 2026-01-26 A | 2026-07-29 |  | 4% | 125.55d | 2024-11-01 | 2025-08-21 | 207d | 119d |  |  |  | 12104h | 480h |
| 12 | 1.5.1 | Site Design Start | manual | 1d | 2026-01-26 | 2026-01-26 |  |  |  | 2025-01-13 | 2025-01-13 | 1d |  |  |  | PSEGLI | 8h |  |
| 13 | 1.5.2 | **2H Far Rockaway** |  | 40d | 2026-01-27 A | 2026-03-23 |  | 50% | 20d | 2025-01-14 | 2025-06-05 | 102d | 209d |  |  |  | 336h | 160h |
| 14 | 1.5.2.1 | 2H Far Rockaway IFR |  | 4w | 2026-01-27 A | 2026-02-23 A | 12 | 100% |  | 2025-01-14 | 2025-02-10 | 4w |  |  |  | BMcD | 160h | 160h |
| 15 | 1.5.2.2 | 2H Far Rockaway IFR PSEG LI Review |  | 2w | 2026-02-24 | 2026-03-09 | 14 |  |  | 2025-02-18 | 2025-03-03 | 2w | 209d | 0d | finish no earlier than 2025-03-03 | PSEGLI | 80h |  |
| 16 | 1.5.2.3 | 2H Far Rockaway IFC |  | 2w | 2026-03-10 | 2026-03-23 | 15 |  |  | 2025-03-04 | 2025-06-05 | 13.4w | 209d |  | finish no earlier than 2025-06-05 | BMcD | 80h |  |
| 17 | 1.5.2.4 | 2H Far Rockaway As-Built | manual | 1d? | 2026-01-27 | 2026-01-27 |  |  |  | 2025-01-14 | 2025-01-14 | 1d? |  |  |  | BMcD | 8h |  |
| 18 | 1.5.2.5 | 2H Far Rockaway As-Built PSEG LI Review | manual | 1d? | 2026-01-27 | 2026-01-27 |  |  |  | 2025-01-14 | 2025-01-14 | 1d? |  |  |  | PSEGLI | 8h |  |
| 19 | 1.5.3 | **2K Valley Stream** |  | 40d | 2026-01-27 A | 2026-03-23 |  | 50% | 20d | 2025-01-14 | 2025-06-26 | 117d | 209d |  |  |  | 336h | 160h |
| 20 | 1.5.3.1 | 2K Valley Stream IFR |  | 4w | 2026-01-27 A | 2026-02-23 A | 12 | 100% |  | 2025-01-14 | 2025-02-10 | 4w |  |  |  | BMcD | 160h | 160h |
| 21 | 1.5.3.2 | 2K Valley Stream IFR PSEG LI Review |  | 2w | 2026-02-24 | 2026-03-09 | 20 |  |  | 2025-02-18 | 2025-03-03 | 2w | 209d | 0d | finish no earlier than 2025-03-03 | PSEGLI | 80h |  |
| 22 | 1.5.3.3 | 2K Valley Stream IFC |  | 2w | 2026-03-10 | 2026-03-23 | 21 |  |  | 2025-03-04 | 2025-06-26 | 16.4w | 209d |  | finish no earlier than 2025-06-26 | BMcD | 80h |  |
| 23 | 1.5.3.4 | 2K Valley Stream As-Built | manual | 1d? | 2026-01-27 | 2026-01-27 |  |  |  | 2025-01-14 | 2025-01-14 | 1d? |  |  |  | BMcD | 8h |  |
| 24 | 1.5.3.5 | 2K Valley Stream As-Built PSEG LI Review | manual | 1d? | 2026-01-27 | 2026-01-27 |  |  |  | 2025-01-14 | 2025-01-14 | 1d? |  |  |  | PSEGLI | 8h |  |

| ID | WBS | Task | Type | Duration | Start | Finish | Predecessors | Complete | Remaining | Baseline start | Baseline finish | Baseline duration | Total slack | Free slack | Constraint | Resources | Work | Actual work |
| --- | --- | --- | --- | --- | --- | --- | --- | --- | --- | --- | --- | --- | --- | --- | --- | --- | --- | --- |
| 25 | 1.5.4 | **2KB Cedarhurst** |  | 40d | 2026-01-27 A | 2026-03-23 |  | 50% | 20d | 2025-01-14 | 2025-06-26 | 117d | 209d |  |  |  | 336h | 160h |
| 26 | 1.5.4.1 | 2KB Cedarhurst IFR |  | 4w | 2026-01-27 A | 2026-02-23 A | 12 | 100% |  | 2025-01-14 | 2025-02-10 | 4w |  |  |  | BMcD | 160h | 160h |
| 27 | 1.5.4.2 | 2KB Cedarhurst IFR PSEG LI Review |  | 2w | 2026-02-24 | 2026-03-09 | 26 |  |  | 2025-02-18 | 2025-03-03 | 2w | 209d | 0d | finish no earlier than 2025-03-03 | PSEGLI | 80h |  |
| 28 | 1.5.4.3 | 2KB Cedarhurst IFC |  | 2w | 2026-03-10 | 2026-03-23 | 27 |  |  | 2025-03-04 | 2025-06-26 | 16.4w | 209d |  | finish no earlier than 2025-06-26 | BMcD | 80h |  |
| 29 | 1.5.4.4 | 2KB Cedarhurst As-Built | manual | 1d | 2026-01-27 | 2026-01-27 |  |  |  | 2025-01-14 | 2025-01-14 | 1d |  |  |  | BMcD | 8h |  |
| 30 | 1.5.4.5 | 2KB Cedarhurst As-Built PSEG LI Review | manual | 1d | 2026-01-27 | 2026-01-27 |  |  |  | 2025-01-14 | 2025-01-14 | 1d |  |  |  | PSEGLI | 8h |  |
| 31 | 1.5.5 | **2R Hewlett** |  | 40d | 2026-02-17 | 2026-04-13 |  |  |  | 2025-02-04 | 2025-06-05 | 87d | 194d |  |  |  | 336h |  |
| 32 | 1.5.5.1 | 2R Hewlett IFR |  | 4w | 2026-02-17 | 2026-03-16 | 12FS+3w |  |  | 2025-02-04 | 2025-03-03 | 4w | 194d | 0d |  | BMcD | 160h |  |
| 33 | 1.5.5.2 | 2R Hewlett IFR PSEG LI Review |  | 2w | 2026-03-17 | 2026-03-30 | 32 |  |  | 2025-03-04 | 2025-03-17 | 2w | 194d | 0d |  | PSEGLI | 80h |  |
| 34 | 1.5.5.3 | 2R Hewlett IFC |  | 2w | 2026-03-31 | 2026-04-13 | 33 |  |  | 2025-03-18 | 2025-06-05 | 11.4w | 194d |  | finish no earlier than 2025-06-05 | BMcD | 80h |  |
| 35 | 1.5.5.4 | 2R Hewlett As-Built | manual | 1d | 2026-02-17 | 2026-02-17 |  |  |  | 2025-02-04 | 2025-02-04 | 1d |  |  |  | BMcD | 8h |  |
| 36 | 1.5.5.5 | 2R Hewlett As-Built PSEG LI Review | manual | 1d | 2026-02-17 | 2026-02-17 |  |  |  | 2025-02-04 | 2025-02-04 | 1d |  |  |  | PSEGLI | 8h |  |
| 37 | 1.5.6 | **2R1 Hewlett Shelter** |  | 40d | 2026-02-17 | 2026-04-13 |  |  |  | 2025-02-10 | 2025-06-26 | 98d | 194d |  |  |  | 336h |  |
| 38 | 1.5.6.1 | 2R1 Hewlett Shelter IFR |  | 4w | 2026-02-17 | 2026-03-16 | 12FS+3w |  |  | 2025-02-10 | 2025-03-07 | 4w | 194d | 0d | finish no earlier than 2025-03-07 | BMcD | 160h |  |
| 39 | 1.5.6.2 | 2R1 Hewlett Shelter IFR PSEG LI Review |  | 2w | 2026-03-17 | 2026-03-30 | 38 |  |  | 2025-03-10 | 2025-03-21 | 2w | 194d | 0d |  | PSEGLI | 80h |  |
| 40 | 1.5.6.3 | 2R1 Hewlett Shelter IFC |  | 2w | 2026-03-31 | 2026-04-13 | 39 |  |  | 2025-03-24 | 2025-06-26 | 13.6w | 194d |  | finish no earlier than 2025-06-26 | BMcD | 80h |  |
| 41 | 1.5.6.4 | 2R1 Hewlett Shelter As-Built | manual | 1d? | 2026-02-17 | 2026-02-17 |  |  |  | 2025-02-10 | 2025-02-10 | 1d? |  |  |  | BMcD | 8h |  |
| 42 | 1.5.6.5 | 2R1 Hewlett Shelter As-Built PSEG LI Review | manual | 1d? | 2026-02-17 | 2026-02-17 |  |  |  | 2025-02-10 | 2025-02-10 | 1d? |  |  |  | PSEGLI | 8h |  |
| 43 | 1.5.7 | **2RB Green Acres** |  | 40d | 2026-03-03 | 2026-04-27 |  |  |  | 2025-02-18 | 2025-06-12 | 82d | 184d |  |  |  | 336h |  |
| 44 | 1.5.7.1 | 2RB Green Acres IFR |  | 4w | 2026-03-03 | 2026-03-30 | 12FS+5w |  |  | 2025-02-18 | 2025-03-17 | 4w | 184d | 0d |  | BMcD | 160h |  |
| 45 | 1.5.7.2 | 2RB Green Acres IFR PSEG LI Review |  | 2w | 2026-03-31 | 2026-04-13 | 44 |  |  | 2025-03-18 | 2025-03-31 | 2w | 184d | 0d |  | PSEGLI | 80h |  |
| 46 | 1.5.7.3 | 2RB Green Acres IFC |  | 2w | 2026-04-14 | 2026-04-27 | 45 |  |  | 2025-04-28 | 2025-06-12 | 6.6w | 184d |  | finish no earlier than 2025-06-12 | BMcD | 80h |  |
| 47 | 1.5.7.4 | 2RB Green Acres As-Built | manual | 1d | 2026-03-03 | 2026-03-03 |  |  |  | 2025-02-18 | 2025-02-18 | 1d |  |  |  | BMcD | 8h |  |
| 48 | 1.5.7.5 | 2RB Green Acres As-Built PSEG LI Review | manual | 1d | 2026-03-03 | 2026-03-03 |  |  |  | 2025-02-18 | 2025-02-18 | 1d |  |  |  | PSEGLI | 8h |  |

| ID | WBS | Task | Type | Duration | Start | Finish | Predecessors | Baseline start | Baseline finish | Baseline duration | Total slack | Free slack | Constraint | Resources | Work |
| --- | --- | --- | --- | --- | --- | --- | --- | --- | --- | --- | --- | --- | --- | --- | --- |
| 49 | 1.5.8 | **2WB Barrett Power Plant** |  | 40d | 2026-03-03 | 2026-04-27 |  | 2025-02-18 | 2025-06-12 | 82d | 184d |  |  |  | 336h |
| 50 | 1.5.8.1 | 2WB Barrett Power Plant IFR |  | 4w | 2026-03-03 | 2026-03-30 | 12FS+5w | 2025-02-18 | 2025-03-17 | 4w | 184d | 0d |  | BMcD | 160h |
| 51 | 1.5.8.2 | 2WB Barrett Power Plant IFR PSEG LI Review |  | 2w | 2026-03-31 | 2026-04-13 | 50 | 2025-03-18 | 2025-03-31 | 2w | 184d | 0d |  | PSEGLI | 80h |
| 52 | 1.5.8.3 | 2WB Barrett Power Plant IFC |  | 2w | 2026-04-14 | 2026-04-27 | 51 | 2025-04-28 | 2025-06-12 | 6.6w | 184d |  | finish no earlier than 2025-06-12 | BMcD | 80h |
| 53 | 1.5.8.4 | 2WB Barrett Power Plant As-Built | manual | 1d | 2026-03-03 | 2026-03-03 |  | 2025-02-18 | 2025-02-18 | 1d |  |  |  | BMcD | 8h |
| 54 | 1.5.8.5 | 2WB Barrett Power Plant As-Built PSEG LI Review | manual | 1d | 2026-03-03 | 2026-03-03 |  | 2025-02-18 | 2025-02-18 | 1d |  |  |  | PSEGLI | 8h |
| 55 | 1.5.9 | **2ZB Barrett Power Plant (EF Barrett PS)** |  | 40d | 2026-03-17 | 2026-05-11 |  | 2025-03-04 | 2025-06-19 | 77d | 174d |  |  |  | 336h |
| 56 | 1.5.9.1 | 2ZB Barrett Power Plant (EF Barrett PS) IFR |  | 4w | 2026-03-17 | 2026-04-13 | 12FS+7w | 2025-03-04 | 2025-05-21 | 11.4w | 174d | 0d | finish no earlier than 2025-05-21 | BMcD | 160h |
| 57 | 1.5.9.2 | 2ZB Barrett Power Plant (EF Barrett PS) IFR PSEG LI Review |  | 2w | 2026-04-14 | 2026-04-27 | 56 | 2025-05-22 | 2025-06-05 | 2w | 174d | 0d |  | PSEGLI | 80h |
| 58 | 1.5.9.3 | 2ZB Barrett Power Plant (EF Barrett PS) IFC |  | 2w | 2026-04-28 | 2026-05-11 | 57 | 2025-06-06 | 2025-06-19 | 2w | 174d |  | finish no earlier than 2025-06-19 | BMcD | 80h |
| 59 | 1.5.9.4 | 2ZB Barrett Power Plant (EF Barrett PS) As-Built | manual | 1d? | 2026-03-17 | 2026-03-17 |  | 2025-03-04 | 2025-03-04 | 1d? |  |  |  | BMcD | 8h |
| 60 | 1.5.9.5 | 2ZB Barrett Power Plant (EF Barrett PS) As-Built PSEG LI Review | manual | 1d? | 2026-03-17 | 2026-03-17 |  | 2025-03-04 | 2025-03-04 | 1d? |  |  |  | PSEGLI | 8h |
| 61 | 1.5.10 | **3J Whiteside** |  | 40d | 2026-03-31 | 2026-05-26 |  | 2025-03-18 | 2025-07-17 | 86d | 164d |  |  |  | 336h |
| 62 | 1.5.10.1 | 3J Whiteside IFR |  | 4w | 2026-03-31 | 2026-04-27 | 12FS+9w | 2025-03-18 | 2025-06-12 | 12.4w | 164d | 0d | finish no earlier than 2025-06-12 | BMcD | 160h |
| 63 | 1.5.10.2 | 3J Whiteside IFR PSEG LI Review |  | 2w | 2026-04-28 | 2026-05-11 | 62 | 2025-06-13 | 2025-06-26 | 2w | 164d | 0d |  | PSEGLI | 80h |
| 64 | 1.5.10.3 | 3J Whiteside IFC |  | 2w | 2026-05-12 | 2026-05-26 | 63 | 2025-07-03 | 2025-07-17 | 2w | 164d |  | finish no earlier than 2025-07-17 | BMcD | 80h |
| 65 | 1.5.10.4 | 3J Whiteside As-Built | manual | 1d | 2026-03-31 | 2026-03-31 |  | 2025-03-18 | 2025-03-18 | 1d |  |  |  | BMcD | 8h |
| 66 | 1.5.10.5 | 3J Whiteside As-Built PSEG LI Review | manual | 1d | 2026-03-31 | 2026-03-31 |  | 2025-03-18 | 2025-03-18 | 1d |  |  |  | PSEGLI | 8h |
| 67 | 1.5.11 | **4M Baldwin** |  | 40d | 2026-04-07 | 2026-06-02 |  | 2025-03-25 | 2025-07-17 | 81d | 159d |  |  |  | 336h |
| 68 | 1.5.11.1 | 4M Baldwin IFR |  | 4w | 2026-04-07 | 2026-05-04 | 12FS+10w | 2025-03-25 | 2025-06-12 | 11.4w | 159d | 0d | finish no earlier than 2025-06-12 | BMcD | 160h |
| 69 | 1.5.11.2 | 4M Baldwin IFR PSEG LI Review |  | 2w | 2026-05-05 | 2026-05-18 | 68 | 2025-06-13 | 2025-06-26 | 2w | 159d | 0d |  | PSEGLI | 80h |
| 70 | 1.5.11.3 | 4M Baldwin IFC |  | 2w | 2026-05-19 | 2026-06-02 | 69 | 2025-07-03 | 2025-07-17 | 2w | 159d |  | finish no earlier than 2025-07-17 | BMcD | 80h |
| 71 | 1.5.11.4 | 4M Baldwin As-Built | manual | 1d | 2026-04-07 | 2026-04-07 |  | 2025-03-25 | 2025-03-25 | 1d |  |  |  | BMcD | 8h |
| 72 | 1.5.11.5 | 4M Baldwin As-Built PSEG LI Review | manual | 1d | 2026-04-07 | 2026-04-07 |  | 2025-03-25 | 2025-03-25 | 1d |  |  |  | PSEGLI | 8h |

| ID | WBS | Task | Type | Duration | Start | Finish | Predecessors | Baseline start | Baseline finish | Baseline duration | Total slack | Free slack | Constraint | Resources | Work |
| --- | --- | --- | --- | --- | --- | --- | --- | --- | --- | --- | --- | --- | --- | --- | --- |
| 73 | 1.5.12 | **4M1 Baldwin Shelter** |  | 40d | 2026-04-07 | 2026-06-02 |  | 2025-04-24 | 2025-06-19 | 40d | 159d |  |  |  | 336h |
| 74 | 1.5.12.1 | 4M1 Baldwin Shelter IFR |  | 4w | 2026-04-07 | 2026-05-04 | 68SS | 2025-04-24 | 2025-05-21 | 4w | 159d | 0d | finish no earlier than 2025-05-21 | BMcD | 160h |
| 75 | 1.5.12.2 | 4M1 Baldwin Shelter IFR PSEG LI Review |  | 2w | 2026-05-05 | 2026-05-18 | 74 | 2025-05-22 | 2025-06-05 | 2w | 159d | 0d |  | PSEGLI | 80h |
| 76 | 1.5.12.3 | 4M1 Baldwin Shelter IFC |  | 2w | 2026-05-19 | 2026-06-02 | 75 | 2025-06-06 | 2025-06-19 | 2w | 159d |  |  | BMcD | 80h |
| 77 | 1.5.12.4 | 4M1 Baldwin Shelter As-Built | manual | 1d? | 2026-04-07 | 2026-04-07 |  | 2025-04-24 | 2025-04-24 | 1d? |  |  |  | BMcD | 8h |
| 78 | 1.5.12.5 | 4M1 Baldwin Shelter As-Built PSEG LI Review | manual | 1d? | 2026-04-07 | 2026-04-07 |  | 2025-04-24 | 2025-04-24 | 1d? |  |  |  | PSEGLI | 8h |
| 79 | 1.5.13 | **6H Hauppauge** |  | 40d | 2026-04-14 | 2026-06-09 |  | 2025-04-22 | 2025-07-10 | 56d | 154d |  |  |  | 336h |
| 80 | 1.5.13.1 | 6H Hauppauge IFR |  | 4w | 2026-04-14 | 2026-05-11 | 68SS+1w | 2025-04-22 | 2025-05-19 | 4w | 154d | 0d | finish no earlier than 2025-05-19 | BMcD | 160h |
| 81 | 1.5.13.2 | 6H Hauppauge IFR PSEG LI Review |  | 2w | 2026-05-12 | 2026-05-26 | 80 | 2025-05-20 | 2025-06-03 | 2w | 154d | 0d |  | PSEGLI | 80h |
| 82 | 1.5.13.3 | 6H Hauppauge IFC |  | 2w | 2026-05-27 | 2026-06-09 | 81 | 2025-06-26 | 2025-07-10 | 2w | 154d |  | finish no earlier than 2025-07-10 | BMcD | 80h |
| 83 | 1.5.13.4 | 6H Hauppauge As-Built | manual | 1d? | 2026-04-14 | 2026-04-14 |  | 2025-04-22 | 2025-04-22 | 1d? |  |  |  | BMcD | 8h |
| 84 | 1.5.13.5 | 6H Hauppauge As-Built PSEG LI Review | manual | 1d? | 2026-04-14 | 2026-04-14 |  | 2025-04-22 | 2025-04-22 | 1d? |  |  |  | PSEGLI | 8h |
| 85 | 1.5.14 | **6H1 Hauppauge Tower Shelter** |  | 40d | 2026-04-14 | 2026-06-09 |  | 2025-04-22 | 2025-07-10 | 56d | 154d |  |  |  | 336h |
| 86 | 1.5.14.1 | 6H1 Hauppauge Tower Shelter IFR |  | 4w | 2026-04-14 | 2026-05-11 | 68SS+1w | 2025-04-22 | 2025-05-19 | 4w | 154d | 0d | finish no earlier than 2025-05-19 | BMcD | 160h |
| 87 | 1.5.14.2 | 6H1 Hauppauge Tower Shelter IFR PSEG LI Review |  | 2w | 2026-05-12 | 2026-05-26 | 86 | 2025-05-20 | 2025-06-03 | 2w | 154d | 0d |  | PSEGLI | 80h |
| 88 | 1.5.14.3 | 6H1 Hauppauge Tower Shelter IFC |  | 2w | 2026-05-27 | 2026-06-09 | 87 | 2025-06-26 | 2025-07-10 | 2w | 154d |  | finish no earlier than 2025-07-10 | BMcD | 80h |
| 89 | 1.5.14.4 | 6H1 Hauppauge Tower Shelter As-Built | manual | 1d? | 2026-04-14 | 2026-04-14 |  | 2025-04-22 | 2025-04-22 | 1d? |  |  |  | BMcD | 8h |
| 90 | 1.5.14.5 | 6H1 Hauppauge Tower Shelter As-Built PSEG LI Review | manual | 1d? | 2026-04-14 | 2026-04-14 |  | 2025-04-22 | 2025-04-22 | 1d? |  |  |  | PSEGLI | 8h |
| 91 | 1.5.15 | **6K State School** |  | 40d | 2026-04-14 | 2026-06-09 |  | 2025-06-12 | 2025-08-07 | 40d | 154d |  |  |  | 336h |
| 92 | 1.5.15.1 | 6K State School IFR |  | 4w | 2026-04-14 | 2026-05-11 | 68SS+1w | 2025-06-12 | 2025-07-10 | 4w | 154d | 0d | finish no earlier than 2025-07-10 | BMcD | 160h |
| 93 | 1.5.15.2 | 6K State School IFR PSEG LI Review |  | 2w | 2026-05-12 | 2026-05-26 | 92 | 2025-07-11 | 2025-07-24 | 2w | 154d | 0d |  | PSEGLI | 80h |
| 94 | 1.5.15.3 | 6K State School IFC |  | 2w | 2026-05-27 | 2026-06-09 | 93 | 2025-07-25 | 2025-08-07 | 2w | 154d |  |  | BMcD | 80h |
| 95 | 1.5.15.4 | 6K State School As-Built | manual | 1d? | 2026-04-14 | 2026-04-14 |  | 2025-06-12 | 2025-06-12 | 1d? |  |  |  | BMcD | 8h |
| 96 | 1.5.15.5 | 6K State School As-Built PSEG LI Review | manual | 1d? | 2026-04-14 | 2026-04-14 |  | 2025-06-12 | 2025-06-12 | 1d? |  |  |  | PSEGLI | 8h |

| ID | WBS | Task | Type | Duration | Start | Finish | Predecessors | Baseline start | Baseline finish | Baseline duration | Total slack | Free slack | Constraint | Resources | Work |
| --- | --- | --- | --- | --- | --- | --- | --- | --- | --- | --- | --- | --- | --- | --- | --- |
| 97 | 1.5.16 | **6S Kings Hwy** |  | 40d | 2026-04-21 | 2026-06-16 |  | 2025-06-26 | 2025-08-21 | 40d | 149d |  |  |  | 336h |
| 98 | 1.5.16.1 | 6S Kings Hwy IFR |  | 4w | 2026-04-21 | 2026-05-18 | 68SS+2w | 2025-06-26 | 2025-07-24 | 4w | 149d | 0d | finish no earlier than 2025-06-19 | BMcD | 160h |
| 99 | 1.5.16.2 | 6S Kings Hwy IFR PSEG LI Review |  | 2w | 2026-05-19 | 2026-06-02 | 98 | 2025-07-25 | 2025-08-07 | 2w | 149d | 0d | finish no earlier than 2025-05-19 | PSEGLI | 80h |
| 100 | 1.5.16.3 | 6S Kings Hwy IFC |  | 2w | 2026-06-03 | 2026-06-16 | 99 | 2025-08-08 | 2025-08-21 | 2w | 149d |  | finish no earlier than 2025-07-24 | BMcD | 80h |
| 101 | 1.5.16.4 | 6S Kings Hwy As-Built | manual | 1d? | 2026-04-21 | 2026-04-21 |  | 2025-06-26 | 2025-06-26 | 1d? |  |  |  | BMcD | 8h |
| 102 | 1.5.16.5 | 6S Kings Hwy As-Built PSEG LI Review | manual | 1d? | 2026-04-21 | 2026-04-21 |  | 2025-06-26 | 2025-06-26 | 1d? |  |  |  | PSEGLI | 8h |
| 103 | 1.5.17 | **7BH Bohemia** |  | 40d | 2026-04-21 | 2026-06-16 |  | 2025-06-13 | 2025-08-08 | 40d | 149d |  |  |  | 336h |
| 104 | 1.5.17.1 | 7BH Bohemia IFR |  | 4w | 2026-04-21 | 2026-05-18 | 68SS+2w | 2025-06-13 | 2025-07-11 | 4w | 149d | 0d | start no earlier than 2025-06-13 | BMcD | 160h |
| 105 | 1.5.17.2 | 7BH Bohemia IFR PSEG LI Review |  | 2w | 2026-05-19 | 2026-06-02 | 104 | 2025-07-14 | 2025-07-25 | 2w | 149d | 0d |  | PSEGLI | 80h |
| 106 | 1.5.17.3 | 7BH Bohemia IFC |  | 2w | 2026-06-03 | 2026-06-16 | 105 | 2025-07-28 | 2025-08-08 | 2w | 149d |  | finish no earlier than 2025-07-31 | BMcD | 80h |
| 107 | 1.5.17.4 | 7BH Bohemia As-Built | manual | 1d? | 2026-04-21 | 2026-04-21 |  | 2025-06-13 | 2025-06-13 | 1d? |  |  |  | BMcD | 8h |
| 108 | 1.5.17.5 | 7BH Bohemia As-Built PSEG LI Review | manual | 1d? | 2026-04-21 | 2026-04-21 |  | 2025-06-13 | 2025-06-13 | 1d? |  |  |  | PSEGLI | 8h |
| 109 | 1.5.18 | **7D West Babylon** |  | 40d | 2026-04-28 | 2026-06-23 |  | 2025-06-19 | 2025-08-14 | 40d | 144d |  |  |  | 336h |
| 110 | 1.5.18.1 | 7D West Babylon IFR |  | 4w | 2026-04-28 | 2026-05-26 | 68SS+3w | 2025-06-19 | 2025-07-17 | 4w | 144d | 0d | finish no earlier than 2025-07-17 | BMcD | 160h |
| 111 | 1.5.18.2 | 7D West Babylon IFR PSEG LI Review |  | 2w | 2026-05-27 | 2026-06-09 | 110 | 2025-07-18 | 2025-07-31 | 2w | 144d | 0d |  | PSEGLI | 80h |
| 112 | 1.5.18.3 | 7D West Babylon IFC |  | 2w | 2026-06-10 | 2026-06-23 | 111 | 2025-08-01 | 2025-08-14 | 2w | 144d |  |  | BMcD | 80h |
| 113 | 1.5.18.4 | 7D West Babylon As-Built | manual | 1d? | 2026-04-28 | 2026-04-28 |  | 2025-06-19 | 2025-06-19 | 1d? |  |  |  | BMcD | 8h |
| 114 | 1.5.18.5 | 7D West Babylon As-Built PSEG LI Review | manual | 1d? | 2026-04-28 | 2026-04-28 |  | 2025-06-19 | 2025-06-19 | 1d? |  |  |  | PSEGLI | 8h |
| 115 | 1.5.19 | **7D1 West Babylon Shelter** |  | 40d | 2026-04-28 | 2026-06-23 |  | 2025-04-15 | 2025-08-14 | 86d | 144d |  |  |  | 336h |
| 116 | 1.5.19.1 | 7D1 West Babylon Shelter IFR |  | 4w | 2026-04-28 | 2026-05-26 | 68SS+3w | 2025-04-15 | 2025-07-17 | 13.2w | 144d | 0d | finish no earlier than 2025-07-17 | BMcD | 160h |
| 117 | 1.5.19.2 | 7D1 West Babylon Shelter IFR PSEG LI Review |  | 2w | 2026-05-27 | 2026-06-09 | 116 | 2025-07-18 | 2025-07-31 | 2w | 144d | 0d |  | PSEGLI | 80h |
| 118 | 1.5.19.3 | 7D1 West Babylon Shelter IFC |  | 2w | 2026-06-10 | 2026-06-23 | 117 | 2025-08-01 | 2025-08-14 | 2w | 144d |  |  | BMcD | 80h |
| 119 | 1.5.19.4 | 7D1 West Babylon Shelter As-Built | manual | 1d? | 2026-04-28 | 2026-04-28 |  | 2025-04-15 | 2025-04-15 | 1d? |  |  |  | BMcD | 8h |
| 120 | 1.5.19.5 | 7D1 West Babylon Shelter As-Built PSEG LI Review | manual | 1d? | 2026-04-28 | 2026-04-28 |  | 2025-04-15 | 2025-04-15 | 1d? |  |  |  | PSEGLI | 8h |

| ID | WBS | Task | Type | Duration | Start | Finish | Predecessors | Baseline start | Baseline finish | Baseline duration | Total slack | Free slack | Constraint | Resources | Work |
| --- | --- | --- | --- | --- | --- | --- | --- | --- | --- | --- | --- | --- | --- | --- | --- |
| 121 | 1.5.20 | **7H Babylon** |  | 40d | 2026-05-05 | 2026-06-30 |  | 2025-06-19 | 2025-08-14 | 40d | 139d |  |  |  | 336h |
| 122 | 1.5.20.1 | 7H Babylon IFR |  | 4w | 2026-05-05 | 2026-06-02 | 68SS+4w | 2025-06-19 | 2025-07-17 | 4w | 139d | 0d | finish no earlier than 2025-07-17 | BMcD | 160h |
| 123 | 1.5.20.2 | 7H Babylon IFR PSEG LI Review |  | 2w | 2026-06-03 | 2026-06-16 | 122 | 2025-07-18 | 2025-07-31 | 2w | 139d | 0d |  | PSEGLI | 80h |
| 124 | 1.5.20.3 | 7H Babylon IFC |  | 2w | 2026-06-17 | 2026-06-30 | 123 | 2025-08-01 | 2025-08-14 | 2w | 139d |  |  | BMcD | 80h |
| 125 | 1.5.20.4 | 7H Babylon As-Built | manual | 1d? | 2026-05-05 | 2026-05-05 |  | 2025-06-19 | 2025-06-19 | 1d? |  |  |  | BMcD | 8h |
| 126 | 1.5.20.5 | 7H Babylon As-Built PSEG LI Review | manual | 1d? | 2026-05-05 | 2026-05-05 |  | 2025-06-19 | 2025-06-19 | 1d? |  |  |  | PSEGLI | 8h |
| 127 | 1.5.21 | **7H1 Babylon Shelter** |  | 40d | 2026-05-05 | 2026-06-30 |  | 2025-06-12 | 2025-08-07 | 40d | 139d |  |  |  | 336h |
| 128 | 1.5.21.1 | 7H1 Babylon Shelter IFR |  | 4w | 2026-05-05 | 2026-06-02 | 68SS+4w | 2025-06-12 | 2025-07-10 | 4w | 139d | 0d | finish no earlier than 2025-07-10 | BMcD | 160h |
| 129 | 1.5.21.2 | 7H1 Babylon Shelter IFR PSEG LI Review |  | 2w | 2026-06-03 | 2026-06-16 | 128 | 2025-07-11 | 2025-07-24 | 2w | 139d | 0d |  | PSEGLI | 80h |
| 130 | 1.5.21.3 | 7H1 Babylon Shelter IFC |  | 2w | 2026-06-17 | 2026-06-30 | 129 | 2025-07-25 | 2025-08-07 | 2w | 139d |  |  | BMcD | 80h |
| 131 | 1.5.21.4 | 7H1 Babylon Shelter As-Built | manual | 1d? | 2026-05-05 | 2026-05-05 |  | 2025-06-12 | 2025-06-12 | 1d? |  |  |  | BMcD | 8h |
| 132 | 1.5.21.5 | 7H1 Babylon Shelter As-Built PSEG LI Review | manual | 1d? | 2026-05-05 | 2026-05-05 |  | 2025-06-12 | 2025-06-12 | 1d? |  |  |  | PSEGLI | 8h |
| 133 | 1.5.22 | **7J Sterling** |  | 40d | 2026-05-05 | 2026-06-30 |  | 2025-04-22 | 2025-07-03 | 52d | 139d |  |  |  | 336h |
| 134 | 1.5.22.1 | 7J Sterling IFR |  | 4w | 2026-05-05 | 2026-06-02 | 68SS+4w | 2025-04-22 | 2025-05-19 | 4w | 139d | 0d |  | BMcD | 160h |
| 135 | 1.5.22.2 | 7J Sterling IFR PSEG LI Review |  | 2w | 2026-06-03 | 2026-06-16 | 134 | 2025-05-20 | 2025-06-03 | 2w | 139d | 0d |  | PSEGLI | 80h |
| 136 | 1.5.22.3 | 7J Sterling IFC |  | 2w | 2026-06-17 | 2026-06-30 | 135 | 2025-06-20 | 2025-07-03 | 2w | 139d |  | finish no earlier than 2025-07-03 | BMcD | 80h |
| 137 | 1.5.22.4 | 7J Sterling As-Built | manual | 1d? | 2026-05-05 | 2026-05-05 |  | 2025-04-22 | 2025-04-22 | 0d? |  |  |  | BMcD | 8h |
| 138 | 1.5.22.5 | 7J Sterling As-Built PSEG LI Review | manual | 1d? | 2026-05-05 | 2026-05-05 |  | 2025-04-22 | 2025-04-22 | 0d? |  |  |  | PSEGLI | 8h |
| 139 | 1.5.23 | **7M MacArthur** |  | 40d | 2026-05-12 | 2026-07-08 |  | 2025-05-08 | 2025-07-03 | 40d | 134d |  |  |  | 336h |
| 140 | 1.5.23.1 | 7M MacArthur IFR |  | 4w | 2026-05-12 | 2026-06-09 | 68SS+5w | 2025-05-08 | 2025-06-05 | 4w | 134d | 0d | finish no earlier than 2025-06-05 | BMcD | 160h |
| 141 | 1.5.23.2 | 7M MacArthur IFR PSEG LI Review |  | 2w | 2026-06-10 | 2026-06-23 | 140 | 2025-06-06 | 2025-06-19 | 2w | 134d | 0d |  | PSEGLI | 80h |
| 142 | 1.5.23.3 | 7M MacArthur IFC |  | 2w | 2026-06-24 | 2026-07-08 | 141 | 2025-06-20 | 2025-07-03 | 2w | 134d |  |  | BMcD | 80h |
| 143 | 1.5.23.4 | 7M MacArthur As-Built | manual | 1d? | 2026-05-12 | 2026-05-12 |  | 2025-05-08 | 2025-05-08 | 0d? |  |  |  | BMcD | 8h |
| 144 | 1.5.23.5 | 7M MacArthur As-Built PSEG LI Review | manual | 1d? | 2026-05-12 | 2026-05-12 |  | 2025-05-08 | 2025-05-08 | 0d? |  |  |  | PSEGLI | 8h |

| ID | WBS | Task | Type | Duration | Start | Finish | Predecessors | Baseline start | Baseline finish | Baseline duration | Total slack | Free slack | Constraint | Resources | Work |
| --- | --- | --- | --- | --- | --- | --- | --- | --- | --- | --- | --- | --- | --- | --- | --- |
| 145 | 1.5.24 | **7R Sayville** |  | 40d | 2026-05-12 | 2026-07-08 |  | 2025-05-01 | 2025-06-26 | 40d | 134d |  |  |  | 336h |
| 146 | 1.5.24.1 | 7R Sayville IFR |  | 4w | 2026-05-12 | 2026-06-09 | 68SS+5w | 2025-05-01 | 2025-05-29 | 4w | 134d | 0d | finish no earlier than 2025-05-29 | BMcD | 160h |
| 147 | 1.5.24.2 | 7R Sayville IFR PSEG LI Review |  | 2w | 2026-06-10 | 2026-06-23 | 146 | 2025-05-30 | 2025-06-12 | 2w | 134d | 0d |  | PSEGLI | 80h |
| 148 | 1.5.24.3 | 7R Sayville IFC |  | 2w | 2026-06-24 | 2026-07-08 | 147 | 2025-06-13 | 2025-06-26 | 2w | 134d |  |  | BMcD | 80h |
| 149 | 1.5.24.4 | 7R Sayville As-Built | manual | 1d? | 2026-05-12 | 2026-05-12 |  | 2025-05-01 | 2025-05-01 | 0d |  |  |  | BMcD | 8h |
| 150 | 1.5.24.5 | 7R Sayville As-Built PSEG LI Review | manual | 1d? | 2026-05-12 | 2026-05-12 |  | 2025-05-01 | 2025-05-01 | 0d |  |  |  | PSEGLI | 8h |
| 151 | 1.5.25 | **7RM Bayport** |  | 40d | 2026-05-19 | 2026-07-15 | 116SS | 2025-06-13 | 2025-08-08 | 40d | 129d |  |  |  | 336h |
| 152 | 1.5.25.1 | 7RM Bayport IFR |  | 4w | 2026-05-19 | 2026-06-16 | 68SS+6w | 2025-06-13 | 2025-07-11 | 4w | 129d | 0d | start no earlier than 2025-06-13 | BMcD | 160h |
| 153 | 1.5.25.2 | 7RM Bayport IFR PSEG LI Review |  | 2w | 2026-06-17 | 2026-06-30 | 152 | 2025-07-14 | 2025-07-25 | 2w | 129d | 0d |  | PSEGLI | 80h |
| 154 | 1.5.25.3 | 7RM Bayport IFC |  | 2w | 2026-07-01 | 2026-07-15 | 153 | 2025-07-28 | 2025-08-08 | 2w | 129d |  |  | BMcD | 80h |
| 155 | 1.5.25.4 | 7RM Bayport As-Built | manual | 1d? | 2026-05-19 | 2026-05-19 |  | 2025-06-13 | 2025-06-13 | 1d? |  |  |  | BMcD | 8h |
| 156 | 1.5.25.5 | 7RM Bayport As-Built PSEG LI Review | manual | 1d? | 2026-05-19 | 2026-05-19 |  | 2025-06-13 | 2025-06-13 | 1d? |  |  |  | PSEGLI | 8h |
| 157 | 1.5.26 | **7UM South Farmingdale** |  | 40d | 2026-05-19 | 2026-07-15 |  | 2025-06-12 | 2025-08-07 | 40d | 129d |  |  |  | 336h |
| 158 | 1.5.26.1 | 7UM South Farmingdale IFR |  | 4w | 2026-05-19 | 2026-06-16 | 68SS+6w | 2025-06-12 | 2025-07-10 | 4w | 129d | 0d | start no earlier than 2025-06-12 | BMcD | 160h |
| 159 | 1.5.26.2 | 7UM South Farmingdale IFR PSEG LI Review |  | 2w | 2026-06-17 | 2026-06-30 | 158 | 2025-07-11 | 2025-07-24 | 2w | 129d | 0d |  | PSEGLI | 80h |
| 160 | 1.5.26.3 | 7UM South Farmingdale IFC |  | 2w | 2026-07-01 | 2026-07-15 | 159 | 2025-07-25 | 2025-08-07 | 2w | 129d |  |  | BMcD | 80h |
| 161 | 1.5.26.4 | 7UM South Farmingdale As-Built | manual | 1d? | 2026-05-19 | 2026-05-19 |  | 2025-06-12 | 2025-06-12 | 1d? |  |  |  | BMcD | 8h |
| 162 | 1.5.26.5 | 7UM South Farmingdale As-Built PSEG LI Review | manual | 1d? | 2026-05-19 | 2026-05-19 |  | 2025-06-12 | 2025-06-12 | 1d? |  |  |  | PSEGLI | 8h |
| 163 | 1.5.27 | **7W Berry St** |  | 40d | 2026-05-19 | 2026-07-15 |  | 2025-06-26 | 2025-08-07 | 30d | 129d |  |  |  | 336h |
| 164 | 1.5.27.1 | 7W Berry St IFR |  | 4w | 2026-05-19 | 2026-06-16 | 68SS+6w | 2025-06-26 | 2025-07-24 | 4w | 129d | 0d | finish no earlier than 2025-07-24 | BMcD | 160h |
| 165 | 1.5.27.2 | 7W Berry St IFR PSEG LI Review |  | 2w | 2026-06-17 | 2026-06-30 | 164 | 2025-07-25 | 2025-07-31 | 1w | 129d | 0d |  | PSEGLI | 80h |
| 166 | 1.5.27.3 | 7W Berry St IFC |  | 2w | 2026-07-01 | 2026-07-15 | 165 | 2025-08-01 | 2025-08-07 | 1w | 129d |  |  | BMcD | 80h |
| 167 | 1.5.27.4 | 7W Berry St As-Built | manual | 1d? | 2026-05-19 | 2026-05-19 |  | 2025-06-26 | 2025-06-26 | 1d? |  |  |  | BMcD | 8h |
| 168 | 1.5.27.5 | 7W Berry St As-Built PSEG LI Review | manual | 1d? | 2026-05-19 | 2026-05-19 |  | 2025-06-26 | 2025-06-26 | 1d? |  |  |  | PSEGLI | 8h |

| ID | WBS | Task | Type | Duration | Start | Finish | Predecessors | Baseline start | Baseline finish | Baseline duration | Total slack | Free slack | Constraint | Resources | Work |
| --- | --- | --- | --- | --- | --- | --- | --- | --- | --- | --- | --- | --- | --- | --- | --- |
| 169 | 1.5.28 | **7XM Great River** |  | 40d | 2026-05-27 | 2026-07-22 |  | 2025-06-26 | 2025-08-07 | 30d | 124d |  |  |  | 336h |
| 170 | 1.5.28.1 | 7XM Great River IFR |  | 4w | 2026-05-27 | 2026-06-23 | 68SS+7w | 2025-06-26 | 2025-07-24 | 4w | 124d | 0d | finish no earlier than 2025-07-24 | BMcD | 160h |
| 171 | 1.5.28.2 | 7XM Great River IFR PSEG LI Review |  | 2w | 2026-06-24 | 2026-07-08 | 170 | 2025-07-25 | 2025-07-31 | 1w | 124d | 0d |  | PSEGLI | 80h |
| 172 | 1.5.28.3 | 7XM Great River IFC |  | 2w | 2026-07-09 | 2026-07-22 | 171 | 2025-08-01 | 2025-08-07 | 1w | 124d |  |  | BMcD | 80h |
| 173 | 1.5.28.4 | 7XM Great River As-Built | manual | 1d? | 2026-05-27 | 2026-05-27 |  | 2025-06-26 | 2025-06-26 | 1d? |  |  |  | BMcD | 8h |
| 174 | 1.5.28.5 | 7XM Great River As-Built PSEG LI Review | manual | 1d? | 2026-05-27 | 2026-05-27 |  | 2025-06-26 | 2025-06-26 | 1d? |  |  |  | PSEGLI | 8h |
| 175 | 1.5.29 | **7XM1 Great River - Shelter** |  | 40d | 2026-05-27 | 2026-07-22 |  | 2025-05-22 | 2025-07-24 | 44d | 124d |  |  |  | 336h |
| 176 | 1.5.29.1 | 7XM1 Great River - Shelter IFR |  | 4w | 2026-05-27 | 2026-06-23 | 68SS+7w | 2025-05-22 | 2025-06-19 | 4w | 124d | 0d | finish no earlier than 2025-06-19 | BMcD | 160h |
| 177 | 1.5.29.2 | 7XM1 Great River - Shelter IFR PSEG LI Review |  | 2w | 2026-06-24 | 2026-07-08 | 176 | 2025-06-20 | 2025-07-03 | 2w | 124d | 0d |  | PSEGLI | 80h |
| 178 | 1.5.29.3 | 7XM1 Great River - Shelter IFC |  | 2w | 2026-07-09 | 2026-07-22 | 177 | 2025-07-11 | 2025-07-24 | 2w | 124d |  | finish no earlier than 2025-07-24 | BMcD | 80h |
| 179 | 1.5.29.4 | 7XM1 Great River - Shelter As-Built | manual | 1d? | 2026-05-27 | 2026-05-27 |  | 2025-05-22 | 2025-05-22 | 1d? |  |  |  | BMcD | 8h |
| 180 | 1.5.29.5 | 7XM1 Great River - Shelter As-Built PSEG LI Review | manual | 1d? | 2026-05-27 | 2026-05-27 |  | 2025-05-22 | 2025-05-22 | 1d? |  |  |  | PSEGLI | 8h |
| 181 | 1.5.30 | **7Z Lindenhurst** |  | 40d | 2026-05-27 | 2026-07-22 |  | 2025-07-03 | 2025-08-14 | 30d | 124d |  |  |  | 336h |
| 182 | 1.5.30.1 | 7Z Lindenhurst IFR |  | 4w | 2026-05-27 | 2026-06-23 | 68SS+7w | 2025-07-03 | 2025-07-31 | 4w | 124d | 0d | finish no earlier than 2025-07-31 | BMcD | 160h |
| 183 | 1.5.30.2 | 7Z Lindenhurst IFR PSEG LI Review |  | 2w | 2026-06-24 | 2026-07-08 | 182 | 2025-08-01 | 2025-08-07 | 1w | 124d | 0d |  | PSEGLI | 80h |
| 184 | 1.5.30.3 | 7Z Lindenhurst IFC |  | 2w | 2026-07-09 | 2026-07-22 | 183 | 2025-08-08 | 2025-08-14 | 1w | 124d |  |  | BMcD | 80h |
| 185 | 1.5.30.4 | 7Z Lindenhurst As-Built | manual | 1d? | 2026-05-27 | 2026-05-27 |  | 2025-07-03 | 2025-07-03 | 1d? |  |  |  | BMcD | 8h |
| 186 | 1.5.30.5 | 7Z Lindenhurst As-Built PSEG LI Review | manual | 1d? | 2026-05-27 | 2026-05-27 |  | 2025-07-03 | 2025-07-03 | 1d? |  |  |  | PSEGLI | 8h |
| 187 | 1.5.31 | **8AX Patchogue** |  | 40d | 2026-06-03 | 2026-07-29 |  | 2025-07-03 | 2025-08-14 | 30d | 119d |  |  |  | 336h |
| 188 | 1.5.31.1 | 8AX Patchogue IFR |  | 4w | 2026-06-03 | 2026-06-30 | 68SS+8w | 2025-07-03 | 2025-07-31 | 4w | 119d | 0d | finish no earlier than 2025-07-31 | BMcD | 160h |
| 189 | 1.5.31.2 | 8AX Patchogue IFR PSEG LI Review |  | 2w | 2026-07-01 | 2026-07-15 | 188 | 2025-08-01 | 2025-08-07 | 1w | 119d | 0d |  | PSEGLI | 80h |
| 190 | 1.5.31.3 | 8AX Patchogue IFC |  | 2w | 2026-07-16 | 2026-07-29 | 189 | 2025-08-08 | 2025-08-14 | 1w | 119d |  |  | BMcD | 80h |
| 191 | 1.5.31.4 | 8AX Patchogue As-Built | manual | 1d? | 2026-06-03 | 2026-06-03 |  | 2025-07-03 | 2025-07-03 | 1d? |  |  |  | BMcD | 8h |
| 192 | 1.5.31.5 | 8AX Patchogue As-Built PSEG LI Review | manual | 1d? | 2026-06-03 | 2026-06-03 |  | 2025-07-03 | 2025-07-03 | 1d? |  |  |  | PSEGLI | 8h |

| ID | WBS | Task | Type | Duration | Start | Finish | Predecessors | Baseline start | Baseline finish | Baseline duration | Total slack | Free slack | Constraint | Resources | Work |
| --- | --- | --- | --- | --- | --- | --- | --- | --- | --- | --- | --- | --- | --- | --- | --- |
| 193 | 1.5.32 | **8AX1 Patchogue - Shelter** |  | 40d | 2026-06-03 | 2026-07-29 |  | 2025-07-03 | 2025-08-14 | 30d | 119d |  |  |  | 336h |
| 194 | 1.5.32.1 | 8AX1 Patchogue - Shelter IFR |  | 4w | 2026-06-03 | 2026-06-30 | 68SS+8w | 2025-07-03 | 2025-07-31 | 4w | 119d | 0d | finish no earlier than 2025-07-31 | BMcD | 160h |
| 195 | 1.5.32.2 | 8AX1 Patchogue - Shelter IFR PSEG LI Review |  | 2w | 2026-07-01 | 2026-07-15 | 194 | 2025-08-01 | 2025-08-07 | 1w | 119d | 0d |  | PSEGLI | 80h |
| 196 | 1.5.32.3 | 8AX1 Patchogue - Shelter IFC |  | 2w | 2026-07-16 | 2026-07-29 | 195 | 2025-08-08 | 2025-08-14 | 1w | 119d |  |  | BMcD | 80h |
| 197 | 1.5.32.4 | 8AX1 Patchogue - Shelter As-Built | manual | 1d? | 2026-06-03 | 2026-06-03 |  | 2025-07-03 | 2025-07-03 | 1d? |  |  |  | BMcD | 8h |
| 198 | 1.5.32.5 | 8AX1 Patchogue - Shelter As-Built PSEG LI Review | manual | 1d? | 2026-06-03 | 2026-06-03 |  | 2025-07-03 | 2025-07-03 | 1d? |  |  |  | PSEGLI | 8h |
| 199 | 1.5.33 | **DO Brentwood DO** |  | 40d | 2026-05-19 | 2026-07-15 |  | 2025-06-26 | 2025-08-07 | 30d | 129d |  |  |  | 336h |
| 200 | 1.5.33.1 | DO Brentwood DO IFR |  | 4w | 2026-05-19 | 2026-06-16 | 68SS+6w | 2025-06-26 | 2025-07-24 | 4w | 129d | 0d | finish no earlier than 2025-07-24 | BMcD | 160h |
| 201 | 1.5.33.2 | DO Brentwood DO IFR PSEG LI Review |  | 2w | 2026-06-17 | 2026-06-30 | 200 | 2025-07-25 | 2025-07-31 | 1w | 129d | 0d |  | PSEGLI | 80h |
| 202 | 1.5.33.3 | DO Brentwood DO IFC |  | 2w | 2026-07-01 | 2026-07-15 | 201 | 2025-08-01 | 2025-08-07 | 1w | 129d |  |  | BMcD | 80h |
| 203 | 1.5.33.4 | DO Brentwood DO As-Built | manual | 1d? | 2026-05-19 | 2026-05-19 |  | 2025-06-26 | 2025-06-26 | 1d? |  |  |  | BMcD | 8h |
| 204 | 1.5.33.5 | DO Brentwood DO As-Built PSEG LI Review | manual | 1d? | 2026-05-19 | 2026-05-19 |  | 2025-06-26 | 2025-06-26 | 1d? |  |  |  | PSEGLI | 8h |
| 205 | 1.5.34 | **DO Hewlett Headquarters** |  | 40d | 2026-05-27 | 2026-07-22 |  | 2025-06-26 | 2025-08-07 | 30d | 124d |  |  |  | 336h |
| 206 | 1.5.34.1 | DO Hewlett Headquarters IFR |  | 4w | 2026-05-27 | 2026-06-23 | 68SS+7w | 2025-06-26 | 2025-07-24 | 4w | 124d | 0d | finish no earlier than 2025-07-24 | BMcD | 160h |
| 207 | 1.5.34.2 | DO Hewlett Headquarters IFR PSEG LI Review |  | 2w | 2026-06-24 | 2026-07-08 | 206 | 2025-07-25 | 2025-07-31 | 1w | 124d | 0d |  | PSEGLI | 80h |
| 208 | 1.5.34.3 | DO Hewlett Headquarters IFC |  | 2w | 2026-07-09 | 2026-07-22 | 207 | 2025-08-01 | 2025-08-07 | 1w | 124d |  |  | BMcD | 80h |
| 209 | 1.5.34.4 | DO Hewlett Headquarters As-Built | manual | 1d? | 2026-05-27 | 2026-05-27 |  | 2025-06-26 | 2025-06-26 | 1d? |  |  |  | BMcD | 8h |
| 210 | 1.5.34.5 | DO Hewlett Headquarters As-Built PSEG LI Review | manual | 1d? | 2026-05-27 | 2026-05-27 |  | 2025-06-26 | 2025-06-26 | 1d? |  |  |  | PSEGLI | 8h |
| 211 | 1.5.35 | **5HK Hicksville - Primary** |  | 40d | 2026-05-27 | 2026-07-22 |  | 2025-05-22 | 2025-07-24 | 44d | 124d |  |  |  | 336h |
| 212 | 1.5.35.1 | 5HK Hicksville - Primary IFR |  | 4w | 2026-05-27 | 2026-06-23 | 68SS+7w | 2025-05-22 | 2025-06-19 | 4w | 124d | 0d | finish no earlier than 2025-06-19 | BMcD | 160h |
| 213 | 1.5.35.2 | 5HK Hicksville - Primary IFR PSEG LI Review |  | 2w | 2026-06-24 | 2026-07-08 | 212 | 2025-06-20 | 2025-07-03 | 2w | 124d | 0d |  | PSEGLI | 80h |
| 214 | 1.5.35.3 | 5HK Hicksville - Primary IFC |  | 2w | 2026-07-09 | 2026-07-22 | 213 | 2025-07-11 | 2025-07-24 | 2w | 124d |  | finish no earlier than 2025-07-24 | BMcD | 80h |
| 215 | 1.5.35.4 | 5HK Hicksville - Primary As-Built | manual | 1d? | 2026-05-27 | 2026-05-27 |  | 2025-05-22 | 2025-05-22 | 1d? |  |  |  | BMcD | 8h |
| 216 | 1.5.35.5 | 5HK Hicksville - Primary As-Built PSEG LI Review | manual | 1d? | 2026-05-27 | 2026-05-27 |  | 2025-05-22 | 2025-05-22 | 1d? |  |  |  | PSEGLI | 8h |

| ID | WBS | Task | Type | Duration | Start | Finish | Predecessors | Baseline start | Baseline finish | Baseline duration | Total slack | Free slack | Constraint | Resources | Work |
| --- | --- | --- | --- | --- | --- | --- | --- | --- | --- | --- | --- | --- | --- | --- | --- |
| 217 | 1.5.36 | **6U Ruland Road** |  | 40d | 2026-05-27 | 2026-07-22 |  | 2025-07-03 | 2025-08-14 | 30d | 124d |  |  |  | 336h |
| 218 | 1.5.36.1 | 6U Ruland Road IFR |  | 4w | 2026-05-27 | 2026-06-23 | 68SS+7w | 2025-07-03 | 2025-07-31 | 4w | 124d | 0d | finish no earlier than 2025-07-31 | BMcD | 160h |
| 219 | 1.5.36.2 | 6U Ruland Road IFR PSEG LI Review |  | 2w | 2026-06-24 | 2026-07-08 | 218 | 2025-08-01 | 2025-08-07 | 1w | 124d | 0d |  | PSEGLI | 80h |
| 220 | 1.5.36.3 | 6U Ruland Road IFC |  | 2w | 2026-07-09 | 2026-07-22 | 219 | 2025-08-08 | 2025-08-14 | 1w | 124d |  |  | BMcD | 80h |
| 221 | 1.5.36.4 | 6U Ruland Road As-Built | manual | 1d? | 2026-05-27 | 2026-05-27 |  | 2025-07-03 | 2025-07-03 | 1d? |  |  |  | BMcD | 8h |
| 222 | 1.5.36.5 | 6U Ruland Road As-Built PSEG LI Review | manual | 1d? | 2026-05-27 | 2026-05-27 |  | 2025-07-03 | 2025-07-03 | 1d? |  |  |  | PSEGLI | 8h |
| 223 | 1.5.37 | **ACC** |  | 40d | 2026-06-03 | 2026-07-29 |  | 2025-07-03 | 2025-08-14 | 30d | 0d |  |  |  | 336h |
| 224 | 1.5.37.1 | ACC IFR |  | 4w | 2026-06-03 | 2026-06-30 | 68SS+8w | 2025-07-03 | 2025-07-31 | 4w | 0d |  | finish no earlier than 2025-07-31 | BMcD | 160h |
| 225 | 1.5.37.2 | ACC IFR PSEG LI Review |  | 2w | 2026-07-01 | 2026-07-15 | 224 | 2025-08-01 | 2025-08-07 | 1w | 0d |  |  | PSEGLI | 80h |
| 226 | 1.5.37.3 | ACC IFC |  | 2w | 2026-07-16 | 2026-07-29 | 225 | 2025-08-08 | 2025-08-14 | 1w | 0d |  |  | BMcD | 80h |
| 227 | 1.5.37.4 | ACC As-Built | manual | 1d? | 2026-06-03 | 2026-06-03 |  | 2025-07-03 | 2025-07-03 | 1d? |  |  |  | BMcD | 8h |
| 228 | 1.5.37.5 | ACC As-Built PSEG LI Review | manual | 1d? | 2026-06-03 | 2026-06-03 |  | 2025-07-03 | 2025-07-03 | 1d? |  |  |  | PSEGLI | 8h |
| 229 | 1.6 | **Construction, Installation, and Acceptance** |  | 119d | 2026-07-30 | 2027-02-03 |  | 2025-07-21 | 2026-01-20 | 126d | 0d |  |  |  |  |
| 230 | 1.6.1 | Staging and Testing |  | 2w | 2026-07-30 | 2026-08-12 | 226 | 2025-08-11 | 2025-08-22 | 2w | 0d |  | start no earlier than 2025-08-11 |  |  |
| 231 | 1.6.2 | **Construction, Installation, Site Acceptance - Construction Vendor** |  | 33d | 2026-08-13 | 2026-09-29 | 230 | 2025-08-25 | 2025-10-03 | 29d | 0d |  |  |  |  |
| 232 | 1.6.2.1 | Week # 1 Site Survey - 36 sites |  | 5d | 2026-08-13 | 2026-08-19 | 230 | 2025-08-25 | 2025-08-29 | 5d | 0d |  |  |  |  |
| 233 | 1.6.2.2 | **Implement Materials & Power** |  | 28d | 2026-08-20 | 2026-09-29 |  | 2025-09-02 | 2025-10-03 | 24d | 0d |  |  |  |  |
| 234 | 1.6.2.2.1 | **Week # 2** |  | 5d | 2026-08-20 | 2026-08-26 |  | 2025-09-02 | 2025-09-08 | 5d | 0d |  |  |  |  |
| 235 | 1.6.2.2.1.1 | 2H Far Rockaway |  | 5d | 2026-08-20 | 2026-08-26 | 232 | 2025-09-02 | 2025-09-08 | 5d | 99d |  |  |  |  |
| 236 | 1.6.2.2.1.2 | 2K Valley Stream |  | 5d | 2026-08-20 | 2026-08-26 | 232 | 2025-09-02 | 2025-09-08 | 5d | 99d |  | start no earlier than 2025-08-25 |  |  |
| 237 | 1.6.2.2.1.3 | 2KB Cedarhurst |  | 5d | 2026-08-20 | 2026-08-26 | 232 | 2025-09-02 | 2025-09-08 | 5d | 99d |  | start no earlier than 2025-08-25 |  |  |
| 238 | 1.6.2.2.1.4 | 2R Hewlett |  | 5d | 2026-08-20 | 2026-08-26 | 232 | 2025-09-02 | 2025-09-08 | 5d | 99d |  | start no earlier than 2025-08-25 |  |  |
| 239 | 1.6.2.2.1.5 | 2R1 Hewlett Shelter |  | 5d | 2026-08-20 | 2026-08-26 | 232 | 2025-09-02 | 2025-09-08 | 5d | 99d |  | start no earlier than 2025-08-25 |  |  |
| 240 | 1.6.2.2.1.6 | 2RB Green Acres |  | 5d | 2026-08-20 | 2026-08-26 | 232 | 2025-09-02 | 2025-09-08 | 5d | 99d |  | start no earlier than 2025-08-25 |  |  |
| 241 | 1.6.2.2.1.7 | 2WB Barrett Power Plant |  | 5d | 2026-08-20 | 2026-08-26 | 232 | 2025-09-02 | 2025-09-08 | 5d | 99d |  | start no earlier than 2025-08-25 |  |  |
| 242 | 1.6.2.2.1.8 | 2ZB Barrett Power Plant (EF Barrett PS) |  | 5d | 2026-08-20 | 2026-08-26 | 232 | 2025-09-02 | 2025-09-08 | 5d | 0d |  | start no earlier than 2025-08-25 |  |  |

| ID | WBS | Task | Duration | Start | Finish | Predecessors | Baseline start | Baseline finish | Baseline duration | Total slack |
| --- | --- | --- | --- | --- | --- | --- | --- | --- | --- | --- |
| 243 | 1.6.2.2.2 | **Week # 3** | 5d | 2026-08-27 | 2026-09-02 |  | 2025-09-09 | 2025-09-15 | 5d | 0d |
| 244 | 1.6.2.2.2.1 | 3J Whiteside | 5d | 2026-08-27 | 2026-09-02 | 242 | 2025-09-09 | 2025-09-15 | 5d | 94d |
| 245 | 1.6.2.2.2.2 | 4M Baldwin | 5d | 2026-08-27 | 2026-09-02 | 242 | 2025-09-09 | 2025-09-15 | 5d | 94d |
| 246 | 1.6.2.2.2.3 | 4M1 Baldwin Shelter | 5d | 2026-08-27 | 2026-09-02 | 242 | 2025-09-09 | 2025-09-15 | 5d | 94d |
| 247 | 1.6.2.2.2.4 | 6H Hauppauge | 5d | 2026-08-27 | 2026-09-02 | 242 | 2025-09-09 | 2025-09-15 | 5d | 94d |
| 248 | 1.6.2.2.2.5 | 6H1 Hauppauge Tower Shelter | 5d | 2026-08-27 | 2026-09-02 | 242 | 2025-09-09 | 2025-09-15 | 5d | 94d |
| 249 | 1.6.2.2.2.6 | 6K State School | 5d | 2026-08-27 | 2026-09-02 | 242 | 2025-09-09 | 2025-09-15 | 5d | 0d |
| 250 | 1.6.2.2.3 | **Week # 4** | 5d | 2026-09-03 | 2026-09-10 |  | 2025-09-16 | 2025-09-22 | 5d | 0d |
| 251 | 1.6.2.2.3.1 | 6S Kings Hwy | 5d | 2026-09-03 | 2026-09-10 | 249 | 2025-09-16 | 2025-09-22 | 5d | 89d |
| 252 | 1.6.2.2.3.2 | 7BH Bohemia | 5d | 2026-09-03 | 2026-09-10 | 249 | 2025-09-16 | 2025-09-22 | 5d | 89d |
| 253 | 1.6.2.2.3.3 | 7D West Babylon | 5d | 2026-09-03 | 2026-09-10 | 249 | 2025-09-16 | 2025-09-22 | 5d | 89d |
| 254 | 1.6.2.2.3.4 | 7D1 West Babylon Shelter | 5d | 2026-09-03 | 2026-09-10 | 249 | 2025-09-16 | 2025-09-22 | 5d | 89d |
| 255 | 1.6.2.2.3.5 | 7H Babylon | 5d | 2026-09-03 | 2026-09-10 | 249 |  |  |  | 89d |
| 256 | 1.6.2.2.3.6 | 7H1 Babylon Shelter | 5d | 2026-09-03 | 2026-09-10 | 249 |  |  |  | 0d |
| 257 | 1.6.2.2.4 | **Week # 5** | 5d | 2026-09-11 | 2026-09-17 |  | 2025-09-23 | 2025-09-26 | 4d | 0d |
| 258 | 1.6.2.2.4.1 | 7J Sterling | 5d | 2026-09-11 | 2026-09-17 | 256 | 2025-09-23 | 2025-09-26 | 4d | 84d |
| 259 | 1.6.2.2.4.2 | 7M MacArthur | 5d | 2026-09-11 | 2026-09-17 | 256 | 2025-09-23 | 2025-09-26 | 4d | 84d |
| 260 | 1.6.2.2.4.3 | 7R Sayville | 5d | 2026-09-11 | 2026-09-17 | 256 | 2025-09-23 | 2025-09-26 | 4d | 84d |
| 261 | 1.6.2.2.4.4 | 7RM Bayport | 5d | 2026-09-11 | 2026-09-17 | 256 | 2025-09-23 | 2025-09-26 | 4d | 84d |
| 262 | 1.6.2.2.4.5 | 7UM South Farmingdale | 5d | 2026-09-11 | 2026-09-17 | 256 | 2025-09-23 | 2025-09-26 | 4d | 84d |
| 263 | 1.6.2.2.4.6 | 7W Berry St | 5d | 2026-09-11 | 2026-09-17 | 256 | 2025-09-23 | 2025-09-26 | 4d | 0d |
| 264 | 1.6.2.2.5 | **Week # 6** | 5d | 2026-09-18 | 2026-09-24 |  | 2025-09-29 | 2025-10-03 | 5d | 0d |
| 265 | 1.6.2.2.5.1 | 7XM Great River | 5d | 2026-09-18 | 2026-09-24 | 263 | 2025-09-29 | 2025-10-03 | 5d | 79d |
| 266 | 1.6.2.2.5.2 | 7XM1 Great River - Shelter | 5d | 2026-09-18 | 2026-09-24 | 263 | 2025-09-29 | 2025-10-03 | 5d | 79d |
| 267 | 1.6.2.2.5.3 | 7Z Lindenhurst | 5d | 2026-09-18 | 2026-09-24 | 263 | 2025-09-29 | 2025-10-03 | 5d | 79d |
| 268 | 1.6.2.2.5.4 | 8AX Patchogue | 5d | 2026-09-18 | 2026-09-24 | 263 | 2025-09-29 | 2025-10-03 | 5d | 79d |
| 269 | 1.6.2.2.5.5 | 8AX1 Patchogue - Shelter | 5d | 2026-09-18 | 2026-09-24 | 263 | 2025-09-29 | 2025-10-03 | 5d | 79d |
| 270 | 1.6.2.2.5.6 | DO Brentwood DO | 5d | 2026-09-18 | 2026-09-24 | 263 | 2025-09-29 | 2025-10-03 | 5d | 79d |
| 271 | 1.6.2.2.5.7 | DO Hewlett Headquarters | 5d | 2026-09-18 | 2026-09-24 | 263 |  |  |  | 0d |

| ID | WBS | Task | Duration | Start | Finish | Predecessors | Baseline start | Baseline finish | Baseline duration | Total slack |
| --- | --- | --- | --- | --- | --- | --- | --- | --- | --- | --- |
| 272 | 1.6.2.2.6 | **Week 7** | 3d | 2026-09-25 | 2026-09-29 |  |  |  |  | 0d |
| 273 | 1.6.2.2.6.1 | 5HK Hicksville - Primary | 3d | 2026-09-25 | 2026-09-29 | 271 |  |  |  | 76d |
| 274 | 1.6.2.2.6.2 | 6U Ruland Road | 3d | 2026-09-25 | 2026-09-29 | 271 |  |  |  | 76d |
| 275 | 1.6.2.2.6.3 | ACC | 3d | 2026-09-25 | 2026-09-29 | 271 |  |  |  | 0d |
| 276 | 1.6.3 | Site Acceptance Testing | 3d | 2026-09-30 | 2026-10-02 | 275 | 2025-10-06 | 2025-10-08 | 3d | 0d |
| 277 | 1.6.4 | **Cutover** | 73d | 2026-10-05 | 2027-02-03 | 276 | 2025-10-09 | 2026-01-20 | 69d | 0d |
| 278 | 1.6.4.1 | **Cutover Phase 1 - CWDM** | 11d | 2026-10-05 | 2026-10-19 |  | 2025-10-09 | 2025-10-22 | 10d | 0d |
| 279 | 1.6.4.1.1 | 2H Far Rockaway | 1d | 2026-10-05 | 2026-10-05 | 276 | 2025-10-09 | 2025-10-09 | 1d | 72d |
| 280 | 1.6.4.1.2 | 2K Valley Stream | 1d | 2026-10-05 | 2026-10-05 | 276 | 2025-10-09 | 2025-10-09 | 1d | 72d |
| 281 | 1.6.4.1.3 | 2KB Cedarhurst | 1d | 2026-10-05 | 2026-10-05 | 276 | 2025-10-09 | 2025-10-09 | 1d | 72d |
| 282 | 1.6.4.1.4 | 2R Hewlett | 1d | 2026-10-05 | 2026-10-05 | 276 | 2025-10-09 | 2025-10-09 | 1d | 72d |
| 283 | 1.6.4.1.5 | 2R1 Hewlett Shelter | 1d | 2026-10-05 | 2026-10-05 | 276 | 2025-10-09 | 2025-10-09 | 1d | 0d |
| 284 | 1.6.4.1.6 | 2RB Green Acres | 1d | 2026-10-06 | 2026-10-06 | 283 | 2025-10-10 | 2025-10-10 | 1d | 71d |
| 285 | 1.6.4.1.7 | 2WB Barrett Power Plant | 1d | 2026-10-06 | 2026-10-06 | 283 | 2025-10-10 | 2025-10-10 | 1d | 71d |
| 286 | 1.6.4.1.8 | 2ZB Barrett Power Plant (EF Barrett PS) | 1d | 2026-10-06 | 2026-10-06 | 283 | 2025-10-10 | 2025-10-10 | 1d | 0d |
| 287 | 1.6.4.1.9 | 3J Whiteside | 1d | 2026-10-07 | 2026-10-07 | 286 | 2025-10-13 | 2025-10-13 | 1d | 70d |
| 288 | 1.6.4.1.10 | 4M Baldwin | 1d | 2026-10-07 | 2026-10-07 | 286 | 2025-10-13 | 2025-10-13 | 1d | 70d |
| 289 | 1.6.4.1.11 | 4M1 Baldwin Shelter | 1d | 2026-10-07 | 2026-10-07 | 286 | 2025-10-13 | 2025-10-13 | 1d | 0d |
| 290 | 1.6.4.1.12 | 6H Hauppauge | 1d | 2026-10-08 | 2026-10-08 | 289 | 2025-10-14 | 2025-10-14 | 1d | 69d |
| 291 | 1.6.4.1.13 | 6H1 Hauppauge Tower Shelter | 1d | 2026-10-08 | 2026-10-08 | 289 | 2025-10-14 | 2025-10-14 | 1d | 69d |
| 292 | 1.6.4.1.14 | 6K State School | 1d | 2026-10-08 | 2026-10-08 | 289 | 2025-10-14 | 2025-10-14 | 1d | 0d |
| 293 | 1.6.4.1.15 | 6S Kings Hwy | 1d | 2026-10-09 | 2026-10-09 | 292 | 2025-10-15 | 2025-10-15 | 1d | 68d |
| 294 | 1.6.4.1.16 | 7BH Bohemia | 1d | 2026-10-09 | 2026-10-09 | 292 | 2025-10-15 | 2025-10-15 | 1d | 0d |
| 295 | 1.6.4.1.17 | 7D West Babylon | 1d | 2026-10-12 | 2026-10-12 | 294 | 2025-10-16 | 2025-10-16 | 1d | 67d |
| 296 | 1.6.4.1.18 | 7D1 West Babylon Shelter | 1d | 2026-10-12 | 2026-10-12 | 294 |  |  |  | 67d |
| 297 | 1.6.4.1.19 | 7H Babylon | 1d | 2026-10-12 | 2026-10-12 | 294 | 2025-10-16 | 2025-10-16 | 1d | 0d |
| 298 | 1.6.4.1.20 | 7H1 Babylon Shelter | 1d | 2026-10-13 | 2026-10-13 | 297 | 2025-10-17 | 2025-10-17 | 1d | 66d |
| 299 | 1.6.4.1.21 | 7J Sterling | 1d | 2026-10-13 | 2026-10-13 | 297 | 2025-10-17 | 2025-10-17 | 1d | 66d |
| 300 | 1.6.4.1.22 | 7M MacArthur | 1d | 2026-10-13 | 2026-10-13 | 297 | 2025-10-17 | 2025-10-17 | 1d | 0d |
| 301 | 1.6.4.1.23 | 7R Sayville | 1d | 2026-10-14 | 2026-10-14 | 300 | 2025-10-20 | 2025-10-20 | 1d | 65d |
| 302 | 1.6.4.1.24 | 7RM Bayport | 1d | 2026-10-14 | 2026-10-14 | 300 | 2025-10-20 | 2025-10-20 | 1d | 65d |
| 303 | 1.6.4.1.25 | 7UM South Farmingdale | 1d | 2026-10-14 | 2026-10-14 | 300 | 2025-10-20 | 2025-10-20 | 1d | 0d |
| 304 | 1.6.4.1.26 | 7W Berry St | 1d | 2026-10-15 | 2026-10-15 | 303 | 2025-10-21 | 2025-10-21 | 1d | 64d |
| 305 | 1.6.4.1.27 | 7XM Great River | 1d | 2026-10-15 | 2026-10-15 | 303 | 2025-10-21 | 2025-10-21 | 1d | 64d |
| 306 | 1.6.4.1.28 | 7XM1 Great River - Shelter | 1d | 2026-10-15 | 2026-10-15 | 303 | 2025-10-21 | 2025-10-21 | 1d | 64d |
| 307 | 1.6.4.1.29 | 7Z Lindenhurst | 1d | 2026-10-15 | 2026-10-15 | 303 | 2025-10-21 | 2025-10-21 | 1d | 0d |
| 308 | 1.6.4.1.30 | 8AX Patchogue | 1d | 2026-10-16 | 2026-10-16 | 307 | 2025-10-22 | 2025-10-22 | 1d | 63d |
| 309 | 1.6.4.1.31 | 8AX1 Patchogue - Shelter | 1d | 2026-10-16 | 2026-10-16 | 307 | 2025-10-22 | 2025-10-22 | 1d | 63d |
| 310 | 1.6.4.1.32 | DO Brentwood DO | 1d | 2026-10-16 | 2026-10-16 | 307 | 2025-10-22 | 2025-10-22 | 1d | 63d |
| 311 | 1.6.4.1.33 | DO Hewlett Headquarters | 1d | 2026-10-16 | 2026-10-16 | 307 |  |  |  | 0d |
| 312 | 1.6.4.1.34 | 5HK Hicksville - Primary | 1d | 2026-10-19 | 2026-10-19 | 311 |  |  |  | 62d |
| 313 | 1.6.4.1.35 | 6U Ruland Road | 1d | 2026-10-19 | 2026-10-19 | 311 |  |  |  | 62d |
| 314 | 1.6.4.1.36 | ACC | 1d | 2026-10-19 | 2026-10-19 | 311 |  |  |  | 0d |

| ID | WBS | Task | Duration | Start | Finish | Predecessors | Baseline start | Baseline finish | Baseline duration | Total slack |
| --- | --- | --- | --- | --- | --- | --- | --- | --- | --- | --- |
| 315 | 1.6.4.2 | **Cutover Phase 2 - Security and Radio** | 28d | 2026-10-20 | 2026-12-03 |  | 2025-10-23 | 2025-12-02 | 27d | 0d |
| 316 | 1.6.4.2.1 | 2H Far Rockaway | 1d | 2026-10-20 | 2026-10-20 | 314 | 2025-10-23 | 2025-10-23 | 1d | 61d |
| 317 | 1.6.4.2.2 | 2K Valley Stream | 1d | 2026-10-20 | 2026-10-20 | 314 | 2025-10-23 | 2025-10-23 | 1d | 61d |
| 318 | 1.6.4.2.3 | 2KB Cedarhurst | 1d | 2026-10-20 | 2026-10-20 | 314 | 2025-10-24 | 2025-10-24 | 1d | 0d |
| 319 | 1.6.4.2.4 | 2R Hewlett | 1d | 2026-10-21 | 2026-10-21 | 318 | 2025-10-27 | 2025-10-27 | 1d | 60d |
| 320 | 1.6.4.2.5 | 2R1 Hewlett Shelter | 1d | 2026-10-21 | 2026-10-21 | 318 | 2025-10-27 | 2025-10-27 | 1d | 0d |
| 321 | 1.6.4.2.6 | 2RB Green Acres | 1d | 2026-10-22 | 2026-10-22 | 320 | 2025-10-28 | 2025-10-28 | 1d | 0d |
| 322 | 1.6.4.2.7 | 2WB Barrett Power Plant | 2d | 2026-10-23 | 2026-10-26 | 321 | 2025-10-29 | 2025-10-30 | 2d | 57d |
| 323 | 1.6.4.2.8 | 2ZB Barrett Power Plant (EF Barrett PS) | 2d | 2026-10-23 | 2026-10-26 | 321 | 2025-10-29 | 2025-10-30 | 2d | 0d |
| 324 | 1.6.4.2.9 | 3J Whiteside | 1d | 2026-10-27 | 2026-10-27 | 323 | 2025-10-31 | 2025-10-31 | 1d | 56d |
| 325 | 1.6.4.2.10 | 4M Baldwin | 1d | 2026-10-27 | 2026-10-27 | 323 | 2025-10-31 | 2025-10-31 | 1d | 0d |
| 326 | 1.6.4.2.11 | 4M1 Baldwin Shelter | 1d | 2026-10-28 | 2026-10-28 | 325 | 2025-11-03 | 2025-11-03 | 1d | 0d |
| 327 | 1.6.4.2.12 | 6H Hauppauge | 1d | 2026-10-29 | 2026-10-29 | 326 | 2025-11-04 | 2025-11-04 | 1d | 0d |
| 328 | 1.6.4.2.13 | 6H1 Hauppauge Tower Shelter | 1d | 2026-10-30 | 2026-10-30 | 327 | 2025-11-05 | 2025-11-05 | 1d | 0d |
| 329 | 1.6.4.2.14 | 6K State School | 1d | 2026-11-02 | 2026-11-02 | 328 | 2025-11-06 | 2025-11-06 | 1d | 0d |
| 330 | 1.6.4.2.15 | 6S Kings Hwy | 2d | 2026-11-03 | 2026-11-04 | 329 | 2025-11-07 | 2025-11-10 | 2d | 0d |
| 331 | 1.6.4.2.16 | 7BH Bohemia | 1d | 2026-11-05 | 2026-11-05 | 330 | 2025-11-11 | 2025-11-11 | 1d | 0d |
| 332 | 1.6.4.2.17 | 7D West Babylon | 2d | 2026-11-06 | 2026-11-09 | 331 | 2025-11-12 | 2025-11-13 | 2d | 47d |
| 333 | 1.6.4.2.18 | 7D1 West Babylon Shelter | 2d | 2026-11-06 | 2026-11-09 | 331 | 2025-11-12 | 2025-11-13 | 2d | 0d |
| 334 | 1.6.4.2.19 | 7H Babylon | 1d | 2026-11-10 | 2026-11-10 | 333 | 2025-11-14 | 2025-11-14 | 1d | 0d |
| 335 | 1.6.4.2.20 | 7H1 Babylon Shelter | 1d | 2026-11-11 | 2026-11-11 | 334 | 2025-11-17 | 2025-11-17 | 1d | 0d |
| 336 | 1.6.4.2.21 | 7J Sterling | 1d | 2026-11-12 | 2026-11-12 | 335 | 2025-11-18 | 2025-11-18 | 1d | 0d |
| 337 | 1.6.4.2.22 | 7M MacArthur | 1d | 2026-11-13 | 2026-11-13 | 336 | 2025-11-19 | 2025-11-19 | 1d | 0d |
| 338 | 1.6.4.2.23 | 7R Sayville | 1d | 2026-11-16 | 2026-11-16 | 337 | 2025-11-20 | 2025-11-20 | 1d | 0d |
| 339 | 1.6.4.2.24 | 7RM Bayport | 1d | 2026-11-17 | 2026-11-17 | 338 | 2025-11-21 | 2025-11-21 | 1d | 0d |
| 340 | 1.6.4.2.25 | 7UM South Farmingdale | 1d | 2026-11-18 | 2026-11-18 | 339 | 2025-11-24 | 2025-11-24 | 1d | 40d |
| 341 | 1.6.4.2.26 | 7W Berry St | 1d | 2026-11-18 | 2026-11-18 | 339 | 2025-11-24 | 2025-11-24 | 1d | 0d |
| 342 | 1.6.4.2.27 | 7XM Great River | 1d | 2026-11-19 | 2026-11-19 | 341 | 2025-11-25 | 2025-11-25 | 1d | 39d |
| 343 | 1.6.4.2.28 | 7XM1 Great River - Shelter | 1d | 2026-11-19 | 2026-11-19 | 341 | 2025-11-25 | 2025-11-25 | 1d | 0d |
| 344 | 1.6.4.2.29 | 7Z Lindenhurst | 1d | 2026-11-20 | 2026-11-20 | 343 | 2025-11-26 | 2025-11-26 | 1d | 0d |
| 345 | 1.6.4.2.30 | 8AX Patchogue | 1d | 2026-11-30 | 2026-11-30 | 344 | 2025-12-01 | 2025-12-01 | 1d | 0d |
| 346 | 1.6.4.2.31 | 8AX1 Patchogue - Shelter | 1d | 2026-12-01 | 2026-12-01 | 345 | 2025-12-02 | 2025-12-02 | 1d | 36d |
| 347 | 1.6.4.2.32 | DO Brentwood DO | 1d | 2026-12-01 | 2026-12-01 | 345 |  |  |  | 0d |
| 348 | 1.6.4.2.33 | DO Hewlett Headquarters | 1d | 2026-12-02 | 2026-12-02 | 347 |  |  |  | 0d |
| 349 | 1.6.4.2.34 | 5HK Hicksville - Primary | 1d | 2026-12-02 | 2026-12-02 | 347 |  |  |  | 35d |
| 350 | 1.6.4.2.35 | 6U Ruland Road | 1d | 2026-12-03 | 2026-12-03 | 348 |  |  |  | 34d |
| 351 | 1.6.4.2.36 | ACC | 1d | 2026-12-03 | 2026-12-03 | 348 |  |  |  | 0d |

| ID | WBS | Task | Duration | Start | Finish | Predecessors | Baseline start | Baseline finish | Baseline duration | Total slack |
| --- | --- | --- | --- | --- | --- | --- | --- | --- | --- | --- |
| 352 | 1.6.4.3 | **Cutover Phase 3 - Relay/RTU Cutover** | 34d | 2026-12-04 | 2027-02-03 |  | 2025-12-03 | 2026-01-20 | 32d | 0d |
| 353 | 1.6.4.3.1 | 2H Far Rockaway | 1d | 2026-12-04 | 2026-12-04 | 351 | 2025-12-03 | 2025-12-03 | 1d | 33d |
| 354 | 1.6.4.3.2 | 2K Valley Stream | 1d | 2026-12-04 | 2026-12-04 | 351 | 2025-12-03 | 2025-12-03 | 1d | 0d |
| 355 | 1.6.4.3.3 | 2KB Cedarhurst | 1d | 2026-12-07 | 2026-12-07 | 354 | 2025-12-04 | 2025-12-04 | 1d | 0d |
| 356 | 1.6.4.3.4 | 2R Hewlett | 1d | 2026-12-08 | 2026-12-08 | 355 | 2025-12-05 | 2025-12-05 | 1d | 31d |
| 357 | 1.6.4.3.5 | 2R1 Hewlett Shelter | 1d | 2026-12-08 | 2026-12-08 | 355 | 2025-12-05 | 2025-12-05 | 1d | 0d |
| 358 | 1.6.4.3.6 | 2RB Green Acres | 1d | 2026-12-09 | 2026-12-09 | 357 | 2025-12-08 | 2025-12-08 | 1d | 0d |
| 359 | 1.6.4.3.7 | 2WB Barrett Power Plant | 2d | 2026-12-10 | 2026-12-11 | 358 | 2025-12-09 | 2025-12-10 | 2d | 28d |
| 360 | 1.6.4.3.8 | 2ZB Barrett Power Plant (EF Barrett PS) | 2d | 2026-12-10 | 2026-12-11 | 358 | 2025-12-09 | 2025-12-10 | 2d | 0d |
| 361 | 1.6.4.3.9 | 3J Whiteside | 1d | 2026-12-14 | 2026-12-14 | 360 | 2025-12-11 | 2025-12-11 | 1d | 27d |
| 362 | 1.6.4.3.10 | 4M Baldwin | 1d | 2026-12-14 | 2026-12-14 | 360 | 2025-12-11 | 2025-12-11 | 1d | 0d |
| 363 | 1.6.4.3.11 | 4M1 Baldwin Shelter | 1d | 2026-12-15 | 2026-12-15 | 362 | 2025-12-12 | 2025-12-12 | 1d | 0d |
| 364 | 1.6.4.3.12 | 6H Hauppauge | 1d | 2026-12-16 | 2026-12-16 | 363 | 2025-12-15 | 2025-12-15 | 1d | 0d |
| 365 | 1.6.4.3.13 | 6H1 Hauppauge Tower Shelter | 2d | 2026-12-17 | 2026-12-18 | 364 | 2025-12-16 | 2025-12-17 | 2d | 0d |
| 366 | 1.6.4.3.14 | 6K State School | 1d | 2027-01-04 | 2027-01-04 | 365 | 2025-12-18 | 2025-12-18 | 1d | 0d |
| 367 | 1.6.4.3.15 | 6S Kings Hwy | 3d | 2027-01-05 | 2027-01-07 | 366 | 2025-12-19 | 2025-12-23 | 3d | 0d |
| 368 | 1.6.4.3.16 | 7BH Bohemia | 3d | 2027-01-08 | 2027-01-12 | 367 | 2025-12-26 | 2025-12-30 | 3d | 0d |
| 369 | 1.6.4.3.17 | 7D West Babylon | 3d | 2027-01-13 | 2027-01-15 | 368 | 2025-12-31 | 2026-01-05 | 3d | 13d |
| 370 | 1.6.4.3.18 | 7D1 West Babylon Shelter | 3d | 2027-01-13 | 2027-01-15 | 368 | 2025-12-31 | 2026-01-05 | 3d | 0d |
| 371 | 1.6.4.3.19 | 7H Babylon | 1d | 2027-01-18 | 2027-01-18 | 370 | 2026-01-06 | 2026-01-06 | 1d | 0d |
| 372 | 1.6.4.3.20 | 7H1 Babylon Shelter | 1d | 2027-01-19 | 2027-01-19 | 371 | 2026-01-07 | 2026-01-07 | 1d | 0d |
| 373 | 1.6.4.3.21 | 7J Sterling | 1d | 2027-01-20 | 2027-01-20 | 372 | 2026-01-08 | 2026-01-08 | 1d | 0d |
| 374 | 1.6.4.3.22 | 7M MacArthur | 1d | 2027-01-21 | 2027-01-21 | 373 | 2026-01-09 | 2026-01-09 | 1d | 0d |
| 375 | 1.6.4.3.23 | 7R Sayville | 1d | 2027-01-22 | 2027-01-22 | 374 | 2026-01-12 | 2026-01-12 | 1d | 0d |
| 376 | 1.6.4.3.24 | 7RM Bayport | 1d | 2027-01-25 | 2027-01-25 | 375 | 2026-01-13 | 2026-01-13 | 1d | 0d |
| 377 | 1.6.4.3.25 | 7UM South Farmingdale | 1d | 2027-01-26 | 2027-01-26 | 376 | 2026-01-14 | 2026-01-14 | 1d | 6d |
| 378 | 1.6.4.3.26 | 7W Berry St | 1d | 2027-01-26 | 2027-01-26 | 376 | 2026-01-14 | 2026-01-14 | 1d | 0d |
| 379 | 1.6.4.3.27 | 7XM Great River | 1d | 2027-01-27 | 2027-01-27 | 378 | 2026-01-15 | 2026-01-15 | 1d | 5d |
| 380 | 1.6.4.3.28 | 7XM1 Great River - Shelter | 1d | 2027-01-27 | 2027-01-27 | 378 | 2026-01-15 | 2026-01-15 | 1d | 0d |
| 381 | 1.6.4.3.29 | 7Z Lindenhurst | 1d | 2027-01-28 | 2027-01-28 | 380 | 2026-01-16 | 2026-01-16 | 1d | 0d |
| 382 | 1.6.4.3.30 | 8AX Patchogue | 1d | 2027-01-29 | 2027-01-29 | 381 | 2026-01-19 | 2026-01-19 | 1d | 0d |
| 383 | 1.6.4.3.31 | 8AX1 Patchogue - Shelter | 1d | 2027-02-01 | 2027-02-01 | 382 | 2026-01-20 | 2026-01-20 | 1d | 2d |
| 384 | 1.6.4.3.32 | DO Brentwood DO | 1d | 2027-02-01 | 2027-02-01 | 382 |  |  |  | 0d |
| 385 | 1.6.4.3.33 | DO Hewlett Headquarters | 1d | 2027-02-02 | 2027-02-02 | 384 |  |  |  | 1d |
| 386 | 1.6.4.3.34 | 5HK Hicksville - Primary | 1d | 2027-02-02 | 2027-02-02 | 384 |  |  |  | 0d |
| 387 | 1.6.4.3.35 | 6U Ruland Road | 1d | 2027-02-03 | 2027-02-03 | 386 |  |  |  | 0d |
| 388 | 1.6.4.3.36 | ACC | 1d | 2027-02-03 | 2027-02-03 | 386 |  |  |  | 0d |

| ID | WBS | Task | Type | Duration | Start | Finish | Predecessors | Total slack | Free slack | Constraint |
| --- | --- | --- | --- | --- | --- | --- | --- | --- | --- | --- |
| 389 | 2 | **PSEGLI JMUX Replacement Engineering Phase 3** |  | 131d? | 2026-06-01 | 2026-12-09 |  | 0d |  |  |
| 390 | 2.1 | Purchase Order Received |  | 1d | 2026-06-01 | 2026-06-01 |  | 0d |  | start no earlier than 2026-06-01 |
| 391 | 2.2 | **Detailed Engineering Site Surveys** |  | 55d | 2026-06-02 | 2026-08-18 |  | 0d |  |  |
| 392 | 2.2.1 | Site Survey Week 1 |  | 5d | 2026-06-02 | 2026-06-08 | 390 | 0d |  |  |
| 393 | 2.2.2 | Site Survey Week 2 |  | 5d | 2026-07-08 | 2026-07-14 | 392FS+1mo | 105d | 0d |  |
| 394 | 2.2.3 | Site Survey Week 3 |  | 5d | 2026-08-12 | 2026-08-18 | 393FS+1mo | 105d |  |  |
| 395 | 2.3 | **MPLS Network Node Design** |  | 125d? | 2026-06-09 | 2026-12-09 |  | 0d |  |  |
| 396 | 2.3.1 | **Site Design Start** |  | 125d? | 2026-06-09 | 2026-12-09 | 392 | 0d |  |  |
| 397 | 2.3.1.1 | **6D Smithtown** |  | 40d | 2026-06-09 | 2026-08-04 |  | 115d |  |  |
| 398 | 2.3.1.1.1 | 6D Smithtown IFR |  | 4w | 2026-06-09 | 2026-07-07 | 392 | 115d | 0d |  |
| 399 | 2.3.1.1.2 | 6D Smithtown IFR PSEG LI Review |  | 2w | 2026-07-08 | 2026-07-21 | 398 | 115d | 0d |  |
| 400 | 2.3.1.1.3 | 6D Smithtown IFC |  | 2w | 2026-07-22 | 2026-08-04 | 399 | 115d |  |  |
| 401 | 2.3.1.1.4 | 6D Smithtown As-Built | manual | 1d? | 2026-06-09 | 2026-06-09 |  |  |  |  |
| 402 | 2.3.1.1.5 | 6D Smithtown As-Built PSEG LI Review | manual | 1d? | 2026-06-09 | 2026-06-09 |  |  |  |  |
| 403 | 2.3.1.2 | **6L Nesconset** |  | 40d? | 2026-06-09 | 2026-08-04 |  | 0d |  |  |
| 404 | 2.3.1.2.1 | 6L Nesconset IFR |  | 4w | 2026-06-09 | 2026-07-07 | 392 | 135d |  |  |
| 405 | 2.3.1.2.2 | 6L Nesconset IFR PSEG LI Review |  | 2w | 2026-07-08 | 2026-07-21 | 398 | 125d |  |  |
| 406 | 2.3.1.2.3 | 6L Nesconset IFC |  | 2w | 2026-07-22 | 2026-08-04 | 399 | 115d |  |  |
| 407 | 2.3.1.2.4 | 6L Nesconset As-Built | manual | 1d? | 2026-06-09 | 2026-06-09 |  |  |  |  |
| 408 | 2.3.1.2.5 | 6L Nesconset As-Built PSEG LI Review | manual | 1d? | 2026-06-09 | 2026-06-09 |  |  |  |  |
| 409 | 2.3.1.3 | **7DM Central Islip** |  | 40d? | 2026-06-09 | 2026-08-04 |  | 0d |  |  |
| 410 | 2.3.1.3.1 | 7DM Central Islip IFR |  | 4w | 2026-06-09 | 2026-07-07 | 392 | 135d |  |  |
| 411 | 2.3.1.3.2 | 7DM Central Islip IFR PSEG LI Review |  | 2w | 2026-07-08 | 2026-07-21 | 398 | 125d |  |  |
| 412 | 2.3.1.3.3 | 7DM Central Islip IFC |  | 2w | 2026-07-22 | 2026-08-04 | 399 | 115d |  |  |
| 413 | 2.3.1.3.4 | 7DM Central Islip As-Built | manual | 1d? | 2026-06-09 | 2026-06-09 |  |  |  |  |
| 414 | 2.3.1.3.5 | 7DM Central Islip As-Built PSEG LI Review | manual | 1d? | 2026-06-09 | 2026-06-09 |  |  |  |  |

| ID | WBS | Task | Type | Duration | Start | Finish | Predecessors | Total slack | Free slack |
| --- | --- | --- | --- | --- | --- | --- | --- | --- | --- |
| 415 | 2.3.1.4 | **8A Ronkonkoma** |  | 50d? | 2026-06-09 | 2026-08-18 |  | 0d |  |
| 416 | 2.3.1.4.1 | 8A Ronkonkoma IFR |  | 4w | 2026-06-23 | 2026-07-21 | 392FS+2w | 105d | 0d |
| 417 | 2.3.1.4.2 | 8A Ronkonkoma IFR PSEG LI Review |  | 2w | 2026-07-22 | 2026-08-04 | 416 | 105d | 0d |
| 418 | 2.3.1.4.3 | 8A Ronkonkoma IFC |  | 2w | 2026-08-05 | 2026-08-18 | 417 | 105d |  |
| 419 | 2.3.1.4.4 | 8A Ronkonkoma As-Built | manual | 1d? | 2026-06-09 | 2026-06-09 |  |  |  |
| 420 | 2.3.1.4.5 | 8A Ronkonkoma As-Built PSEG LI Review | manual | 1d? | 2026-06-09 | 2026-06-09 |  |  |  |
| 421 | 2.3.1.5 | **8C Sills Road** |  | 40d? | 2026-06-09 | 2026-08-04 |  | 0d |  |
| 422 | 2.3.1.5.1 | 8C Sills Road IFR |  | 4w | 2026-06-23 | 2026-07-21 | 392FS+2w | 115d | 0d |
| 423 | 2.3.1.5.2 | 8C Sills Road IFR PSEG LI Review |  | 2w | 2026-07-22 | 2026-08-04 | 422 | 115d |  |
| 424 | 2.3.1.5.3 | 8C Sills Road IFC |  | 2w | 2026-06-10 | 2026-06-23 | 432 | 144d |  |
| 425 | 2.3.1.5.4 | 8C Sills Road As-Built | manual | 1d? | 2026-06-09 | 2026-06-09 |  |  |  |
| 426 | 2.3.1.5.5 | 8C Sills Road As-Built PSEG LI Review | manual | 1d? | 2026-06-09 | 2026-06-09 |  |  |  |
| 427 | 2.3.1.6 | **8C1 Sills Road Shelter** |  | 50d? | 2026-06-09 | 2026-08-18 |  | 0d |  |
| 428 | 2.3.1.6.1 | 8C1 Sills Road Shelter IFR |  | 4w | 2026-06-23 | 2026-07-21 | 392FS+2w | 105d | 0d |
| 429 | 2.3.1.6.2 | 8C1 Sills Road Shelter IFR PSEG LI Review |  | 2w | 2026-07-22 | 2026-08-04 | 428 | 105d | 0d |
| 430 | 2.3.1.6.3 | 8C1 Sills Road Shelter IFC |  | 2w | 2026-08-05 | 2026-08-18 | 429 | 105d |  |
| 431 | 2.3.1.6.4 | 8C1 Sills Road Shelter As-Built | manual | 1d? | 2026-06-09 | 2026-06-09 |  |  |  |
| 432 | 2.3.1.6.5 | 8C1 Sills Road Shelter As-Built PSEG LI Review | manual | 1d? | 2026-06-09 | 2026-06-09 |  |  |  |
| 433 | 2.3.1.7 | **8D Holbrook** |  | 60d? | 2026-06-09 | 2026-09-01 |  | 0d |  |
| 434 | 2.3.1.7.1 | 8D Holbrook IFR |  | 4w | 2026-07-08 | 2026-08-04 | 392FS+4w | 95d | 0d |
| 435 | 2.3.1.7.2 | 8D Holbrook IFR PSEG LI Review |  | 2w | 2026-08-05 | 2026-08-18 | 434 | 95d | 0d |
| 436 | 2.3.1.7.3 | 8D Holbrook IFC |  | 2w | 2026-08-19 | 2026-09-01 | 435 | 95d |  |
| 437 | 2.3.1.7.4 | 8D Holbrook As-Built | manual | 1d? | 2026-06-09 | 2026-06-09 |  |  |  |
| 438 | 2.3.1.7.5 | 8D Holbrook As-Built PSEG LI Review | manual | 1d? | 2026-06-09 | 2026-06-09 |  |  |  |

| ID | WBS | Task | Type | Duration | Start | Finish | Predecessors | Total slack | Free slack |
| --- | --- | --- | --- | --- | --- | --- | --- | --- | --- |
| 439 | 2.3.1.8 | **8DR Wildwood** |  | 60d? | 2026-06-09 | 2026-09-01 |  | 0d |  |
| 440 | 2.3.1.8.1 | 8DR Wildwood IFR |  | 4w | 2026-07-08 | 2026-08-04 | 392FS+4w | 95d | 0d |
| 441 | 2.3.1.8.2 | 8DR Wildwood IFR PSEG LI Review |  | 2w | 2026-08-05 | 2026-08-18 | 440 | 95d | 0d |
| 442 | 2.3.1.8.3 | 8DR Wildwood IFC |  | 2w | 2026-08-19 | 2026-09-01 | 441 | 95d |  |
| 443 | 2.3.1.8.4 | 8DR Wildwood As-Built | manual | 1d? | 2026-06-09 | 2026-06-09 |  |  |  |
| 444 | 2.3.1.8.5 | 8DR Wildwood As-Built PSEG LI Review | manual | 1d? | 2026-06-09 | 2026-06-09 |  |  |  |
| 445 | 2.3.1.9 | **8DR1 Wildwood Shelter** |  | 60d? | 2026-06-09 | 2026-09-01 |  | 0d |  |
| 446 | 2.3.1.9.1 | 8DR1 Wildwood Shelter IFR |  | 4w | 2026-07-08 | 2026-08-04 | 392FS+4w | 95d | 0d |
| 447 | 2.3.1.9.2 | 8DR1 Wildwood Shelter IFR PSEG LI Review |  | 2w | 2026-08-05 | 2026-08-18 | 446 | 95d | 0d |
| 448 | 2.3.1.9.3 | 8DR1 Wildwood Shelter IFC |  | 2w | 2026-08-19 | 2026-09-01 | 447 | 95d |  |
| 449 | 2.3.1.9.4 | 8DR1 Wildwood Shelter As-Built | manual | 1d? | 2026-06-09 | 2026-06-09 |  |  |  |
| 450 | 2.3.1.9.5 | 8DR1 Wildwood Shelter As-Built PSEG LI Review | manual | 1d? | 2026-06-09 | 2026-06-09 |  |  |  |
| 451 | 2.3.1.10 | **8ED Edwards Avenue** |  | 70d? | 2026-06-09 | 2026-09-16 |  | 0d |  |
| 452 | 2.3.1.10.1 | 8ED Edwards Avenue IFR |  | 4w | 2026-07-22 | 2026-08-18 | 392FS+6w | 85d | 0d |
| 453 | 2.3.1.10.2 | 8ED Edwards Avenue IFR PSEG LI Review |  | 2w | 2026-08-19 | 2026-09-01 | 452 | 85d | 0d |
| 454 | 2.3.1.10.3 | 8ED Edwards Avenue IFC |  | 2w | 2026-09-02 | 2026-09-16 | 453 | 85d |  |
| 455 | 2.3.1.10.4 | 8ED Edwards Avenue As-Built | manual | 1d? | 2026-06-09 | 2026-06-09 |  |  |  |
| 456 | 2.3.1.10.5 | 8ED Edwards Avenue As-Built PSEG LI Review | manual | 1d? | 2026-06-09 | 2026-06-09 |  |  |  |
| 457 | 2.3.1.11 | **8F Pt. Jefferson** |  | 70d? | 2026-06-09 | 2026-09-16 |  | 0d |  |
| 458 | 2.3.1.11.1 | 8F Pt. Jefferson IFR |  | 4w | 2026-07-22 | 2026-08-18 | 392FS+6w | 85d | 0d |
| 459 | 2.3.1.11.2 | 8F Pt. Jefferson IFR PSEG LI Review |  | 2w | 2026-08-19 | 2026-09-01 | 458 | 85d | 0d |
| 460 | 2.3.1.11.3 | 8F Pt. Jefferson IFC |  | 2w | 2026-09-02 | 2026-09-16 | 459 | 85d |  |
| 461 | 2.3.1.11.4 | 8F Pt. Jefferson As-Built | manual | 1d? | 2026-06-09 | 2026-06-09 |  |  |  |
| 462 | 2.3.1.11.5 | 8F Pt. Jefferson As-Built PSEG LI Review | manual | 1d? | 2026-06-09 | 2026-06-09 |  |  |  |

| ID | WBS | Task | Type | Duration | Start | Finish | Predecessors | Total slack | Free slack |
| --- | --- | --- | --- | --- | --- | --- | --- | --- | --- |
| 463 | 2.3.1.12 | **8F1 Pt. Jefferson Shelter** |  | 70d? | 2026-06-09 | 2026-09-16 |  | 0d |  |
| 464 | 2.3.1.12.1 | 8F1 Pt. Jefferson Shelter IFR |  | 4w | 2026-07-22 | 2026-08-18 | 392FS+6w | 85d | 0d |
| 465 | 2.3.1.12.2 | 8F1 Pt. Jefferson Shelter IFR PSEG LI Review |  | 2w | 2026-08-19 | 2026-09-01 | 464 | 85d | 0d |
| 466 | 2.3.1.12.3 | 8F1 Pt. Jefferson Shelter IFC |  | 2w | 2026-09-02 | 2026-09-16 | 465 | 85d |  |
| 467 | 2.3.1.12.4 | 8F1 Pt. Jefferson Shelter As-Built | manual | 1d? | 2026-06-09 | 2026-06-09 |  |  |  |
| 468 | 2.3.1.12.5 | 8F1 Pt. Jefferson Shelter As-Built PSEG LI Review | manual | 1d? | 2026-06-09 | 2026-06-09 |  |  |  |
| 469 | 2.3.1.13 | **8KU Holtsville Gas Turbine** |  | 80d? | 2026-06-09 | 2026-09-30 |  | 0d |  |
| 470 | 2.3.1.13.1 | 8KU Holtsville Gas Turbine IFR |  | 4w | 2026-08-05 | 2026-09-01 | 392FS+8w | 75d | 0d |
| 471 | 2.3.1.13.2 | 8KU Holtsville Gas Turbine IFR PSEG LI Review |  | 2w | 2026-09-02 | 2026-09-16 | 470 | 75d | 0d |
| 472 | 2.3.1.13.3 | 8KU Holtsville Gas Turbine IFC |  | 2w | 2026-09-17 | 2026-09-30 | 471 | 75d |  |
| 473 | 2.3.1.13.4 | 8KU Holtsville Gas Turbine As-Built | manual | 1d? | 2026-06-09 | 2026-06-09 |  |  |  |
| 474 | 2.3.1.13.5 | 8KU Holtsville Gas Turbine As-Built PSEG LI Review | manual | 1d? | 2026-06-09 | 2026-06-09 |  |  |  |
| 475 | 2.3.1.14 | **8KW West Bus** |  | 80d? | 2026-06-09 | 2026-09-30 |  | 0d |  |
| 476 | 2.3.1.14.1 | 8KW West Bus IFR |  | 4w | 2026-08-05 | 2026-09-01 | 392FS+8w | 75d | 0d |
| 477 | 2.3.1.14.2 | 8KW West Bus IFR PSEG LI Review |  | 2w | 2026-09-02 | 2026-09-16 | 476 | 75d | 0d |
| 478 | 2.3.1.14.3 | 8KW West Bus IFC |  | 2w | 2026-09-17 | 2026-09-30 | 477 | 75d |  |
| 479 | 2.3.1.14.4 | 8KW West Bus As-Built | manual | 1d? | 2026-06-09 | 2026-06-09 |  |  |  |
| 480 | 2.3.1.14.5 | 8KW West Bus As-Built PSEG LI Review | manual | 1d? | 2026-06-09 | 2026-06-09 |  |  |  |
| 481 | 2.3.1.15 | **8MR Stony Brook** |  | 80d? | 2026-06-09 | 2026-09-30 |  | 0d |  |
| 482 | 2.3.1.15.1 | 8MR Stony Brook IFR |  | 4w | 2026-08-05 | 2026-09-01 | 392FS+8w | 75d | 0d |
| 483 | 2.3.1.15.2 | 8MR Stony Brook IFR PSEG LI Review |  | 2w | 2026-09-02 | 2026-09-16 | 482 | 75d | 0d |
| 484 | 2.3.1.15.3 | 8MR Stony Brook IFC |  | 2w | 2026-09-17 | 2026-09-30 | 483 | 75d |  |
| 485 | 2.3.1.15.4 | 8MR Stony Brook As-Built | manual | 1d? | 2026-06-09 | 2026-06-09 |  |  |  |
| 486 | 2.3.1.15.5 | 8MR Stony Brook As-Built PSEG LI Review | manual | 1d? | 2026-06-09 | 2026-06-09 |  |  |  |

| ID | WBS | Task | Type | Duration | Start | Finish | Predecessors | Total slack | Free slack |
| --- | --- | --- | --- | --- | --- | --- | --- | --- | --- |
| 487 | 2.3.1.16 | **8Q North Shore Beach** |  | 90d? | 2026-06-09 | 2026-10-14 |  | 0d |  |
| 488 | 2.3.1.16.1 | 8Q North Shore Beach IFR |  | 4w | 2026-08-19 | 2026-09-16 | 392FS+10w | 65d | 0d |
| 489 | 2.3.1.16.2 | 8Q North Shore Beach IFR PSEG LI Review |  | 2w | 2026-09-17 | 2026-09-30 | 488 | 65d | 0d |
| 490 | 2.3.1.16.3 | 8Q North Shore Beach IFC |  | 2w | 2026-10-01 | 2026-10-14 | 489 | 65d |  |
| 491 | 2.3.1.16.4 | 8Q North Shore Beach As-Built | manual | 1d? | 2026-06-09 | 2026-06-09 |  |  |  |
| 492 | 2.3.1.16.5 | 8Q North Shore Beach As-Built PSEG LI Review | manual | 1d? | 2026-06-09 | 2026-06-09 |  |  |  |
| 493 | 2.3.1.17 | **8RX Moriches** |  | 90d? | 2026-06-09 | 2026-10-14 |  | 0d |  |
| 494 | 2.3.1.17.1 | 8RX Moriches IFR |  | 4w | 2026-08-19 | 2026-09-16 | 392FS+10w | 65d | 0d |
| 495 | 2.3.1.17.2 | 8RX Moriches IFR PSEG LI Review |  | 2w | 2026-09-17 | 2026-09-30 | 494 | 65d | 0d |
| 496 | 2.3.1.17.3 | 8RX Moriches IFC |  | 2w | 2026-10-01 | 2026-10-14 | 495 | 65d |  |
| 497 | 2.3.1.17.4 | 8RX Moriches As-Built | manual | 1d? | 2026-06-09 | 2026-06-09 |  |  |  |
| 498 | 2.3.1.17.5 | 8RX Moriches As-Built PSEG LI Review | manual | 1d? | 2026-06-09 | 2026-06-09 |  |  |  |
| 499 | 2.3.1.18 | **8SM South Manor** |  | 90d? | 2026-06-09 | 2026-10-14 |  | 0d |  |
| 500 | 2.3.1.18.1 | 8SM South Manor IFR |  | 4w | 2026-08-19 | 2026-09-16 | 392FS+10w | 65d | 0d |
| 501 | 2.3.1.18.2 | 8SM South Manor IFR PSEG LI Review |  | 2w | 2026-09-17 | 2026-09-30 | 500 | 65d | 0d |
| 502 | 2.3.1.18.3 | 8SM South Manor IFC |  | 2w | 2026-10-01 | 2026-10-14 | 501 | 65d |  |
| 503 | 2.3.1.18.4 | 8SM South Manor As-Built | manual | 1d? | 2026-06-09 | 2026-06-09 |  |  |  |
| 504 | 2.3.1.18.5 | 8SM South Manor As-Built PSEG LI Review | manual | 1d? | 2026-06-09 | 2026-06-09 |  |  |  |
| 505 | 2.3.1.19 | **8SM1 South Manor Shelter** |  | 100d? | 2026-06-09 | 2026-10-28 |  | 0d |  |
| 506 | 2.3.1.19.1 | 8SM1 South Manor Shelter IFR |  | 4w | 2026-09-02 | 2026-09-30 | 392FS+12w | 55d | 0d |
| 507 | 2.3.1.19.2 | 8SM1 South Manor Shelter IFR PSEG LI Review |  | 2w | 2026-10-01 | 2026-10-14 | 506 | 55d | 0d |
| 508 | 2.3.1.19.3 | 8SM1 South Manor Shelter IFC |  | 2w | 2026-10-15 | 2026-10-28 | 507 | 55d |  |
| 509 | 2.3.1.19.4 | 8SM1 South Manor Shelter As-Built | manual | 1d? | 2026-06-09 | 2026-06-09 |  |  |  |
| 510 | 2.3.1.19.5 | 8SM1 South Manor Shelter As-Built PSEG LI Review | manual | 1d? | 2026-06-09 | 2026-06-09 |  |  |  |

| ID | WBS | Task | Type | Duration | Start | Finish | Predecessors | Total slack | Free slack |
| --- | --- | --- | --- | --- | --- | --- | --- | --- | --- |
| 511 | 2.3.1.20 | **8T Eastport** |  | 100d? | 2026-06-09 | 2026-10-28 |  | 0d |  |
| 512 | 2.3.1.20.1 | 8T Eastport IFR |  | 4w | 2026-09-02 | 2026-09-30 | 392FS+12w | 55d | 0d |
| 513 | 2.3.1.20.2 | 8T Eastport IFR PSEG LI Review |  | 2w | 2026-10-01 | 2026-10-14 | 512 | 55d | 0d |
| 514 | 2.3.1.20.3 | 8T Eastport IFC |  | 2w | 2026-10-15 | 2026-10-28 | 513 | 55d |  |
| 515 | 2.3.1.20.4 | 8T Eastport As-Built | manual | 1d? | 2026-06-09 | 2026-06-09 |  |  |  |
| 516 | 2.3.1.20.5 | 8T Eastport As-Built PSEG LI Review | manual | 1d? | 2026-06-09 | 2026-06-09 |  |  |  |
| 517 | 2.3.1.21 | **8W Terryville** |  | 100d? | 2026-06-09 | 2026-10-28 |  | 0d |  |
| 518 | 2.3.1.21.1 | 8W Terryville IFR |  | 4w | 2026-09-02 | 2026-09-30 | 392FS+12w | 55d | 0d |
| 519 | 2.3.1.21.2 | 8W Terryville IFR PSEG LI Review |  | 2w | 2026-10-01 | 2026-10-14 | 518 | 55d | 0d |
| 520 | 2.3.1.21.3 | 8W Terryville IFC |  | 2w | 2026-10-15 | 2026-10-28 | 519 | 55d |  |
| 521 | 2.3.1.21.4 | 8W Terryville As-Built | manual | 1d? | 2026-06-09 | 2026-06-09 |  |  |  |
| 522 | 2.3.1.21.5 | 8W Terryville As-Built PSEG LI Review | manual | 1d? | 2026-06-09 | 2026-06-09 |  |  |  |
| 523 | 2.3.1.22 | **8Z Shoreham** |  | 110d? | 2026-06-09 | 2026-11-11 |  | 0d |  |
| 524 | 2.3.1.22.1 | 8Z Shoreham IFR |  | 4w | 2026-09-17 | 2026-10-14 | 392FS+14w | 45d | 0d |
| 525 | 2.3.1.22.2 | 8Z Shoreham IFR PSEG LI Review |  | 2w | 2026-10-15 | 2026-10-28 | 524 | 45d | 0d |
| 526 | 2.3.1.22.3 | 8Z Shoreham IFC |  | 2w | 2026-10-29 | 2026-11-11 | 525 | 45d |  |
| 527 | 2.3.1.22.4 | 8Z Shoreham As-Built | manual | 1d? | 2026-06-09 | 2026-06-09 |  |  |  |
| 528 | 2.3.1.22.5 | 8Z Shoreham As-Built PSEG LI Review | manual | 1d? | 2026-06-09 | 2026-06-09 |  |  |  |
| 529 | 2.3.1.23 | **9A Riverhead** |  | 110d? | 2026-06-09 | 2026-11-11 |  | 0d |  |
| 530 | 2.3.1.23.1 | 9A Riverhead IFR |  | 4w | 2026-09-17 | 2026-10-14 | 392FS+14w | 45d | 0d |
| 531 | 2.3.1.23.2 | 9A Riverhead IFR PSEG LI Review |  | 2w | 2026-10-15 | 2026-10-28 | 530 | 45d | 0d |
| 532 | 2.3.1.23.3 | 9A Riverhead IFC |  | 2w | 2026-10-29 | 2026-11-11 | 531 | 45d |  |
| 533 | 2.3.1.23.4 | 9A Riverhead As-Built | manual | 1d? | 2026-06-09 | 2026-06-09 |  |  |  |
| 534 | 2.3.1.23.5 | 9A Riverhead As-Built PSEG LI Review | manual | 1d? | 2026-06-09 | 2026-06-09 |  |  |  |

| ID | WBS | Task | Type | Duration | Start | Finish | Predecessors | Total slack | Free slack |
| --- | --- | --- | --- | --- | --- | --- | --- | --- | --- |
| 535 | 2.3.1.24 | **9A1 Riverhead Shelter** |  | 110d? | 2026-06-09 | 2026-11-11 |  | 0d |  |
| 536 | 2.3.1.24.1 | 9A1 Riverhead Shelter IFR |  | 4w | 2026-09-17 | 2026-10-14 | 392FS+14w | 45d | 0d |
| 537 | 2.3.1.24.2 | 9A1 Riverhead Shelter IFR PSEG LI Review |  | 2w | 2026-10-15 | 2026-10-28 | 536 | 45d | 0d |
| 538 | 2.3.1.24.3 | 9A1 Riverhead Shelter IFC |  | 2w | 2026-10-29 | 2026-11-11 | 537 | 45d |  |
| 539 | 2.3.1.24.4 | 9A1 Riverhead Shelter As-Built | manual | 1d? | 2026-06-09 | 2026-06-09 |  |  |  |
| 540 | 2.3.1.24.5 | 9A1 Riverhead Shelter As-Built PSEG LI Review | manual | 1d? | 2026-06-09 | 2026-06-09 |  |  |  |
| 541 | 2.3.1.25 | **9C Canal** |  | 120d? | 2026-06-09 | 2026-12-02 |  | 0d |  |
| 542 | 2.3.1.25.1 | 9C Canal IFR |  | 4w | 2026-10-01 | 2026-10-28 | 392FS+16w | 35d | 0d |
| 543 | 2.3.1.25.2 | 9C Canal IFR PSEG LI Review |  | 2w | 2026-10-29 | 2026-11-11 | 542 | 35d | 0d |
| 544 | 2.3.1.25.3 | 9C Canal IFC |  | 2w | 2026-11-12 | 2026-12-02 | 543 | 35d |  |
| 545 | 2.3.1.25.4 | 9C Canal As-Built | manual | 1d? | 2026-06-09 | 2026-06-09 |  |  |  |
| 546 | 2.3.1.25.5 | 9C Canal As-Built PSEG LI Review | manual | 1d? | 2026-06-09 | 2026-06-09 |  |  |  |
| 547 | 2.3.1.26 | **9C1 Canal Shelter** |  | 120d? | 2026-06-09 | 2026-12-02 |  | 0d |  |
| 548 | 2.3.1.26.1 | 9C1 Canal Shelter IFR |  | 4w | 2026-10-01 | 2026-10-28 | 392FS+16w | 35d | 0d |
| 549 | 2.3.1.26.2 | 9C1 Canal Shelter IFR PSEG LI Review |  | 2w | 2026-10-29 | 2026-11-11 | 548 | 35d | 0d |
| 550 | 2.3.1.26.3 | 9C1 Canal Shelter IFC |  | 2w | 2026-11-12 | 2026-12-02 | 549 | 35d |  |
| 551 | 2.3.1.26.4 | 9C1 Canal Shelter As-Built | manual | 1d? | 2026-06-09 | 2026-06-09 |  |  |  |
| 552 | 2.3.1.26.5 | 9C1 Canal Shelter As-Built PSEG LI Review | manual | 1d? | 2026-06-09 | 2026-06-09 |  |  |  |
| 553 | 2.3.1.27 | **9DF Deer Field** |  | 120d? | 2026-06-09 | 2026-12-02 |  | 0d |  |
| 554 | 2.3.1.27.1 | 9DF Deer Field IFR |  | 4w | 2026-10-01 | 2026-10-28 | 392FS+16w | 35d | 0d |
| 555 | 2.3.1.27.2 | 9DF Deer Field IFR PSEG LI Review |  | 2w | 2026-10-29 | 2026-11-11 | 554 | 35d | 0d |
| 556 | 2.3.1.27.3 | 9DF Deer Field IFC |  | 2w | 2026-11-12 | 2026-12-02 | 555 | 35d |  |
| 557 | 2.3.1.27.4 | 9DF Deer Field As-Built | manual | 1d? | 2026-06-09 | 2026-06-09 |  |  |  |
| 558 | 2.3.1.27.5 | 9DF Deer Field As-Built PSEG LI Review | manual | 1d? | 2026-06-09 | 2026-06-09 |  |  |  |

| ID | WBS | Task | Type | Duration | Start | Finish | Predecessors | Total slack | Free slack |
| --- | --- | --- | --- | --- | --- | --- | --- | --- | --- |
| 559 | 2.3.1.28 | **D.O. Riverhead Headquarters** |  | 125d? | 2026-06-09 | 2026-12-09 |  | 0d |  |
| 560 | 2.3.1.28.1 | D.O. Riverhead Headquarters IFR |  | 4w | 2026-10-08 | 2026-11-04 | 392FS+17w | 30d | 0d |
| 561 | 2.3.1.28.2 | D.O. Riverhead Headquarters IFR PSEG LI Review |  | 2w | 2026-11-05 | 2026-11-18 | 560 | 30d | 0d |
| 562 | 2.3.1.28.3 | D.O. Riverhead Headquarters IFC |  | 2w | 2026-11-19 | 2026-12-09 | 561 | 30d |  |
| 563 | 2.3.1.28.4 | D.O. Riverhead Headquarters As-Built | manual | 1d? | 2026-06-09 | 2026-06-09 |  |  |  |
| 564 | 2.3.1.28.5 | D.O. Riverhead Headquarters As-Built PSEG LI Review | manual | 1d? | 2026-06-09 | 2026-06-09 |  |  |  |
| 565 | 2.3.1.28.6 | **Construction, Installation, and Acceptance** |  | 10d | 2026-06-09 | 2026-06-22 |  | 145d |  |
| 566 | 2.3.1.28.6.1 | Staging and Testing |  | 2w | 2026-06-09 | 2026-06-22 |  | 145d |  |
| 567 | 2.3.1.28.6.2 | **Construction, Installation, Site Acceptance - Construction Vendor** |  | 5d | 2026-06-09 | 2026-06-15 |  | 150d |  |
| 568 | 2.3.1.28.6.2.1 | Week # 1 Site Survey - 36 sites |  | 5d | 2026-06-09 | 2026-06-15 |  | 150d |  |
| 569 | 2.3.1.28.6.2.2 | **Implement Materials& Power** |  | 5d | 2026-06-09 | 2026-06-15 |  | 150d |  |
| 570 | 2.3.1.28.6.2.2.1 | **Week # 2** |  | 5d | 2026-06-09 | 2026-06-15 |  | 150d |  |
| 571 | 2.3.1.28.6.2.2.1.1 | 2H Far Rockaway |  | 5d | 2026-06-09 | 2026-06-15 |  | 150d |  |
| 572 | 2.3.1.28.6.2.2.1.2 | 2K Valley Stream |  | 5d | 2026-06-09 | 2026-06-15 |  | 150d |  |
| 573 | 2.3.1.28.6.2.2.1.3 | 2KB Cedarhurst |  | 5d | 2026-06-09 | 2026-06-15 |  | 150d |  |
| 574 | 2.3.1.28.6.2.2.1.4 | 2R Hewlett |  | 5d | 2026-06-09 | 2026-06-15 |  | 150d |  |
| 575 | 2.3.1.28.6.2.2.1.5 | 2R1 Hewlett Shelter |  | 5d | 2026-06-09 | 2026-06-15 |  | 150d |  |
| 576 | 2.3.1.28.6.2.2.1.6 | 2RB Green Acres |  | 5d | 2026-06-09 | 2026-06-15 |  | 150d |  |
| 577 | 2.3.1.28.6.2.2.1.7 | 2WB Barrett Power Plant |  | 5d | 2026-06-09 | 2026-06-15 |  | 150d |  |
| 578 | 2.3.1.28.6.2.2.1.8 | 2ZB Barrett Power Plant (EF Barrett PS) |  | 5d | 2026-06-09 | 2026-06-15 |  | 150d |  |
| 579 | 2.3.1.28.6.2.2.2 | **Week # 3** |  | 5d | 2026-06-09 | 2026-06-15 |  | 150d |  |
| 580 | 2.3.1.28.6.2.2.2.1 | 3J Whiteside |  | 5d | 2026-06-09 | 2026-06-15 |  | 150d |  |
| 581 | 2.3.1.28.6.2.2.2.2 | 4M Baldwin |  | 5d | 2026-06-09 | 2026-06-15 |  | 150d |  |
| 582 | 2.3.1.28.6.2.2.2.3 | 4M1 Baldwin Shelter |  | 5d | 2026-06-09 | 2026-06-15 |  | 150d |  |
| 583 | 2.3.1.28.6.2.2.2.4 | 6H Hauppauge |  | 5d | 2026-06-09 | 2026-06-15 |  | 150d |  |
| 584 | 2.3.1.28.6.2.2.2.5 | 6H1 Hauppauge Tower Shelter |  | 5d | 2026-06-09 | 2026-06-15 |  | 150d |  |
| 585 | 2.3.1.28.6.2.2.2.6 | 6K State School |  | 5d | 2026-06-09 | 2026-06-15 |  | 150d |  |

| ID | WBS | Task | Duration | Start | Finish | Total slack |
| --- | --- | --- | --- | --- | --- | --- |
| 586 | 2.3.1.28.6.2.2.3 | **Week # 4** | 5d | 2026-06-09 | 2026-06-15 | 150d |
| 587 | 2.3.1.28.6.2.2.3.1 | 6S Kings Hwy | 5d | 2026-06-09 | 2026-06-15 | 150d |
| 588 | 2.3.1.28.6.2.2.3.2 | 7BH Bohemia | 5d | 2026-06-09 | 2026-06-15 | 150d |
| 589 | 2.3.1.28.6.2.2.3.3 | 7D West Babylon | 5d | 2026-06-09 | 2026-06-15 | 150d |
| 590 | 2.3.1.28.6.2.2.3.4 | 7D1 West Babylon Shelter | 5d | 2026-06-09 | 2026-06-15 | 150d |
| 591 | 2.3.1.28.6.2.2.3.5 | 7H Babylon | 5d | 2026-06-09 | 2026-06-15 | 150d |
| 592 | 2.3.1.28.6.2.2.3.6 | 7H1 Babylon Shelter | 5d | 2026-06-09 | 2026-06-15 | 150d |
| 593 | 2.3.1.28.6.2.2.4 | **Week # 5** | 5d | 2026-06-09 | 2026-06-15 | 150d |
| 594 | 2.3.1.28.6.2.2.4.1 | 7J Sterling | 5d | 2026-06-09 | 2026-06-15 | 150d |
| 595 | 2.3.1.28.6.2.2.4.2 | 7M MacArthur | 5d | 2026-06-09 | 2026-06-15 | 150d |
| 596 | 2.3.1.28.6.2.2.4.3 | 7R Sayville | 5d | 2026-06-09 | 2026-06-15 | 150d |
| 597 | 2.3.1.28.6.2.2.4.4 | 7RM Bayport | 5d | 2026-06-09 | 2026-06-15 | 150d |
| 598 | 2.3.1.28.6.2.2.4.5 | 7UM South Farmingdale | 5d | 2026-06-09 | 2026-06-15 | 150d |
| 599 | 2.3.1.28.6.2.2.4.6 | 7W Berry St | 5d | 2026-06-09 | 2026-06-15 | 150d |
| 600 | 2.3.1.28.6.2.2.5 | **Week # 6** | 5d | 2026-06-09 | 2026-06-15 | 150d |
| 601 | 2.3.1.28.6.2.2.5.1 | 7XM Great River | 5d | 2026-06-09 | 2026-06-15 | 150d |
| 602 | 2.3.1.28.6.2.2.5.2 | 7XM1 Great River - Shelter | 5d | 2026-06-09 | 2026-06-15 | 150d |
| 603 | 2.3.1.28.6.2.2.5.3 | 7Z Lindenhurst | 5d | 2026-06-09 | 2026-06-15 | 150d |
| 604 | 2.3.1.28.6.2.2.5.4 | 8AX Patchogue | 5d | 2026-06-09 | 2026-06-15 | 150d |
| 605 | 2.3.1.28.6.2.2.5.5 | 8AX1 Patchogue - Shelter | 5d | 2026-06-09 | 2026-06-15 | 150d |
| 606 | 2.3.1.28.6.2.2.5.6 | DO Brentwood DO | 5d | 2026-06-09 | 2026-06-15 | 150d |
| 607 | 2.3.1.28.6.2.2.5.7 | DO Hewlett Headquarters | 5d | 2026-06-09 | 2026-06-15 | 150d |
| 608 | 2.3.1.28.6.2.2.6 | **Week 7** | 3d | 2026-06-09 | 2026-06-11 | 152d |
| 609 | 2.3.1.28.6.2.2.6.1 | 5HK Hicksville - Primary | 3d | 2026-06-09 | 2026-06-11 | 152d |
| 610 | 2.3.1.28.6.2.2.6.2 | 6U Ruland Road | 3d | 2026-06-09 | 2026-06-11 | 152d |
| 611 | 2.3.1.28.6.2.2.6.3 | ACC | 3d | 2026-06-09 | 2026-06-11 | 152d |
| 612 | 2.3.1.28.6.3 | Site Acceptance Testing | 3d | 2026-06-09 | 2026-06-11 | 152d |

| ID | WBS | Task | Duration | Start | Finish | Total slack |
| --- | --- | --- | --- | --- | --- | --- |
| 613 | 2.3.1.28.6.4 | **Cutover** | 3d | 2026-06-09 | 2026-06-11 | 152d |
| 614 | 2.3.1.28.6.4.1 | **Cutover Phase 1 - CWDM** | 1d | 2026-06-09 | 2026-06-09 | 154d |
| 615 | 2.3.1.28.6.4.1.1 | 2H Far Rockaway | 1d | 2026-06-09 | 2026-06-09 | 154d |
| 616 | 2.3.1.28.6.4.1.2 | 2K Valley Stream | 1d | 2026-06-09 | 2026-06-09 | 154d |
| 617 | 2.3.1.28.6.4.1.3 | 2KB Cedarhurst | 1d | 2026-06-09 | 2026-06-09 | 154d |
| 618 | 2.3.1.28.6.4.1.4 | 2R Hewlett | 1d | 2026-06-09 | 2026-06-09 | 154d |
| 619 | 2.3.1.28.6.4.1.5 | 2R1 Hewlett Shelter | 1d | 2026-06-09 | 2026-06-09 | 154d |
| 620 | 2.3.1.28.6.4.1.6 | 2RB Green Acres | 1d | 2026-06-09 | 2026-06-09 | 154d |
| 621 | 2.3.1.28.6.4.1.7 | 2WB Barrett Power Plant | 1d | 2026-06-09 | 2026-06-09 | 154d |
| 622 | 2.3.1.28.6.4.1.8 | 2ZB Barrett Power Plant (EF Barrett PS) | 1d | 2026-06-09 | 2026-06-09 | 154d |
| 623 | 2.3.1.28.6.4.1.9 | 3J Whiteside | 1d | 2026-06-09 | 2026-06-09 | 154d |
| 624 | 2.3.1.28.6.4.1.10 | 4M Baldwin | 1d | 2026-06-09 | 2026-06-09 | 154d |
| 625 | 2.3.1.28.6.4.1.11 | 4M1 Baldwin Shelter | 1d | 2026-06-09 | 2026-06-09 | 154d |
| 626 | 2.3.1.28.6.4.1.12 | 6H Hauppauge | 1d | 2026-06-09 | 2026-06-09 | 154d |
| 627 | 2.3.1.28.6.4.1.13 | 6H1 Hauppauge Tower Shelter | 1d | 2026-06-09 | 2026-06-09 | 154d |
| 628 | 2.3.1.28.6.4.1.14 | 6K State School | 1d | 2026-06-09 | 2026-06-09 | 154d |
| 629 | 2.3.1.28.6.4.1.15 | 6S Kings Hwy | 1d | 2026-06-09 | 2026-06-09 | 154d |
| 630 | 2.3.1.28.6.4.1.16 | 7BH Bohemia | 1d | 2026-06-09 | 2026-06-09 | 154d |
| 631 | 2.3.1.28.6.4.1.17 | 7D West Babylon | 1d | 2026-06-09 | 2026-06-09 | 154d |
| 632 | 2.3.1.28.6.4.1.18 | 7D1 West Babylon Shelter | 1d | 2026-06-09 | 2026-06-09 | 154d |
| 633 | 2.3.1.28.6.4.1.19 | 7H Babylon | 1d | 2026-06-09 | 2026-06-09 | 154d |
| 634 | 2.3.1.28.6.4.1.20 | 7H1 Babylon Shelter | 1d | 2026-06-09 | 2026-06-09 | 154d |
| 635 | 2.3.1.28.6.4.1.21 | 7J Sterling | 1d | 2026-06-09 | 2026-06-09 | 154d |
| 636 | 2.3.1.28.6.4.1.22 | 7M MacArthur | 1d | 2026-06-09 | 2026-06-09 | 154d |
| 637 | 2.3.1.28.6.4.1.23 | 7R Sayville | 1d | 2026-06-09 | 2026-06-09 | 154d |
| 638 | 2.3.1.28.6.4.1.24 | 7RM Bayport | 1d | 2026-06-09 | 2026-06-09 | 154d |
| 639 | 2.3.1.28.6.4.1.25 | 7UM South Farmingdale | 1d | 2026-06-09 | 2026-06-09 | 154d |
| 640 | 2.3.1.28.6.4.1.26 | 7W Berry St | 1d | 2026-06-09 | 2026-06-09 | 154d |
| 641 | 2.3.1.28.6.4.1.27 | 7XM Great River | 1d | 2026-06-09 | 2026-06-09 | 154d |
| 642 | 2.3.1.28.6.4.1.28 | 7XM1 Great River - Shelter | 1d | 2026-06-09 | 2026-06-09 | 154d |
| 643 | 2.3.1.28.6.4.1.29 | 7Z Lindenhurst | 1d | 2026-06-09 | 2026-06-09 | 154d |
| 644 | 2.3.1.28.6.4.1.30 | 8AX Patchogue | 1d | 2026-06-09 | 2026-06-09 | 154d |
| 645 | 2.3.1.28.6.4.1.31 | 8AX1 Patchogue - Shelter | 1d | 2026-06-09 | 2026-06-09 | 154d |
| 646 | 2.3.1.28.6.4.1.32 | DO Brentwood DO | 1d | 2026-06-09 | 2026-06-09 | 154d |
| 647 | 2.3.1.28.6.4.1.33 | DO Hewlett Headquarters | 1d | 2026-06-09 | 2026-06-09 | 154d |
| 648 | 2.3.1.28.6.4.1.34 | 5HK Hicksville - Primary | 1d | 2026-06-09 | 2026-06-09 | 154d |
| 649 | 2.3.1.28.6.4.1.35 | 6U Ruland Road | 1d | 2026-06-09 | 2026-06-09 | 154d |
| 650 | 2.3.1.28.6.4.1.36 | ACC | 1d | 2026-06-09 | 2026-06-09 | 154d |

| ID | WBS | Task | Duration | Start | Finish | Total slack |
| --- | --- | --- | --- | --- | --- | --- |
| 651 | 2.3.1.28.6.4.2 | **Cutover Phase 2 - Security and Radio** | 2d | 2026-06-09 | 2026-06-10 | 153d |
| 652 | 2.3.1.28.6.4.2.1 | 2H Far Rockaway | 1d | 2026-06-09 | 2026-06-09 | 154d |
| 653 | 2.3.1.28.6.4.2.2 | 2K Valley Stream | 1d | 2026-06-09 | 2026-06-09 | 154d |
| 654 | 2.3.1.28.6.4.2.3 | 2KB Cedarhurst | 1d | 2026-06-09 | 2026-06-09 | 154d |
| 655 | 2.3.1.28.6.4.2.4 | 2R Hewlett | 1d | 2026-06-09 | 2026-06-09 | 154d |
| 656 | 2.3.1.28.6.4.2.5 | 2R1 Hewlett Shelter | 1d | 2026-06-09 | 2026-06-09 | 154d |
| 657 | 2.3.1.28.6.4.2.6 | 2RB Green Acres | 1d | 2026-06-09 | 2026-06-09 | 154d |
| 658 | 2.3.1.28.6.4.2.7 | 2WB Barrett Power Plant | 2d | 2026-06-09 | 2026-06-10 | 153d |
| 659 | 2.3.1.28.6.4.2.8 | 2ZB Barrett Power Plant (EF Barrett PS) | 2d | 2026-06-09 | 2026-06-10 | 153d |
| 660 | 2.3.1.28.6.4.2.9 | 3J Whiteside | 1d | 2026-06-09 | 2026-06-09 | 154d |
| 661 | 2.3.1.28.6.4.2.10 | 4M Baldwin | 1d | 2026-06-09 | 2026-06-09 | 154d |
| 662 | 2.3.1.28.6.4.2.11 | 4M1 Baldwin Shelter | 1d | 2026-06-09 | 2026-06-09 | 154d |
| 663 | 2.3.1.28.6.4.2.12 | 6H Hauppauge | 1d | 2026-06-09 | 2026-06-09 | 154d |
| 664 | 2.3.1.28.6.4.2.13 | 6H1 Hauppauge Tower Shelter | 1d | 2026-06-09 | 2026-06-09 | 154d |
| 665 | 2.3.1.28.6.4.2.14 | 6K State School | 1d | 2026-06-09 | 2026-06-09 | 154d |
| 666 | 2.3.1.28.6.4.2.15 | 6S Kings Hwy | 2d | 2026-06-09 | 2026-06-10 | 153d |
| 667 | 2.3.1.28.6.4.2.16 | 7BH Bohemia | 1d | 2026-06-09 | 2026-06-09 | 154d |
| 668 | 2.3.1.28.6.4.2.17 | 7D West Babylon | 2d | 2026-06-09 | 2026-06-10 | 153d |
| 669 | 2.3.1.28.6.4.2.18 | 7D1 West Babylon Shelter | 2d | 2026-06-09 | 2026-06-10 | 153d |
| 670 | 2.3.1.28.6.4.2.19 | 7H Babylon | 1d | 2026-06-09 | 2026-06-09 | 154d |
| 671 | 2.3.1.28.6.4.2.20 | 7H1 Babylon Shelter | 1d | 2026-06-09 | 2026-06-09 | 154d |
| 672 | 2.3.1.28.6.4.2.21 | 7J Sterling | 1d | 2026-06-09 | 2026-06-09 | 154d |
| 673 | 2.3.1.28.6.4.2.22 | 7M MacArthur | 1d | 2026-06-09 | 2026-06-09 | 154d |
| 674 | 2.3.1.28.6.4.2.23 | 7R Sayville | 1d | 2026-06-09 | 2026-06-09 | 154d |
| 675 | 2.3.1.28.6.4.2.24 | 7RM Bayport | 1d | 2026-06-09 | 2026-06-09 | 154d |
| 676 | 2.3.1.28.6.4.2.25 | 7UM South Farmingdale | 1d | 2026-06-09 | 2026-06-09 | 154d |
| 677 | 2.3.1.28.6.4.2.26 | 7W Berry St | 1d | 2026-06-09 | 2026-06-09 | 154d |
| 678 | 2.3.1.28.6.4.2.27 | 7XM Great River | 1d | 2026-06-09 | 2026-06-09 | 154d |
| 679 | 2.3.1.28.6.4.2.28 | 7XM1 Great River - Shelter | 1d | 2026-06-09 | 2026-06-09 | 154d |
| 680 | 2.3.1.28.6.4.2.29 | 7Z Lindenhurst | 1d | 2026-06-09 | 2026-06-09 | 154d |
| 681 | 2.3.1.28.6.4.2.30 | 8AX Patchogue | 1d | 2026-06-09 | 2026-06-09 | 154d |
| 682 | 2.3.1.28.6.4.2.31 | 8AX1 Patchogue - Shelter | 1d | 2026-06-09 | 2026-06-09 | 154d |
| 683 | 2.3.1.28.6.4.2.32 | DO Brentwood DO | 1d | 2026-06-09 | 2026-06-09 | 154d |
| 684 | 2.3.1.28.6.4.2.33 | DO Hewlett Headquarters | 1d | 2026-06-09 | 2026-06-09 | 154d |
| 685 | 2.3.1.28.6.4.2.34 | 5HK Hicksville - Primary | 1d | 2026-06-09 | 2026-06-09 | 154d |
| 686 | 2.3.1.28.6.4.2.35 | 6U Ruland Road | 1d | 2026-06-09 | 2026-06-09 | 154d |
| 687 | 2.3.1.28.6.4.2.36 | ACC | 1d | 2026-06-09 | 2026-06-09 | 154d |

| ID | WBS | Task | Duration | Start | Finish | Total slack |
| --- | --- | --- | --- | --- | --- | --- |
| 688 | 2.3.1.28.6.4.3 | **Cutover Phase 3 - Relay/RTU Cutover** | 3d | 2026-06-09 | 2026-06-11 | 152d |
| 689 | 2.3.1.28.6.4.3.1 | 2H Far Rockaway | 1d | 2026-06-09 | 2026-06-09 | 154d |
| 690 | 2.3.1.28.6.4.3.2 | 2K Valley Stream | 1d | 2026-06-09 | 2026-06-09 | 154d |
| 691 | 2.3.1.28.6.4.3.3 | 2KB Cedarhurst | 1d | 2026-06-09 | 2026-06-09 | 154d |
| 692 | 2.3.1.28.6.4.3.4 | 2R Hewlett | 1d | 2026-06-09 | 2026-06-09 | 154d |
| 693 | 2.3.1.28.6.4.3.5 | 2R1 Hewlett Shelter | 1d | 2026-06-09 | 2026-06-09 | 154d |
| 694 | 2.3.1.28.6.4.3.6 | 2RB Green Acres | 1d | 2026-06-09 | 2026-06-09 | 154d |
| 695 | 2.3.1.28.6.4.3.7 | 2WB Barrett Power Plant | 2d | 2026-06-09 | 2026-06-10 | 153d |
| 696 | 2.3.1.28.6.4.3.8 | 2ZB Barrett Power Plant (EF Barrett PS) | 2d | 2026-06-09 | 2026-06-10 | 153d |
| 697 | 2.3.1.28.6.4.3.9 | 3J Whiteside | 1d | 2026-06-09 | 2026-06-09 | 154d |
| 698 | 2.3.1.28.6.4.3.10 | 4M Baldwin | 1d | 2026-06-09 | 2026-06-09 | 154d |
| 699 | 2.3.1.28.6.4.3.11 | 4M1 Baldwin Shelter | 1d | 2026-06-09 | 2026-06-09 | 154d |
| 700 | 2.3.1.28.6.4.3.12 | 6H Hauppauge | 1d | 2026-06-09 | 2026-06-09 | 154d |
| 701 | 2.3.1.28.6.4.3.13 | 6H1 Hauppauge Tower Shelter | 2d | 2026-06-09 | 2026-06-10 | 153d |
| 702 | 2.3.1.28.6.4.3.14 | 6K State School | 1d | 2026-06-09 | 2026-06-09 | 154d |
| 703 | 2.3.1.28.6.4.3.15 | 6S Kings Hwy | 3d | 2026-06-09 | 2026-06-11 | 152d |
| 704 | 2.3.1.28.6.4.3.16 | 7BH Bohemia | 3d | 2026-06-09 | 2026-06-11 | 152d |
| 705 | 2.3.1.28.6.4.3.17 | 7D West Babylon | 3d | 2026-06-09 | 2026-06-11 | 152d |
| 706 | 2.3.1.28.6.4.3.18 | 7D1 West Babylon Shelter | 3d | 2026-06-09 | 2026-06-11 | 152d |
| 707 | 2.3.1.28.6.4.3.19 | 7H Babylon | 1d | 2026-06-09 | 2026-06-09 | 154d |
| 708 | 2.3.1.28.6.4.3.20 | 7H1 Babylon Shelter | 1d | 2026-06-09 | 2026-06-09 | 154d |
| 709 | 2.3.1.28.6.4.3.21 | 7J Sterling | 1d | 2026-06-09 | 2026-06-09 | 154d |
| 710 | 2.3.1.28.6.4.3.22 | 7M MacArthur | 1d | 2026-06-09 | 2026-06-09 | 154d |
| 711 | 2.3.1.28.6.4.3.23 | 7R Sayville | 1d | 2026-06-09 | 2026-06-09 | 154d |
| 712 | 2.3.1.28.6.4.3.24 | 7RM Bayport | 1d | 2026-06-09 | 2026-06-09 | 154d |
| 713 | 2.3.1.28.6.4.3.25 | 7UM South Farmingdale | 1d | 2026-06-09 | 2026-06-09 | 154d |
| 714 | 2.3.1.28.6.4.3.26 | 7W Berry St | 1d | 2026-06-09 | 2026-06-09 | 154d |
| 715 | 2.3.1.28.6.4.3.27 | 7XM Great River | 1d | 2026-06-09 | 2026-06-09 | 154d |
| 716 | 2.3.1.28.6.4.3.28 | 7XM1 Great River - Shelter | 1d | 2026-06-09 | 2026-06-09 | 154d |
| 717 | 2.3.1.28.6.4.3.29 | 7Z Lindenhurst | 1d | 2026-06-09 | 2026-06-09 | 154d |
| 718 | 2.3.1.28.6.4.3.30 | 8AX Patchogue | 1d | 2026-06-09 | 2026-06-09 | 154d |
| 719 | 2.3.1.28.6.4.3.31 | 8AX1 Patchogue - Shelter | 1d | 2026-06-09 | 2026-06-09 | 154d |
| 720 | 2.3.1.28.6.4.3.32 | DO Brentwood DO | 1d | 2026-06-09 | 2026-06-09 | 154d |
| 721 | 2.3.1.28.6.4.3.33 | DO Hewlett Headquarters | 1d | 2026-06-09 | 2026-06-09 | 154d |
| 722 | 2.3.1.28.6.4.3.34 | 5HK Hicksville - Primary | 1d | 2026-06-09 | 2026-06-09 | 154d |
| 723 | 2.3.1.28.6.4.3.35 | 6U Ruland Road | 1d | 2026-06-09 | 2026-06-09 | 154d |
| 724 | 2.3.1.28.6.4.3.36 | ACC | 1d | 2026-06-09 | 2026-06-09 | 154d |
