# PSEGLI JMUX Replacement Engineering Phase 1 Schedule_20250210v2

Schedule from MS Project, 2024-10-31 to 2026-06-25, A marks actual dates.

## Calendars

- Standard: Mon-Fri 08:00-12:00, 13:00-17:00; Sat-Sun off. Exceptions (off unless hours are given): 2025-01-01 (New Years), 2025-05-26 (Memorial Day), 2025-07-04 (4th of July), 2025-09-01 (Labor day), 2025-11-24 to 2025-11-28 (Thanksgiving/IT Freeze), 2025-12-18 to 2026-01-05 (IT Freeze), 2026-05-25 (Memorial 2026).

## Resources

| Resource |
| --- |
| BMcD |
| PSEGLI |

## Schedule

| ID | WBS | Task | Type | Duration | Start | Finish | Predecessors | Complete | Remaining | Baseline start | Baseline finish | Baseline duration | Total slack | Constraint | Resources | Work | Actual work |
| --- | --- | --- | --- | --- | --- | --- | --- | --- | --- | --- | --- | --- | --- | --- | --- | --- | --- |
| 1 | 1 | **PSEGLI JMUX Replacement Engineering Phase 1** |  | 408d | 2024-10-31 A | 2026-06-25 |  | 80% | 82.51d | 2024-10-31 | 2026-01-20 | 310d | 0d |  |  | 15360h | 14168h |
| 2 | 1.1 | Purchase Order Received | manual | 1d | 2024-10-31 A | 2024-10-31 A |  | 100% |  | 2024-10-31 | 2024-10-31 | 1d |  |  | BMcD; PSEGLI | 16h | 16h |
| 3 | 1.2 | **Detailed Engineering Site Surveys** |  | 74d | 2024-11-18 A | 2025-02-28 A |  | 100% |  | 2024-11-18 | 2025-02-28 | 74d |  |  |  | 40h | 40h |
| 4 | 1.2.1 | Site Survey Week 1 |  | 1w | 2024-11-18 A | 2024-11-22 A |  | 100% |  | 2024-11-18 | 2024-11-22 | 1w |  | start no earlier than 2024-11-18 | BMcD | 40h | 40h |
| 5 | 1.2.2 | Site Survey Week 2 | manual | 1w | 2025-01-27 A | 2025-01-31 A |  | 100% |  | 2025-01-27 | 2025-01-31 | 1w |  |  |  |  |  |
| 6 | 1.2.3 | Site Survey Week 3 | manual | 1w | 2025-02-24 A | 2025-02-28 A |  | 100% |  | 2025-02-24 | 2025-02-28 | 1w |  |  |  |  |  |
| 7 | 1.3 | **Network Design and Configuration** |  | 167d | 2025-01-06 A | 2025-08-28 |  | 47% | 89.01d | 2025-01-06 | 2025-07-23 | 141d | 195d |  |  | 728h | 340h |
| 8 | 1.3.1 | High Level Design |  | 4w | 2025-01-06 A | 2025-01-31 A |  | 100% |  | 2025-01-06 | 2025-01-31 | 4w |  | start no earlier than 2025-01-06 | BMcD | 160h | 160h |
| 9 | 1.3.2 | PSEGLI High Level Design Review |  | 3w | 2025-02-03 A | 2025-02-21 A | 8 | 100% |  | 2025-02-03 | 2025-02-21 | 3w |  |  | PSEGLI | 120h | 120h |
| 10 | 1.3.3 | BMcD Develops LLD and Incorporates HLD Comments |  | 11.2w | 2025-06-11 A | 2025-08-28 | 9 | 13% | 9.7w | 2025-06-11 | 2025-07-23 | 6w | 195d | finish no earlier than 2025-08-28 | BMcD | 448h | 60h |
| 11 | 1.4 | **Network Test Plan** |  | 31d | 2025-05-12 A | 2025-06-24 A |  | 100% |  | 2025-05-12 | 2025-06-24 | 31d |  |  |  |  |  |
| 12 | 1.4.1 | Network Test Plan |  | 3w | 2025-05-12 A | 2025-06-02 A | 10FS+5w | 100% |  | 2025-05-12 | 2025-06-02 | 3w |  | start no earlier than 2025-01-15 |  |  |  |
| 13 | 1.4.2 | PSEGLI Network Test Plan Review |  | 2w | 2025-06-03 A | 2025-06-16 A | 12 | 100% |  | 2025-06-03 | 2025-06-16 | 2w |  |  |  |  |  |
| 14 | 1.4.3 | BMcD Incorporates Network Test Plan Comments |  | 6d | 2025-06-17 A | 2025-06-24 A | 13 | 100% |  | 2025-06-17 | 2025-06-24 | 6d |  |  |  |  |  |
| 15 | 1.5 | **Equipment Procurement** |  | 130d | 2025-03-17 A | 2025-09-17 |  | 63% | 47.76d | 2025-03-17 | 2025-08-04 | 99d | 182d |  |  |  |  |
| 16 | 1.5.1 | **Corning CWDM** |  | 99d | 2025-03-17 A | 2025-08-04 |  | 65% | 34.74d | 2025-03-17 | 2025-08-04 | 99d | 213d |  |  |  |  |
| 17 | 1.5.1.1 | Initiate and Finalize Quote |  | 44d | 2025-03-17 A | 2025-05-15 A |  | 100% |  | 2025-03-17 | 2025-05-15 | 44d |  | finish no earlier than 2025-05-15 |  |  |  |
| 18 | 1.5.1.2 | RITM Request to Procurement |  | 10d | 2025-05-16 A | 2025-05-30 A | 17 | 100% |  | 2025-05-16 | 2025-05-30 | 10d |  |  |  |  |  |
| 19 | 1.5.1.3 | Security Reviews (SIVR) |  | 18d | 2025-05-16 A | 2025-06-11 A | 17 | 100% |  | 2025-05-16 | 2025-06-11 | 18d |  |  |  |  |  |
| 20 | 1.5.1.4 | Issue Purchase Order (Needed) |  | 2d | 2025-06-09 A | 2025-06-10 A |  | 100% |  | 2025-06-09 | 2025-06-09 | 1d |  | start no earlier than 2025-06-09 |  |  |  |
| 21 | 1.5.1.5 | Lead Time |  | 8w | 2025-06-09 | 2025-08-04 |  |  |  | 2025-06-09 | 2025-08-04 | 8w | 194d | finish no earlier than 2025-08-04 |  |  |  |
| 22 | 1.5.2 | **ELTEK** |  | 99d | 2025-03-17 A | 2025-08-04 |  | 66% | 33.22d | 2025-03-17 | 2025-08-04 | 99d | 213d |  |  |  |  |
| 23 | 1.5.2.1 | Initiate and Finalize Quote |  | 23d | 2025-03-17 A | 2025-04-16 A |  | 100% |  | 2025-03-17 | 2025-04-16 | 23d |  | finish no earlier than 2025-04-16 |  |  |  |
| 24 | 1.5.2.2 | RITM Request to Procurement |  | 44d | 2025-04-17 A | 2025-06-18 A | 23 | 100% |  | 2025-04-17 | 2025-06-18 | 44d |  | finish no earlier than 2025-06-18 |  |  |  |
| 25 | 1.5.2.3 | Issue Purchase Order (Needed) | manual | 12d | 2025-05-23 A | 2025-06-10 A |  | 100% |  | 2025-05-23 | 2025-05-23 | 1d |  |  |  |  |  |
| 26 | 1.5.2.4 | Security Reviews (SIVR) |  | 20d | 2025-04-17 A | 2025-05-14 A | 23 | 100% |  | 2025-04-17 | 2025-05-14 | 20d |  | finish no earlier than 2025-05-14 |  |  |  |
| 27 | 1.5.2.5 | Lead Time |  | 10w | 2025-05-23 | 2025-08-04 |  |  |  | 2025-05-23 | 2025-08-04 | 10w | 194d | finish no earlier than 2025-08-04 |  |  |  |

| ID | WBS | Task | Type | Duration | Start | Finish | Predecessors | Complete | Remaining | Baseline start | Baseline finish | Baseline duration | Total slack | Constraint | Resources | Work | Actual work |
| --- | --- | --- | --- | --- | --- | --- | --- | --- | --- | --- | --- | --- | --- | --- | --- | --- | --- |
| 28 | 1.5.3 | **AdTran** |  | 90d | 2025-03-28 A | 2025-08-04 |  | 67% | 30d | 2025-03-28 | 2025-08-04 | 90d | 213d |  |  |  |  |
| 29 | 1.5.3.1 | Initiate and Finalize Quote |  | 15d | 2025-03-28 A | 2025-04-17 A |  | 100% |  | 2025-03-28 | 2025-04-17 | 15d |  | finish no earlier than 2025-04-17 |  |  |  |
| 30 | 1.5.3.2 | RITM Request to Procurement |  | 20d | 2025-04-18 A | 2025-05-15 A |  | 100% |  | 2025-04-18 | 2025-05-15 | 20d |  | finish no earlier than 2025-05-15 |  |  |  |
| 31 | 1.5.3.3 | Security Reviews (SIVR) |  | 25d | 2025-04-18 A | 2025-05-22 A |  | 100% |  | 2025-04-18 | 2025-05-22 | 25d |  | finish no earlier than 2025-05-22 |  |  |  |
| 32 | 1.5.3.4 | Issue Purchase Order (Needed) | milestone, manual | 0d | 2025-06-12 A | 2025-06-12 A |  | 100% |  | 2025-06-23 | 2025-06-23 | 1d |  |  |  |  |  |
| 33 | 1.5.3.5 | Lead Time |  | 30d | 2025-06-23 | 2025-08-04 |  |  |  | 2025-06-23 | 2025-08-04 | 30d | 194d | finish no earlier than 2025-08-04 |  |  |  |
| 34 | 1.5.4 | **Nokia** |  | 101d | 2025-04-25 A | 2025-09-17 |  | 56% | 44.23d | 2025-04-25 | 2025-08-04 | 70d | 182d |  |  |  |  |
| 35 | 1.5.4.1 | Initiate and Finalize Quote |  | 7d | 2025-04-30 A | 2025-05-08 A |  | 100% |  | 2025-04-30 | 2025-05-08 | 7d |  | finish no earlier than 2025-05-08 |  |  |  |
| 36 | 1.5.4.2 | RITM Request to Procurement |  | 3d | 2025-05-09 A | 2025-05-13 A |  | 100% |  | 2025-05-09 | 2025-05-13 | 3d |  | finish no earlier than 2025-05-13 |  |  |  |
| 37 | 1.5.4.3 | Security Reviews (SIVR) |  | 26d | 2025-05-16 A | 2025-06-23 A |  | 100% |  | 2025-05-16 | 2025-06-09 | 16d |  | finish no earlier than 2025-06-09 |  |  |  |
| 38 | 1.5.4.4 | Issue Purchase Order (Needed) | manual | 41d | 2025-04-25 A | 2025-06-23 A |  | 100% |  | 2025-04-25 | 2025-04-25 | 1d |  |  |  |  |  |
| 39 | 1.5.4.5 | Lead Time |  | 12w | 2025-06-24 | 2025-09-17 | 38 |  |  | 2025-04-25 | 2025-08-04 | 14w | 163d | finish no earlier than 2025-08-04 |  |  |  |
| 40 | 1.6 | **Procurement and Construction Bids** |  | 85d | 2025-01-13 A | 2025-05-09 A |  | 100% |  | 2025-01-13 | 2025-05-09 | 85d |  |  |  | 440h | 440h |
| 41 | 1.6.1 | Bid Package Creation |  | 7w | 2025-01-13 A | 2025-02-28 A |  | 100% |  | 2025-01-13 | 2025-02-28 | 7w |  | start no earlier than 2025-01-13 | BMcD | 280h | 280h |
| 42 | 1.6.2 | Issue for Bid - 3 Suppliers |  | 2w | 2025-03-03 A | 2025-03-14 A | 41 | 100% |  | 2025-03-03 | 2025-03-14 | 2w |  |  | BMcD | 80h | 80h |
| 43 | 1.6.3 | Bid Tabs Submitted to PSEGLI |  | 2w | 2025-04-14 A | 2025-04-25 A | 42 | 100% |  | 2025-04-14 | 2025-04-25 | 2w |  | finish no earlier than 2025-04-25 | BMcD | 80h | 80h |
| 44 | 1.6.4 | PSEGLI to Review and Select Sub |  | 2w | 2025-04-28 A | 2025-05-09 A | 43 | 100% |  | 2025-04-28 | 2025-05-09 | 2w |  |  |  |  |  |
| 45 | 1.7 | **MPLS Network Node Design** |  | 241d | 2024-11-01 A | 2025-10-09 |  | 97% | 6.23d | 2024-11-01 | 2025-08-21 | 207d | 166d |  |  | 14136h | 13332h |
| 46 | 1.7.1 | MPLS Network Node Template Design |  | 2w | 2024-11-01 A | 2024-11-14 A | 2 | 100% |  | 2024-11-01 | 2024-11-14 | 2w |  |  | BMcD | 80h | 80h |
| 47 | 1.7.2 | PSEGLI Standard Template Design Review |  | 1w | 2024-11-15 A | 2024-11-21 A | 46 | 100% |  | 2024-11-15 | 2024-11-21 | 1w |  |  |  |  |  |
| 48 | 1.7.3 | Site Design Start | manual | 1d | 2025-01-13 A | 2025-01-13 A |  | 100% |  | 2025-01-13 | 2025-01-13 | 1d |  |  | PSEGLI | 8h | 8h |
| 49 | 1.7.4 | BMcD to Submit Final Template Design |  | 1w | 2025-01-14 A | 2025-01-20 A | 48 | 100% |  | 2025-01-14 | 2025-01-20 | 1w |  |  |  |  |  |
| 50 | 1.7.5 | **6BR Bagatelle** |  | 102d | 2025-01-14 A | 2025-06-05 A |  | 100% |  | 2025-01-14 | 2025-06-05 | 102d |  |  |  | 792h | 776h |
| 51 | 1.7.5.1 | 6BR Bagatelle IFR |  | 4w | 2025-01-14 A | 2025-02-10 A | 48 | 100% |  | 2025-01-14 | 2025-02-10 | 4w |  |  | BMcD | 160h | 160h |
| 52 | 1.7.5.2 | 6BR Bagatelle IFR PSEG LI Review |  | 2w | 2025-02-18 A | 2025-03-03 A | 51 | 100% |  | 2025-02-18 | 2025-03-03 | 2w |  | finish no earlier than 2025-03-03 | PSEGLI | 80h | 80h |
| 53 | 1.7.5.3 | 6BR Bagatelle IFC |  | 13.4w | 2025-03-04 A | 2025-06-05 A | 52 | 100% |  | 2025-03-04 | 2025-06-05 | 13.4w |  | finish no earlier than 2025-06-05 | BMcD | 536h | 536h |
| 54 | 1.7.5.4 | 6BR Bagatelle As-Built | manual | 1d? | 2025-01-14 | 2025-01-14 |  |  |  | 2025-01-14 | 2025-01-14 | 1d? |  |  | BMcD | 8h |  |
| 55 | 1.7.5.5 | 6BR Bagatelle As-Built PSEG LI Review | manual | 1d? | 2025-01-14 | 2025-01-14 |  |  |  | 2025-01-14 | 2025-01-14 | 1d? |  |  | PSEGLI | 8h |  |

| ID | WBS | Task | Type | Duration | Start | Finish | Predecessors | Complete | Baseline start | Baseline finish | Baseline duration | Constraint | Resources | Work | Actual work |
| --- | --- | --- | --- | --- | --- | --- | --- | --- | --- | --- | --- | --- | --- | --- | --- |
| 56 | 1.7.6 | **6P Pulaski** |  | 117d | 2025-01-14 A | 2025-06-26 A |  | 100% | 2025-01-14 | 2025-06-26 | 117d |  |  | 912h | 896h |
| 57 | 1.7.6.1 | 6P Pulaski IFR |  | 4w | 2025-01-14 A | 2025-02-10 A | 48 | 100% | 2025-01-14 | 2025-02-10 | 4w |  | BMcD | 160h | 160h |
| 58 | 1.7.6.2 | 6P Pulaski IFR PSEG LI Review |  | 2w | 2025-02-18 A | 2025-03-03 A | 57 | 100% | 2025-02-18 | 2025-03-03 | 2w | finish no earlier than 2025-03-03 | PSEGLI | 80h | 80h |
| 59 | 1.7.6.3 | 6P Pulaski IFC |  | 16.4w | 2025-03-04 A | 2025-06-26 A | 58 | 100% | 2025-03-04 | 2025-06-26 | 16.4w | finish no earlier than 2025-06-26 | BMcD | 656h | 656h |
| 60 | 1.7.6.4 | 6P Pulaski As-Built | manual | 1d? | 2025-01-14 | 2025-01-14 |  |  | 2025-01-14 | 2025-01-14 | 1d? |  | BMcD | 8h |  |
| 61 | 1.7.6.5 | 6P Pulaski As-Built PSEG LI Review | manual | 1d? | 2025-01-14 | 2025-01-14 |  |  | 2025-01-14 | 2025-01-14 | 1d? |  | PSEGLI | 8h |  |
| 62 | 1.7.7 | **6P1 Pulaski Radio Shelter** |  | 117d | 2025-01-14 A | 2025-06-26 A |  | 100% | 2025-01-14 | 2025-06-26 | 117d |  |  | 912h | 896h |
| 63 | 1.7.7.1 | 6P1 Pulaski Radio Shelter IFR |  | 4w | 2025-01-14 A | 2025-02-10 A | 48 | 100% | 2025-01-14 | 2025-02-10 | 4w |  | BMcD | 160h | 160h |
| 64 | 1.7.7.2 | 6P1 Pulaski Radio Shelter IFR PSEG LI Review |  | 2w | 2025-02-18 A | 2025-03-03 A | 63 | 100% | 2025-02-18 | 2025-03-03 | 2w | finish no earlier than 2025-03-03 | PSEGLI | 80h | 80h |
| 65 | 1.7.7.3 | 6P1 Pulaski Radio Shelter IFC |  | 16.4w | 2025-03-04 A | 2025-06-26 A | 64 | 100% | 2025-03-04 | 2025-06-26 | 16.4w | finish no earlier than 2025-06-26 | BMcD | 656h | 656h |
| 66 | 1.7.7.4 | 6P1 Pulaski Radio Shelter As-Built | manual | 1d | 2025-01-14 | 2025-01-14 |  |  | 2025-01-14 | 2025-01-14 | 1d |  | BMcD | 8h |  |
| 67 | 1.7.7.5 | 6P1 Pulaski Radio Shelter As-Built PSEG LI Review | manual | 1d | 2025-01-14 | 2025-01-14 |  |  | 2025-01-14 | 2025-01-14 | 1d |  | PSEGLI | 8h |  |
| 68 | 1.7.8 | **MEL Melville** |  | 87d | 2025-02-04 A | 2025-06-05 A |  | 100% | 2025-02-04 | 2025-06-05 | 87d |  |  | 712h | 696h |
| 69 | 1.7.8.1 | MEL Melville IFR |  | 4w | 2025-02-04 A | 2025-03-03 A | 48FS+3w | 100% | 2025-02-04 | 2025-03-03 | 4w |  | BMcD | 160h | 160h |
| 70 | 1.7.8.2 | MEL Melville IFR PSEG LI Review |  | 2w | 2025-03-04 A | 2025-03-17 A | 69 | 100% | 2025-03-04 | 2025-03-17 | 2w |  | PSEGLI | 80h | 80h |
| 71 | 1.7.8.3 | MEL Melville IFC |  | 11.4w | 2025-03-18 A | 2025-06-05 A | 70 | 100% | 2025-03-18 | 2025-06-05 | 11.4w | finish no earlier than 2025-06-05 | BMcD | 456h | 456h |
| 72 | 1.7.8.4 | MEL Melville As-Built | manual | 1d | 2025-02-04 | 2025-02-04 |  |  | 2025-02-04 | 2025-02-04 | 1d |  | BMcD | 8h |  |
| 73 | 1.7.8.5 | MEL Melville As-Built PSEG LI Review | manual | 1d | 2025-02-04 | 2025-02-04 |  |  | 2025-02-04 | 2025-02-04 | 1d |  | PSEGLI | 8h |  |
| 74 | 1.7.9 | **6DL Pilgrim** |  | 98d | 2025-02-10 A | 2025-06-26 A |  | 100% | 2025-02-10 | 2025-06-26 | 98d |  |  | 800h | 784h |
| 75 | 1.7.9.1 | 6DL Pilgrim IFR |  | 4w | 2025-02-10 A | 2025-03-07 A | 48FS+3w | 100% | 2025-02-10 | 2025-03-07 | 4w | finish no earlier than 2025-03-07 | BMcD | 160h | 160h |
| 76 | 1.7.9.2 | 6DL Pilgrim IFR PSEG LI Review |  | 2w | 2025-03-10 A | 2025-03-21 A | 75 | 100% | 2025-03-10 | 2025-03-21 | 2w |  | PSEGLI | 80h | 80h |
| 77 | 1.7.9.3 | 6DL Pilgrim IFC |  | 13.6w | 2025-03-24 A | 2025-06-26 A | 76 | 100% | 2025-03-24 | 2025-06-26 | 13.6w | finish no earlier than 2025-06-26 | BMcD | 544h | 544h |
| 78 | 1.7.9.4 | 6DL Pilgrim As-Built | manual | 1d? | 2025-02-10 | 2025-02-10 |  |  | 2025-02-10 | 2025-02-10 | 1d? |  | BMcD | 8h |  |
| 79 | 1.7.9.5 | 6DL Pilgrim As-Built PSEG LI Review | manual | 1d? | 2025-02-10 | 2025-02-10 |  |  | 2025-02-10 | 2025-02-10 | 1d? |  | PSEGLI | 8h |  |

| ID | WBS | Task | Type | Duration | Start | Finish | Predecessors | Complete | Baseline start | Baseline finish | Baseline duration | Constraint | Resources | Work | Actual work |
| --- | --- | --- | --- | --- | --- | --- | --- | --- | --- | --- | --- | --- | --- | --- | --- |
| 80 | 1.7.10 | **5K Syosset** |  | 82d | 2025-02-18 A | 2025-06-12 A |  | 100% | 2025-02-18 | 2025-06-12 | 82d |  |  | 520h | 504h |
| 81 | 1.7.10.1 | 5K Syosset IFR |  | 4w | 2025-02-18 A | 2025-03-17 A | 48FS+5w | 100% | 2025-02-18 | 2025-03-17 | 4w |  | BMcD | 160h | 160h |
| 82 | 1.7.10.2 | 5K Syosset IFR PSEG LI Review |  | 2w | 2025-03-18 A | 2025-03-31 A | 81 | 100% | 2025-03-18 | 2025-03-31 | 2w |  | PSEGLI | 80h | 80h |
| 83 | 1.7.10.3 | 5K Syosset IFC |  | 6.6w | 2025-04-28 A | 2025-06-12 A | 82 | 100% | 2025-04-28 | 2025-06-12 | 6.6w | finish no earlier than 2025-06-12 | BMcD | 264h | 264h |
| 84 | 1.7.10.4 | 5K Syosset As-Built | manual | 1d | 2025-02-18 | 2025-02-18 |  |  | 2025-02-18 | 2025-02-18 | 1d |  | BMcD | 8h |  |
| 85 | 1.7.10.5 | 5K Syosset As-Built PSEG LI Review | manual | 1d | 2025-02-18 | 2025-02-18 |  |  | 2025-02-18 | 2025-02-18 | 1d |  | PSEGLI | 8h |  |
| 86 | 1.7.11 | **5K1 Syosset Radio Shelter** |  | 82d | 2025-02-18 A | 2025-06-12 A |  | 100% | 2025-02-18 | 2025-06-12 | 82d |  |  | 520h | 504h |
| 87 | 1.7.11.1 | 5K1 Syosset Radio Shelter IFR |  | 4w | 2025-02-18 A | 2025-03-17 A | 48FS+5w | 100% | 2025-02-18 | 2025-03-17 | 4w |  | BMcD | 160h | 160h |
| 88 | 1.7.11.2 | 5K1 Syosset Radio Shelter IFR PSEG LI Review |  | 2w | 2025-03-18 A | 2025-03-31 A | 87 | 100% | 2025-03-18 | 2025-03-31 | 2w |  | PSEGLI | 80h | 80h |
| 89 | 1.7.11.3 | 5K1 Syosset Radio Shelter IFC |  | 6.6w | 2025-04-28 A | 2025-06-12 A | 88 | 100% | 2025-04-28 | 2025-06-12 | 6.6w | finish no earlier than 2025-06-12 | BMcD | 264h | 264h |
| 90 | 1.7.11.4 | 5K1 Syosset Radio Shelter As-Built | manual | 1d | 2025-02-18 | 2025-02-18 |  |  | 2025-02-18 | 2025-02-18 | 1d |  | BMcD | 8h |  |
| 91 | 1.7.11.5 | 5K1 Syosset Radio Shelter As-Built PSEG LI Review | manual | 1d | 2025-02-18 | 2025-02-18 |  |  | 2025-02-18 | 2025-02-18 | 1d |  | PSEGLI | 8h |  |
| 92 | 1.7.12 | **6U Ruland** |  | 77d | 2025-03-04 A | 2025-06-19 A |  | 100% | 2025-03-04 | 2025-06-19 | 77d |  |  | 632h | 616h |
| 93 | 1.7.12.1 | 6U Ruland IFR |  | 11.4w | 2025-03-04 A | 2025-05-21 A | 48FS+7w | 100% | 2025-03-04 | 2025-05-21 | 11.4w | finish no earlier than 2025-05-21 | BMcD | 456h | 456h |
| 94 | 1.7.12.2 | 6U Ruland IFR PSEG LI Review |  | 2w | 2025-05-22 A | 2025-06-05 A | 93 | 100% | 2025-05-22 | 2025-06-05 | 2w |  | PSEGLI | 80h | 80h |
| 95 | 1.7.12.3 | 6U Ruland IFC |  | 2w | 2025-06-06 A | 2025-06-19 A | 94 | 100% | 2025-06-06 | 2025-06-19 | 2w | finish no earlier than 2025-06-19 | BMcD | 80h | 80h |
| 96 | 1.7.12.4 | 6U Ruland As-Built | manual | 1d? | 2025-03-04 | 2025-03-04 |  |  | 2025-03-04 | 2025-03-04 | 1d? |  | BMcD | 8h |  |
| 97 | 1.7.12.5 | 6U Ruland As-Built PSEG LI Review | manual | 1d? | 2025-03-04 | 2025-03-04 |  |  | 2025-03-04 | 2025-03-04 | 1d? |  | PSEGLI | 8h |  |
| 98 | 1.7.13 | **6Fo Northport Outdoor** |  | 86d | 2025-03-18 A | 2025-07-17 A |  | 100% | 2025-03-18 | 2025-07-17 | 86d |  |  | 672h | 656h |
| 99 | 1.7.13.1 | 6Fo Northport Outdoor IFR |  | 12.4w | 2025-03-18 A | 2025-06-12 A | 48FS+9w | 100% | 2025-03-18 | 2025-06-12 | 12.4w | finish no earlier than 2025-06-12 | BMcD | 496h | 496h |
| 100 | 1.7.13.2 | 6Fo Northport Outdoor IFR PSEG LI Review |  | 2w | 2025-06-13 A | 2025-06-26 A | 99 | 100% | 2025-06-13 | 2025-06-26 | 2w |  | PSEGLI | 80h | 80h |
| 101 | 1.7.13.3 | 6Fo Northport Outdoor IFC |  | 2w | 2025-07-03 A | 2025-07-17 A | 100 | 100% | 2025-07-03 | 2025-07-17 | 2w | finish no earlier than 2025-07-17 | BMcD | 80h | 80h |
| 102 | 1.7.13.4 | 6Fo Northport Outdoor As-Built | manual | 1d | 2025-03-18 | 2025-03-18 |  |  | 2025-03-18 | 2025-03-18 | 1d |  | BMcD | 8h |  |
| 103 | 1.7.13.5 | 6Fo Northport Outdoor As-Built PSEG LI Review | manual | 1d | 2025-03-18 | 2025-03-18 |  |  | 2025-03-18 | 2025-03-18 | 1d |  | PSEGLI | 8h |  |

| ID | WBS | Task | Type | Duration | Start | Finish | Predecessors | Complete | Baseline start | Baseline finish | Baseline duration | Constraint | Resources | Work | Actual work |
| --- | --- | --- | --- | --- | --- | --- | --- | --- | --- | --- | --- | --- | --- | --- | --- |
| 104 | 1.7.14 | **6Fi Northport Indoor** |  | 81d | 2025-03-25 A | 2025-07-17 A |  | 100% | 2025-03-25 | 2025-07-17 | 81d |  |  | 632h | 616h |
| 105 | 1.7.14.1 | 6Fi Northport Indoor IFR |  | 11.4w | 2025-03-25 A | 2025-06-12 A | 48FS+10w | 100% | 2025-03-25 | 2025-06-12 | 11.4w | finish no earlier than 2025-06-12 | BMcD | 456h | 456h |
| 106 | 1.7.14.2 | 6Fi Northport Indoor IFR PSEG LI Review |  | 2w | 2025-06-13 A | 2025-06-26 A | 105 | 100% | 2025-06-13 | 2025-06-26 | 2w |  | PSEGLI | 80h | 80h |
| 107 | 1.7.14.3 | 6Fi Northport Indoor IFC |  | 2w | 2025-07-03 A | 2025-07-17 A | 106 | 100% | 2025-07-03 | 2025-07-17 | 2w | finish no earlier than 2025-07-17 | BMcD | 80h | 80h |
| 108 | 1.7.14.4 | 6Fi Northport Indoor As-Built | manual | 1d | 2025-03-25 | 2025-03-25 |  |  | 2025-03-25 | 2025-03-25 | 1d |  | BMcD | 8h |  |
| 109 | 1.7.14.5 | 6Fi Northport Indoor As-Built PSEG LI Review | manual | 1d | 2025-03-25 | 2025-03-25 |  |  | 2025-03-25 | 2025-03-25 | 1d |  | PSEGLI | 8h |  |
| 110 | 1.7.15 | **6RL Elwood** |  | 40d | 2025-04-24 A | 2025-06-19 A |  | 100% | 2025-04-24 | 2025-06-19 | 40d |  |  | 336h | 320h |
| 111 | 1.7.15.1 | 6RL Elwood IFR |  | 4w | 2025-04-24 A | 2025-05-21 A | 105SS | 100% | 2025-04-24 | 2025-05-21 | 4w | finish no earlier than 2025-05-21 | BMcD | 160h | 160h |
| 112 | 1.7.15.2 | 6RL Elwood IFR PSEG LI Review |  | 2w | 2025-05-22 A | 2025-06-05 A | 111 | 100% | 2025-05-22 | 2025-06-05 | 2w |  | PSEGLI | 80h | 80h |
| 113 | 1.7.15.3 | 6RL Elwood IFC |  | 2w | 2025-06-06 A | 2025-06-19 A | 112 | 100% | 2025-06-06 | 2025-06-19 | 2w |  | BMcD | 80h | 80h |
| 114 | 1.7.15.4 | 6RL Elwood As-Built | manual | 1d? | 2025-04-24 | 2025-04-24 |  |  | 2025-04-24 | 2025-04-24 | 1d? |  | BMcD | 8h |  |
| 115 | 1.7.15.5 | 6RL Elwood As-Built PSEG LI Review | manual | 1d? | 2025-04-24 | 2025-04-24 |  |  | 2025-04-24 | 2025-04-24 | 1d? |  | PSEGLI | 8h |  |
| 116 | 1.7.16 | **6UL Greenlawn** |  | 56d | 2025-04-22 A | 2025-07-10 A |  | 100% | 2025-04-22 | 2025-07-10 | 56d |  |  | 336h | 320h |
| 117 | 1.7.16.1 | 6UL Greenlawn IFR |  | 4w | 2025-04-22 A | 2025-05-19 A | 105SS+1w | 100% | 2025-04-22 | 2025-05-19 | 4w | finish no earlier than 2025-05-19 | BMcD | 160h | 160h |
| 118 | 1.7.16.2 | 6UL Greenlawn IFR PSEG LI Review |  | 2w | 2025-05-20 A | 2025-06-03 A | 117 | 100% | 2025-05-20 | 2025-06-03 | 2w |  | PSEGLI | 80h | 80h |
| 119 | 1.7.16.3 | 6UL Greenlawn IFC |  | 2w | 2025-06-26 A | 2025-07-10 A | 118 | 100% | 2025-06-26 | 2025-07-10 | 2w | finish no earlier than 2025-07-10 | BMcD | 80h | 80h |
| 120 | 1.7.16.4 | 6UL Greenlawn As-Built | manual | 1d? | 2025-04-22 | 2025-04-22 |  |  | 2025-04-22 | 2025-04-22 | 1d? |  | BMcD | 8h |  |
| 121 | 1.7.16.5 | 6UL Greenlawn As-Built PSEG LI Review | manual | 1d? | 2025-04-22 | 2025-04-22 |  |  | 2025-04-22 | 2025-04-22 | 1d? |  | PSEGLI | 8h |  |
| 122 | 1.7.17 | **6UL1 Greenlawn Radio Shelter** |  | 56d | 2025-04-22 A | 2025-07-10 A |  | 100% | 2025-04-22 | 2025-07-10 | 56d |  |  | 336h | 320h |
| 123 | 1.7.17.1 | 6UL1 Greenlawn Radio Shelter IFR |  | 4w | 2025-04-22 A | 2025-05-19 A | 105SS+1w | 100% | 2025-04-22 | 2025-05-19 | 4w | finish no earlier than 2025-05-19 | BMcD | 160h | 160h |
| 124 | 1.7.17.2 | 6UL1 Greenlawn Radio Shelter IFR PSEG LI Review |  | 2w | 2025-05-20 A | 2025-06-03 A | 123 | 100% | 2025-05-20 | 2025-06-03 | 2w |  | PSEGLI | 80h | 80h |
| 125 | 1.7.17.3 | 6UL1 Greenlawn Radio Shelter IFC |  | 2w | 2025-06-26 A | 2025-07-10 A | 124 | 100% | 2025-06-26 | 2025-07-10 | 2w | finish no earlier than 2025-07-10 | BMcD | 80h | 80h |
| 126 | 1.7.17.4 | 6UL1 Greenlawn Radio Shelter As-Built | manual | 1d? | 2025-04-22 | 2025-04-22 |  |  | 2025-04-22 | 2025-04-22 | 1d? |  | BMcD | 8h |  |
| 127 | 1.7.17.5 | 6UL1 Greenlawn Radio Shelter As-Built PSEG LI Review | manual | 1d? | 2025-04-22 | 2025-04-22 |  |  | 2025-04-22 | 2025-04-22 | 1d? |  | PSEGLI | 8h |  |

| ID | WBS | Task | Type | Duration | Start | Finish | Predecessors | Complete | Baseline start | Baseline finish | Baseline duration | Constraint | Resources | Work | Actual work |
| --- | --- | --- | --- | --- | --- | --- | --- | --- | --- | --- | --- | --- | --- | --- | --- |
| 128 | 1.7.18 | **6Q Oakwood** |  | 45d | 2025-06-12 A | 2025-08-14 A |  | 100% | 2025-06-12 | 2025-08-07 | 40d |  |  | 376h | 360h |
| 129 | 1.7.18.1 | 6Q Oakwood IFR |  | 6w | 2025-06-12 A | 2025-07-24 A | 105SS+1w | 100% | 2025-06-12 | 2025-07-10 | 4w | finish no earlier than 2025-07-10 | BMcD | 240h | 240h |
| 130 | 1.7.18.2 | 6Q Oakwood IFR PSEG LI Review |  | 2w | 2025-07-25 A | 2025-08-07 A | 129 | 100% | 2025-07-11 | 2025-07-24 | 2w |  | PSEGLI | 80h | 80h |
| 131 | 1.7.18.3 | 6Q Oakwood IFC |  | 1w | 2025-08-08 A | 2025-08-14 A | 130 | 100% | 2025-07-25 | 2025-08-07 | 2w |  | BMcD | 40h | 40h |
| 132 | 1.7.18.4 | 6Q Oakwood As-Built | manual | 1d? | 2025-06-12 | 2025-06-12 |  |  | 2025-06-12 | 2025-06-12 | 1d? |  | BMcD | 8h |  |
| 133 | 1.7.18.5 | 6Q Oakwood As-Built PSEG LI Review | manual | 1d? | 2025-06-12 | 2025-06-12 |  |  | 2025-06-12 | 2025-06-12 | 1d? |  | PSEGLI | 8h |  |
| 134 | 1.7.19 | **5M Newbridge** |  | 59d | 2025-06-26 A | 2025-09-18 A |  | 100% | 2025-06-26 | 2025-08-21 | 40d |  |  | 488h | 472h |
| 135 | 1.7.19.1 | 5M Newbridge IFR |  | 9.8w | 2025-06-26 A | 2025-09-04 A | 105SS+2w | 100% | 2025-06-26 | 2025-07-24 | 4w | finish no earlier than 2025-09-04 | BMcD | 392h | 392h |
| 136 | 1.7.19.2 | 5M Newbridge IFR PSEG LI Review |  | 1w | 2025-09-05 A | 2025-09-11 A | 135 | 100% | 2025-07-25 | 2025-08-07 | 2w | finish no earlier than 2025-05-19 | PSEGLI | 40h | 40h |
| 137 | 1.7.19.3 | 5M Newbridge IFC |  | 1w | 2025-09-12 A | 2025-09-18 A | 136 | 100% | 2025-08-08 | 2025-08-21 | 2w | finish no earlier than 2025-07-24 | BMcD | 40h | 40h |
| 138 | 1.7.19.4 | 5M Newbridge As-Built | manual | 1d? | 2025-06-26 | 2025-06-26 |  |  | 2025-06-26 | 2025-06-26 | 1d? |  | BMcD | 8h |  |
| 139 | 1.7.19.5 | 5M Newbridge As-Built PSEG LI Review | manual | 1d? | 2025-06-26 | 2025-06-26 |  |  | 2025-06-26 | 2025-06-26 | 1d? |  | PSEGLI | 8h |  |
| 140 | 1.7.20 | **4XH Glenwood** |  | 24d | 2025-06-13 A | 2025-07-17 A |  | 100% | 2025-06-13 | 2025-08-08 | 40d |  |  | 176h | 160h |
| 141 | 1.7.20.1 | 4XH Glenwood Ave IFR |  | 3.8w | 2025-06-13 A | 2025-07-10 A | 105SS+2w | 100% | 2025-06-13 | 2025-07-11 | 4w | start no earlier than 2025-06-13 | BMcD | 152h | 152h |
| 142 | 1.7.20.2 | 4XH Glenwood IFR PSEG LI Review |  | 0.2w | 2025-07-14 A | 2025-07-14 A | 141 | 100% | 2025-07-14 | 2025-07-25 | 2w |  | PSEGLI | 8h | 8h |
| 143 | 1.7.20.3 | 4XH Glenwood Brooklyn Ave IFC | milestone | 0d | 2025-07-17 A | 2025-07-17 A | 142 | 100% | 2025-07-28 | 2025-08-08 | 2w | finish no earlier than 2025-07-31 | BMcD |  |  |
| 144 | 1.7.20.4 | 4XH Glenwood Brooklyn Ave As-Built | manual | 1d? | 2025-06-13 | 2025-06-13 |  |  | 2025-06-13 | 2025-06-13 | 1d? |  | BMcD | 8h |  |
| 145 | 1.7.20.5 | 4XH Glenwood As-Built PSEG LI Review | manual | 1d? | 2025-06-13 | 2025-06-13 |  |  | 2025-06-13 | 2025-06-13 | 1d? |  | PSEGLI | 8h |  |
| 146 | 1.7.21 | **5HK Hicksville Primary Room** |  | 64d | 2025-06-19 A | 2025-09-18 A |  | 100% | 2025-06-19 | 2025-08-14 | 40d |  |  | 528h | 512h |
| 147 | 1.7.21.1 | 5HK Hicksville Primary Room IFR |  | 10.8w | 2025-06-19 A | 2025-09-04 A | 105SS+3w | 100% | 2025-06-19 | 2025-07-17 | 4w | finish no earlier than 2025-09-04 | BMcD | 432h | 432h |
| 148 | 1.7.21.2 | 5HK Hicksville Primary Room IFR PSEG LI Review |  | 1w | 2025-09-05 A | 2025-09-11 A | 147 | 100% | 2025-07-18 | 2025-07-31 | 2w |  | PSEGLI | 40h | 40h |
| 149 | 1.7.21.3 | 5HK Hicksville Primary Room IFC |  | 1w | 2025-09-12 A | 2025-09-18 A | 148 | 100% | 2025-08-01 | 2025-08-14 | 2w |  | BMcD | 40h | 40h |
| 150 | 1.7.21.4 | 5HK Hicksville Primary Room As-Built | manual | 1d? | 2025-06-19 | 2025-06-19 |  |  | 2025-06-19 | 2025-06-19 | 1d? |  | BMcD | 8h |  |
| 151 | 1.7.21.5 | 5HK Hicksville Primary Room As-Built PSEG LI Review | manual | 1d? | 2025-06-19 | 2025-06-19 |  |  | 2025-06-19 | 2025-06-19 | 1d? |  | PSEGLI | 8h |  |

| ID | WBS | Task | Type | Duration | Start | Finish | Predecessors | Complete | Remaining | Baseline start | Baseline finish | Baseline duration | Total slack | Free slack | Constraint | Resources | Work | Actual work |
| --- | --- | --- | --- | --- | --- | --- | --- | --- | --- | --- | --- | --- | --- | --- | --- | --- | --- | --- |
| 152 | 1.7.22 | **5HK Hicksville Secondary Room** |  | 110d | 2025-04-15 A | 2025-09-18 A |  | 100% |  | 2025-04-15 | 2025-08-14 | 86d |  |  |  |  | 896h | 880h |
| 153 | 1.7.22.1 | 5HK Hicksville Secondary Room IFR |  | 20w | 2025-04-15 A | 2025-09-04 A | 105SS+3w | 100% |  | 2025-04-15 | 2025-07-17 | 13.2w |  |  | finish no earlier than 2025-09-04 | BMcD | 800h | 800h |
| 154 | 1.7.22.2 | 5HK Hicksville Secondary Room IFR PSEG LI Review |  | 1w | 2025-09-05 A | 2025-09-11 A | 153 | 100% |  | 2025-07-18 | 2025-07-31 | 2w |  |  |  | PSEGLI | 40h | 40h |
| 155 | 1.7.22.3 | 5HK Hicksville Secondary Room IFC |  | 1w | 2025-09-12 A | 2025-09-18 A | 154 | 100% |  | 2025-08-01 | 2025-08-14 | 2w |  |  |  | BMcD | 40h | 40h |
| 156 | 1.7.22.4 | 5HK Hicksville Secondary Room As-Built | manual | 1d? | 2025-04-15 | 2025-04-15 |  |  |  | 2025-04-15 | 2025-04-15 | 1d? |  |  |  | BMcD | 8h |  |
| 157 | 1.7.22.5 | 5HK Hicksville Secondary Room As-Built PSEG LI Review | manual | 1d? | 2025-04-15 | 2025-04-15 |  |  |  | 2025-04-15 | 2025-04-15 | 1d? |  |  |  | PSEGLI | 8h |  |
| 158 | 1.7.23 | **ACC** |  | 79d | 2025-06-19 A | 2025-10-09 |  | 44% | 44.5d | 2025-06-19 | 2025-08-14 | 40d | 166d |  |  |  | 648h | 276h |
| 159 | 1.7.23.1 | ACC IFR |  | 13.8w | 2025-06-19 A | 2025-09-25 | 105SS+4w | 50% | 6.9w | 2025-06-19 | 2025-07-17 | 4w | 166d | 0d | finish no earlier than 2025-09-25 | BMcD | 552h | 276h |
| 160 | 1.7.23.2 | ACC IFR PSEG LI Review |  | 1w | 2025-09-26 | 2025-10-02 | 159 |  |  | 2025-07-18 | 2025-07-31 | 2w | 147d | 0d |  | PSEGLI | 40h |  |
| 161 | 1.7.23.3 | ACC IFC |  | 1w | 2025-10-03 | 2025-10-09 | 160 |  |  | 2025-08-01 | 2025-08-14 | 2w | 147d |  |  | BMcD | 40h |  |
| 162 | 1.7.23.4 | ACC As-Built | manual | 1d? | 2025-06-19 | 2025-06-19 |  |  |  | 2025-06-19 | 2025-06-19 | 1d? |  |  |  | BMcD | 8h |  |
| 163 | 1.7.23.5 | ACC As-Built PSEG LI Review | manual | 1d? | 2025-06-19 | 2025-06-19 |  |  |  | 2025-06-19 | 2025-06-19 | 1d? |  |  |  | PSEGLI | 8h |  |
| 164 | 1.7.24 | **4G Shore Road** |  | 25d | 2025-06-12 A | 2025-07-17 A |  | 100% |  | 2025-06-12 | 2025-08-07 | 40d |  |  |  |  | 192h | 176h |
| 165 | 1.7.24.1 | 4G Shore Road IFR |  | 4w | 2025-06-12 A | 2025-07-10 A | 105SS+4w | 100% |  | 2025-06-12 | 2025-07-10 | 4w |  |  | finish no earlier than 2025-07-10 | BMcD | 160h | 160h |
| 166 | 1.7.24.2 | 4G Shore Road IFR PSEG LI Review |  | 0.4w | 2025-07-11 A | 2025-07-14 A | 165 | 100% |  | 2025-07-11 | 2025-07-24 | 2w |  |  |  | PSEGLI | 16h | 16h |
| 167 | 1.7.24.3 | 4G Shore Road IFC | milestone | 0w | 2025-07-17 A | 2025-07-17 A | 166 | 100% |  | 2025-07-25 | 2025-08-07 | 2w |  |  |  | BMcD |  |  |
| 168 | 1.7.24.4 | 4G Shore Road As-Built | manual | 1d? | 2025-06-12 | 2025-06-12 |  |  |  | 2025-06-12 | 2025-06-12 | 1d? |  |  |  | BMcD | 8h |  |
| 169 | 1.7.24.5 | 4G Shore Road PSEG LI Review | manual | 1d? | 2025-06-12 | 2025-06-12 |  |  |  | 2025-06-12 | 2025-06-12 | 1d? |  |  |  | PSEGLI | 8h |  |
| 170 | 1.7.25 | **4GH Glen Head** |  | 52d | 2025-04-22 A | 2025-07-03 A |  | 100% |  | 2025-04-22 | 2025-07-03 | 52d |  |  |  |  | 320h | 320h |
| 171 | 1.7.25.1 | 4GH Glen Head IFR |  | 4w | 2025-04-22 A | 2025-05-19 A | 105SS+4w | 100% |  | 2025-04-22 | 2025-05-19 | 4w |  |  |  | BMcD | 160h | 160h |
| 172 | 1.7.25.2 | 4GH Glen Head IFR PSEG LI Review |  | 2w | 2025-05-20 A | 2025-06-03 A | 171 | 100% |  | 2025-05-20 | 2025-06-03 | 2w |  |  |  | PSEGLI | 80h | 80h |
| 173 | 1.7.25.3 | 4GH Glen Head IFC |  | 2w | 2025-06-20 A | 2025-07-03 A | 172 | 100% |  | 2025-06-20 | 2025-07-03 | 2w |  |  | finish no earlier than 2025-07-03 | BMcD | 80h | 80h |
| 174 | 1.7.25.4 | 4GH Glen Head As-Built | milestone, manual | 0d? | 2025-04-22 | 2025-04-22 |  |  |  | 2025-04-22 | 2025-04-22 | 0d? |  |  |  | BMcD |  |  |
| 175 | 1.7.25.5 | 4GH Glen Head As-Built PSEG LI Review | milestone, manual | 0d? | 2025-04-22 | 2025-04-22 |  |  |  | 2025-04-22 | 2025-04-22 | 0d? |  |  |  | PSEGLI |  |  |

| ID | WBS | Task | Type | Duration | Start | Finish | Predecessors | Complete | Baseline start | Baseline finish | Baseline duration | Constraint | Resources | Work | Actual work |
| --- | --- | --- | --- | --- | --- | --- | --- | --- | --- | --- | --- | --- | --- | --- | --- |
| 176 | 1.7.26 | **4B Roslyn** |  | 40d | 2025-05-08 A | 2025-07-03 A |  | 100% | 2025-05-08 | 2025-07-03 | 40d |  |  | 320h | 320h |
| 177 | 1.7.26.1 | 4B Roslyn IFR |  | 4w | 2025-05-08 A | 2025-06-05 A | 105SS+5w | 100% | 2025-05-08 | 2025-06-05 | 4w | finish no earlier than 2025-06-05 | BMcD | 160h | 160h |
| 178 | 1.7.26.2 | 4B Roslyn IFR PSEG LI Review |  | 2w | 2025-06-06 A | 2025-06-19 A | 177 | 100% | 2025-06-06 | 2025-06-19 | 2w |  | PSEGLI | 80h | 80h |
| 179 | 1.7.26.3 | 4B Roslyn IFC |  | 2w | 2025-06-20 A | 2025-07-03 A | 178 | 100% | 2025-06-20 | 2025-07-03 | 2w |  | BMcD | 80h | 80h |
| 180 | 1.7.26.4 | 4B Roslyn As-Built | milestone, manual | 0d? | 2025-05-08 | 2025-05-08 |  |  | 2025-05-08 | 2025-05-08 | 0d? |  | BMcD |  |  |
| 181 | 1.7.26.5 | 4B Roslyn As-Built PSEG LI Review | milestone, manual | 0d? | 2025-05-08 | 2025-05-08 |  |  | 2025-05-08 | 2025-05-08 | 0d? |  | PSEGLI |  |  |
| 182 | 1.7.27 | **5MK Jericho** |  | 40d | 2025-05-01 A | 2025-06-26 A |  | 100% | 2025-05-01 | 2025-06-26 | 40d |  |  | 320h | 320h |
| 183 | 1.7.27.1 | 5MK Jericho IFR |  | 4w | 2025-05-01 A | 2025-05-29 A | 105SS+5w | 100% | 2025-05-01 | 2025-05-29 | 4w | finish no earlier than 2025-05-29 | BMcD | 160h | 160h |
| 184 | 1.7.27.2 | 5MK Jericho IFR PSEG LI Review |  | 2w | 2025-05-30 A | 2025-06-12 A | 183 | 100% | 2025-05-30 | 2025-06-12 | 2w |  | PSEGLI | 80h | 80h |
| 185 | 1.7.27.3 | 5MK Jericho IFC |  | 2w | 2025-06-13 A | 2025-06-26 A | 184 | 100% | 2025-06-13 | 2025-06-26 | 2w |  | BMcD | 80h | 80h |
| 186 | 1.7.27.4 | 5MK Jericho As-Built | milestone, manual | 0d | 2025-05-01 | 2025-05-01 |  |  | 2025-05-01 | 2025-05-01 | 0d |  | BMcD |  |  |
| 187 | 1.7.27.5 | 5MK Jericho As-Built PSEG LI Review | milestone, manual | 0d | 2025-05-01 | 2025-05-01 |  |  | 2025-05-01 | 2025-05-01 | 0d |  | PSEGLI |  |  |
| 188 | 1.7.28 | **3AF Lake Success** |  | 24d | 2025-06-13 A | 2025-07-17 A | 153SS | 100% | 2025-06-13 | 2025-08-08 | 40d |  |  | 176h | 160h |
| 189 | 1.7.28.1 | 3AF Lake Success IFR |  | 3.8w | 2025-06-13 A | 2025-07-10 A | 105SS+6w | 100% | 2025-06-13 | 2025-07-11 | 4w | start no earlier than 2025-06-13 | BMcD | 152h | 152h |
| 190 | 1.7.28.2 | 3AF Lake Success PSEG LI Review |  | 0.2w | 2025-07-14 A | 2025-07-14 A | 189 | 100% | 2025-07-14 | 2025-07-25 | 2w |  | PSEGLI | 8h | 8h |
| 191 | 1.7.28.3 | 3AF Lake Success IFC | milestone | 0w | 2025-07-17 A | 2025-07-17 A | 190 | 100% | 2025-07-28 | 2025-08-08 | 2w | finish no earlier than 2025-08-14 | BMcD |  |  |
| 192 | 1.7.28.4 | 3AF Lake Success As-Built | manual | 1d? | 2025-06-13 | 2025-06-13 |  |  | 2025-06-13 | 2025-06-13 | 1d? |  | BMcD | 8h |  |
| 193 | 1.7.28.5 | 3AF Lake Success PSEG LI Review | manual | 1d? | 2025-06-13 | 2025-06-13 |  |  | 2025-06-13 | 2025-06-13 | 1d? |  | PSEGLI | 8h |  |
| 194 | 1.7.29 | **3AF1 Lake Success Shelter** |  | 25d | 2025-06-12 A | 2025-07-17 A |  | 100% | 2025-06-12 | 2025-08-07 | 40d |  |  | 192h | 176h |
| 195 | 1.7.29.1 | 3AF1 Lake Success Shelter IFR |  | 4w | 2025-06-12 A | 2025-07-10 A | 105SS+6w | 100% | 2025-06-12 | 2025-07-10 | 4w | start no earlier than 2025-06-12 | BMcD | 160h | 160h |
| 196 | 1.7.29.2 | 3AF1 Lake Success Shelter PSEG LI Review |  | 0.4w | 2025-07-11 A | 2025-07-14 A | 195 | 100% | 2025-07-11 | 2025-07-24 | 2w |  | PSEGLI | 16h | 16h |
| 197 | 1.7.29.3 | 3AF1 Lake Success Shelter IFC | milestone | 0w | 2025-07-17 A | 2025-07-17 A | 196 | 100% | 2025-07-25 | 2025-08-07 | 2w |  | BMcD |  |  |
| 198 | 1.7.29.4 | 3AF1 Lake Success Shelter As-Built | manual | 1d? | 2025-06-12 | 2025-06-12 |  |  | 2025-06-12 | 2025-06-12 | 1d? |  | BMcD | 8h |  |
| 199 | 1.7.29.5 | 3AF1 Lake Success Shelter PSEG LI Review | manual | 1d? | 2025-06-12 | 2025-06-12 |  |  | 2025-06-12 | 2025-06-12 | 1d? |  | PSEGLI | 8h |  |

| ID | WBS | Task | Type | Duration | Start | Finish | Predecessors | Complete | Baseline start | Baseline finish | Baseline duration | Constraint | Resources | Work | Actual work |
| --- | --- | --- | --- | --- | --- | --- | --- | --- | --- | --- | --- | --- | --- | --- | --- |
| 200 | 1.7.30 | **3KG Herricks** |  | 15d | 2025-06-26 A | 2025-07-17 A |  | 100% | 2025-06-26 | 2025-08-07 | 30d |  |  | 64h | 48h |
| 201 | 1.7.30.1 | 3KG Herricks IFR |  | 1.2w | 2025-06-26 A | 2025-07-03 A | 105SS+6w | 100% | 2025-06-26 | 2025-07-24 | 4w | finish no earlier than 2025-07-24 | BMcD | 48h | 48h |
| 202 | 1.7.30.2 | 3KG Herricks PSEG LI Review | milestone | 0w | 2025-07-10 A | 2025-07-10 A | 201 | 100% | 2025-07-25 | 2025-07-31 | 1w |  | PSEGLI |  |  |
| 203 | 1.7.30.3 | 3KG Herricks IFC | milestone | 0w | 2025-07-17 A | 2025-07-17 A | 202 | 100% | 2025-08-01 | 2025-08-07 | 1w |  | BMcD |  |  |
| 204 | 1.7.30.4 | 3KG Herricks As-Built | manual | 1d? | 2025-06-26 | 2025-06-26 |  |  | 2025-06-26 | 2025-06-26 | 1d? |  | BMcD | 8h |  |
| 205 | 1.7.30.5 | 3KG Herricks PSEG LI Review | manual | 1d? | 2025-06-26 | 2025-06-26 |  |  | 2025-06-26 | 2025-06-26 | 1d? |  | PSEGLI | 8h |  |
| 206 | 1.7.31 | **4AH Carle Place** |  | 30d | 2025-06-26 A | 2025-08-07 A |  | 100% | 2025-06-26 | 2025-08-07 | 30d |  |  | 256h | 240h |
| 207 | 1.7.31.1 | 4AH Carle Place IFR |  | 4w | 2025-06-26 A | 2025-07-24 A | 105SS+7w | 100% | 2025-06-26 | 2025-07-24 | 4w | finish no earlier than 2025-07-24 | BMcD | 160h | 160h |
| 208 | 1.7.31.2 | 4AH Carle Place PSEG LI Review |  | 1w | 2025-07-25 A | 2025-07-31 A | 207 | 100% | 2025-07-25 | 2025-07-31 | 1w |  | PSEGLI | 40h | 40h |
| 209 | 1.7.31.3 | 4AH Carle Place IFC |  | 1w | 2025-08-01 A | 2025-08-07 A | 208 | 100% | 2025-08-01 | 2025-08-07 | 1w |  | BMcD | 40h | 40h |
| 210 | 1.7.31.4 | 4AH Carle Place As-Built | manual | 1d? | 2025-06-26 | 2025-06-26 |  |  | 2025-06-26 | 2025-06-26 | 1d? |  | BMcD | 8h |  |
| 211 | 1.7.31.5 | 4AH Carle Place PSEG LI Review | manual | 1d? | 2025-06-26 | 2025-06-26 |  |  | 2025-06-26 | 2025-06-26 | 1d? |  | PSEGLI | 8h |  |
| 212 | 1.7.32 | **4MG Mitchell Gardens** |  | 44d | 2025-05-22 A | 2025-07-24 A |  | 100% | 2025-05-22 | 2025-07-24 | 44d |  |  | 336h | 320h |
| 213 | 1.7.32.1 | 4MG Mitchell Gardens IFR |  | 4w | 2025-05-22 A | 2025-06-19 A | 105SS+7w | 100% | 2025-05-22 | 2025-06-19 | 4w | finish no earlier than 2025-06-19 | BMcD | 160h | 160h |
| 214 | 1.7.32.2 | 4MG Mitchell Gardens PSEG LI Review |  | 2w | 2025-06-20 A | 2025-07-03 A | 213 | 100% | 2025-06-20 | 2025-07-03 | 2w |  | PSEGLI | 80h | 80h |
| 215 | 1.7.32.3 | 4MG Mitchell Gardens IFC |  | 2w | 2025-07-11 A | 2025-07-24 A | 214 | 100% | 2025-07-11 | 2025-07-24 | 2w | finish no earlier than 2025-07-24 | BMcD | 80h | 80h |
| 216 | 1.7.32.4 | 4MG Mitchell Gardens As-Built | manual | 1d? | 2025-05-22 | 2025-05-22 |  |  | 2025-05-22 | 2025-05-22 | 1d? |  | BMcD | 8h |  |
| 217 | 1.7.32.5 | 4MG Mitchell Gardens PSEG LI Review | manual | 1d? | 2025-05-22 | 2025-05-22 |  |  | 2025-05-22 | 2025-05-22 | 1d? |  | PSEGLI | 8h |  |
| 218 | 1.7.33 | **4H E. Garden City** |  | 25d | 2025-07-03 A | 2025-08-07 A |  | 100% | 2025-07-03 | 2025-08-14 | 30d |  |  | 136h | 120h |
| 219 | 1.7.33.1 | 4H E. Garden City IFR |  | 2w | 2025-07-03 A | 2025-07-17 A | 105SS+7w | 100% | 2025-07-03 | 2025-07-31 | 4w | finish no earlier than 2025-07-31 | BMcD | 80h | 80h |
| 220 | 1.7.33.2 | 4H E. Garden City PSEG LI Review | milestone | 0w | 2025-07-30 A | 2025-07-30 A | 219 | 100% | 2025-08-01 | 2025-08-07 | 1w |  | PSEGLI |  |  |
| 221 | 1.7.33.3 | 4H E. Garden City IFC |  | 1w | 2025-08-01 A | 2025-08-07 A | 220 | 100% | 2025-08-08 | 2025-08-14 | 1w | finish no earlier than 2025-08-07 | BMcD | 40h | 40h |
| 222 | 1.7.33.4 | 4H E. Garden City As-Built | manual | 1d? | 2025-07-03 | 2025-07-03 |  |  | 2025-07-03 | 2025-07-03 | 1d? |  | BMcD | 8h |  |
| 223 | 1.7.33.5 | 4H E. Garden City PSEG LI Review | manual | 1d? | 2025-07-03 | 2025-07-03 |  |  | 2025-07-03 | 2025-07-03 | 1d? |  | PSEGLI | 8h |  |

| ID | WBS | Task | Type | Duration | Start | Finish | Predecessors | Complete | Remaining | Baseline start | Baseline finish | Baseline duration | Total slack | Free slack | Constraint | Resources | Work | Actual work |
| --- | --- | --- | --- | --- | --- | --- | --- | --- | --- | --- | --- | --- | --- | --- | --- | --- | --- | --- |
| 224 | 1.7.34 | **3D Manhasset** |  | 30d | 2025-07-03 A | 2025-08-14 A |  | 100% |  | 2025-07-03 | 2025-08-14 | 30d |  |  |  |  | 256h | 240h |
| 225 | 1.7.34.1 | 3D Manhasset IFR |  | 4w | 2025-07-03 A | 2025-07-31 A | 105SS+8w | 100% |  | 2025-07-03 | 2025-07-31 | 4w |  |  | finish no earlier than 2025-07-31 | BMcD | 160h | 160h |
| 226 | 1.7.34.2 | 3D Manhasset PSEG LI Review |  | 1w | 2025-08-01 A | 2025-08-07 A | 225 | 100% |  | 2025-08-01 | 2025-08-07 | 1w |  |  |  | PSEGLI | 40h | 40h |
| 227 | 1.7.34.3 | 3D Manhasset IFC |  | 1w | 2025-08-08 A | 2025-08-14 A | 226 | 100% |  | 2025-08-08 | 2025-08-14 | 1w |  |  |  | BMcD | 40h | 40h |
| 228 | 1.7.34.4 | 3D Manhasset As-Built | manual | 1d? | 2025-07-03 | 2025-07-03 |  |  |  | 2025-07-03 | 2025-07-03 | 1d? |  |  |  | BMcD | 8h |  |
| 229 | 1.7.34.5 | 3D Manhasset PSEG LI Review | manual | 1d? | 2025-07-03 | 2025-07-03 |  |  |  | 2025-07-03 | 2025-07-03 | 1d? |  |  |  | PSEGLI | 8h |  |
| 230 | 1.7.35 | **3D1 Manhasset Shelter** |  | 30d | 2025-07-03 A | 2025-08-14 A |  | 100% |  | 2025-07-03 | 2025-08-14 | 30d |  |  |  |  | 256h | 240h |
| 231 | 1.7.35.1 | 3D1 Manhasset Shelter IFR |  | 4w | 2025-07-03 A | 2025-07-31 A | 105SS+8w | 100% |  | 2025-07-03 | 2025-07-31 | 4w |  |  | finish no earlier than 2025-07-31 | BMcD | 160h | 160h |
| 232 | 1.7.35.2 | 3D Manhasset Shelter PSEG LI Review |  | 1w | 2025-08-01 A | 2025-08-07 A | 231 | 100% |  | 2025-08-01 | 2025-08-07 | 1w |  |  |  | PSEGLI | 40h | 40h |
| 233 | 1.7.35.3 | 3D Manhasset Shelter IFC |  | 1w | 2025-08-08 A | 2025-08-14 A | 232 | 100% |  | 2025-08-08 | 2025-08-14 | 1w |  |  |  | BMcD | 40h | 40h |
| 234 | 1.7.35.4 | 3D Manhasset Shelter As-Built | manual | 1d? | 2025-07-03 | 2025-07-03 |  |  |  | 2025-07-03 | 2025-07-03 | 1d? |  |  |  | BMcD | 8h |  |
| 235 | 1.7.35.5 | 3D Manhasset Shelter PSEG LI Review | manual | 1d? | 2025-07-03 | 2025-07-03 |  |  |  | 2025-07-03 | 2025-07-03 | 1d? |  |  |  | PSEGLI | 8h |  |
| 236 | 1.8 | **Construction, Installation, and Acceptance** |  | 175d | 2025-09-29 A | 2026-06-25 |  | 5% | 167.05d | 2025-07-21 | 2026-01-20 | 126d | 0d |  |  |  |  |  |
| 237 | 1.8.1 | Cutover Plan |  | 2w | 2025-09-29 | 2025-10-10 |  |  |  | 2025-07-21 | 2025-08-01 | 2w | 146d |  | start no earlier than 2025-09-29 |  |  |  |
| 238 | 1.8.2 | Staging and Testing |  | 5d | 2025-09-29 | 2025-10-03 |  |  |  | 2025-08-11 | 2025-08-22 | 2w | 151d |  | start no earlier than 2025-09-29 |  |  |  |
| 239 | 1.8.3 | **Construction, Installation, Site Acceptance - Construction Vendor** |  | 29d | 2025-09-29 | 2025-11-06 |  |  |  | 2025-08-25 | 2025-10-03 | 29d | 0d |  |  |  |  |  |
| 240 | 1.8.3.1 | Week # 1 Site Survey - 31 sites | manual | 5d | 2025-09-29 | 2025-10-03 |  |  |  | 2025-08-25 | 2025-08-29 | 5d |  |  | start no earlier than 2025-09-29 |  |  |  |
| 241 | 1.8.3.2 | **Implement Materials & Power** |  | 24d | 2025-10-06 | 2025-11-06 |  |  |  | 2025-09-02 | 2025-10-03 | 24d | 13d |  |  |  |  |  |
| 242 | 1.8.3.2.1 | **Week # 2** |  | 5d | 2025-10-06 | 2025-10-10 |  |  |  | 2025-09-02 | 2025-09-08 | 5d | 13d |  |  |  |  |  |
| 243 | 1.8.3.2.1.1 | Melville |  | 5d | 2025-10-06 | 2025-10-10 | 240 |  |  | 2025-09-02 | 2025-09-08 | 5d | 165d |  |  |  |  |  |
| 244 | 1.8.3.2.1.2 | 6BR Bagatelle |  | 5d | 2025-10-06 | 2025-10-10 | 240 |  |  | 2025-09-02 | 2025-09-08 | 5d | 165d |  | start no earlier than 2025-08-25 |  |  |  |
| 245 | 1.8.3.2.1.3 | 6DL Pilgrim |  | 5d | 2025-10-06 | 2025-10-10 | 240 |  |  | 2025-09-02 | 2025-09-08 | 5d | 165d |  | start no earlier than 2025-08-25 |  |  |  |
| 246 | 1.8.3.2.1.4 | 6P Pulaski |  | 5d | 2025-10-06 | 2025-10-10 | 240 |  |  | 2025-09-02 | 2025-09-08 | 5d | 165d |  | start no earlier than 2025-08-25 |  |  |  |
| 247 | 1.8.3.2.1.5 | 6P1 Pulaski Shelter |  | 5d | 2025-10-06 | 2025-10-10 | 240 |  |  | 2025-09-02 | 2025-09-08 | 5d | 165d |  | start no earlier than 2025-08-25 |  |  |  |
| 248 | 1.8.3.2.1.6 | 3AF Lake Success |  | 5d | 2025-10-06 | 2025-10-10 | 240 |  |  | 2025-09-02 | 2025-09-08 | 5d | 165d |  | start no earlier than 2025-08-25 |  |  |  |
| 249 | 1.8.3.2.1.7 | 3AF1 Lake Success Shelter |  | 5d | 2025-10-06 | 2025-10-10 | 240 |  |  | 2025-09-02 | 2025-09-08 | 5d | 165d |  | start no earlier than 2025-08-25 |  |  |  |
| 250 | 1.8.3.2.1.8 | 6RL Elwood |  | 5d | 2025-10-06 | 2025-10-10 | 240 |  |  | 2025-09-02 | 2025-09-08 | 5d | 165d |  | start no earlier than 2025-08-25 |  |  |  |
| 251 | 1.8.3.2.1.9 | 6Q Oakwood |  | 5d | 2025-10-06 | 2025-10-10 | 240 |  |  | 2025-09-02 | 2025-09-08 | 5d | 13d | 0d | start no earlier than 2025-08-25 |  |  |  |

| ID | WBS | Task | Duration | Start | Finish | Predecessors | Baseline start | Baseline finish | Baseline duration | Total slack | Free slack |
| --- | --- | --- | --- | --- | --- | --- | --- | --- | --- | --- | --- |
| 252 | 1.8.3.2.2 | **Week # 3** | 5d | 2025-10-13 | 2025-10-17 |  | 2025-09-09 | 2025-09-15 | 5d | 13d |  |
| 253 | 1.8.3.2.2.1 | 5HK: Hix Hub (Primary) | 5d | 2025-10-13 | 2025-10-17 | 251 | 2025-09-09 | 2025-09-15 | 5d | 160d |  |
| 254 | 1.8.3.2.2.2 | 5HK: Hix Hub (Secondary) | 5d | 2025-10-13 | 2025-10-17 | 251 | 2025-09-09 | 2025-09-15 | 5d | 13d | 0d |
| 255 | 1.8.3.2.2.3 | 6UL Greenlawn | 5d | 2025-10-13 | 2025-10-17 | 251 | 2025-09-09 | 2025-09-15 | 5d | 160d |  |
| 256 | 1.8.3.2.2.4 | 6UL1 Greenlawn Shelter | 5d | 2025-10-13 | 2025-10-17 | 251 | 2025-09-09 | 2025-09-15 | 5d | 160d |  |
| 257 | 1.8.3.2.2.5 | 6U Ruland | 5d | 2025-10-13 | 2025-10-17 | 251 | 2025-09-09 | 2025-09-15 | 5d | 160d |  |
| 258 | 1.8.3.2.2.6 | 5M Newbridge | 5d | 2025-10-13 | 2025-10-17 | 251 | 2025-09-09 | 2025-09-15 | 5d | 160d |  |
| 259 | 1.8.3.2.3 | **Week # 4** | 5d | 2025-10-20 | 2025-10-24 |  | 2025-09-16 | 2025-09-22 | 5d | 13d |  |
| 260 | 1.8.3.2.3.1 | Alternate Control Center (ACC) | 5d | 2025-10-20 | 2025-10-24 | 254 | 2025-09-16 | 2025-09-22 | 5d | 155d |  |
| 261 | 1.8.3.2.3.2 | 5k Syosset | 5d | 2025-10-20 | 2025-10-24 | 254 | 2025-09-16 | 2025-09-22 | 5d | 155d |  |
| 262 | 1.8.3.2.3.3 | 5K1 Syosset Shelter | 5d | 2025-10-20 | 2025-10-24 | 254 | 2025-09-16 | 2025-09-22 | 5d | 155d |  |
| 263 | 1.8.3.2.3.4 | 4H East Garden City | 5d | 2025-10-20 | 2025-10-24 | 254 | 2025-09-16 | 2025-09-22 | 5d | 13d | 0d |
| 264 | 1.8.3.2.4 | **Week # 5** | 5d | 2025-10-27 | 2025-10-31 |  | 2025-09-23 | 2025-09-26 | 4d | 13d |  |
| 265 | 1.8.3.2.4.1 | 4MG Mitchell Gardens | 5d | 2025-10-27 | 2025-10-31 | 263 | 2025-09-23 | 2025-09-26 | 4d | 150d |  |
| 266 | 1.8.3.2.4.2 | 4AH Carle Place | 5d | 2025-10-27 | 2025-10-31 | 263 | 2025-09-23 | 2025-09-26 | 4d | 150d |  |
| 267 | 1.8.3.2.4.3 | 3KG Herricks | 5d | 2025-10-27 | 2025-10-31 | 263 | 2025-09-23 | 2025-09-26 | 4d | 150d |  |
| 268 | 1.8.3.2.4.4 | 6Fo: Norhtport outdoor | 5d | 2025-10-27 | 2025-10-31 | 263 | 2025-09-23 | 2025-09-26 | 4d | 150d |  |
| 269 | 1.8.3.2.4.5 | 6Fi: Norhtport indoor | 5d | 2025-10-27 | 2025-10-31 | 263 | 2025-09-23 | 2025-09-26 | 4d | 150d |  |
| 270 | 1.8.3.2.4.6 | 3D1 Manhasset Shelter | 5d | 2025-10-27 | 2025-10-31 | 263 |  |  |  | 150d |  |
| 271 | 1.8.3.2.4.7 | 3D Manhasset | 5d | 2025-10-27 | 2025-10-31 | 263 | 2025-09-23 | 2025-09-26 | 4d | 13d | 0d |
| 272 | 1.8.3.2.5 | **Week # 6** | 4d | 2025-11-03 | 2025-11-06 |  | 2025-09-29 | 2025-10-03 | 5d | 13d |  |
| 273 | 1.8.3.2.5.1 | 5MK Jericho | 4d | 2025-11-03 | 2025-11-06 | 271 | 2025-09-29 | 2025-10-03 | 5d | 146d |  |
| 274 | 1.8.3.2.5.2 | 4XH NC Glenwood | 4d | 2025-11-03 | 2025-11-06 | 271 | 2025-09-29 | 2025-10-03 | 5d | 146d |  |
| 275 | 1.8.3.2.5.3 | 4G Shore Road | 4d | 2025-11-03 | 2025-11-06 | 271 | 2025-09-29 | 2025-10-03 | 5d | 146d |  |
| 276 | 1.8.3.2.5.4 | 4GH Glen Head | 4d | 2025-11-03 | 2025-11-06 | 271 | 2025-09-29 | 2025-10-03 | 5d | 146d |  |
| 277 | 1.8.3.2.5.5 | 4B Roslyn | 4d | 2025-11-03 | 2025-11-06 | 271 | 2025-09-29 | 2025-10-03 | 5d | 13d | 0d |
| 278 | 1.8.4 | Site Acceptance Testing | 3d | 2025-11-07 | 2025-11-11 | 277 | 2025-10-06 | 2025-10-08 | 3d | 13d |  |

| ID | WBS | Task | Type | Duration | Start | Finish | Predecessors | Complete | Remaining | Baseline start | Baseline finish | Baseline duration | Total slack | Free slack | Constraint |
| --- | --- | --- | --- | --- | --- | --- | --- | --- | --- | --- | --- | --- | --- | --- | --- |
| 279 | 1.8.5 | **Cutover - Phase 1 Sites** |  | 130d | 2025-12-08 A | 2026-06-25 | 278 | 12% | 115.04d | 2025-10-09 | 2026-01-20 | 69d | 0d |  |  |
| 280 | 1.8.5.1 | **CWDM Cutover** |  | 10d | 2025-12-08 A | 2026-01-07 |  | 37% | 6.29d | 2025-10-09 | 2025-10-22 | 10d |  |  |  |
| 281 | 1.8.5.1.1 | 4H East Garden City |  | 1d | 2025-12-08 A | 2025-12-08 A | 278 | 100% |  | 2025-10-14 | 2025-10-14 | 1d |  |  |  |
| 282 | 1.8.5.1.2 | 4MG Mitchell Gardens |  | 1d | 2025-12-08 A | 2025-12-08 A | 278 | 100% |  | 2025-10-09 | 2025-10-09 | 1d |  |  |  |
| 283 | 1.8.5.1.3 | 4AH Carle Place |  | 1d | 2025-12-08 A | 2025-12-08 A | 278 | 100% |  | 2025-10-09 | 2025-10-09 | 1d |  |  |  |
| 284 | 1.8.5.1.4 | 3KG Herricks |  | 2d | 2025-12-08 A | 2025-12-09 A | 278 | 100% |  | 2025-10-09 | 2025-10-09 | 1d |  |  |  |
| 285 | 1.8.5.1.5 | 3AF Lake Success |  | 2d | 2025-12-08 A | 2025-12-09 A | 278 | 100% |  | 2025-10-09 | 2025-10-09 | 1d |  |  |  |
| 286 | 1.8.5.1.6 | 3AF1 Lake Success Shelter |  | 2d | 2025-12-08 A | 2025-12-09 A | 278 | 100% |  | 2025-10-09 | 2025-10-09 | 1d |  |  |  |
| 287 | 1.8.5.1.7 | 3D1 Manhasset Shelter | milestone | 0d | 2025-12-09 A | 2025-12-09 A | 286 | 100% |  | 2025-10-10 | 2025-10-10 | 1d |  |  |  |
| 288 | 1.8.5.1.8 | 3D Manhasset | milestone | 0d | 2025-12-09 A | 2025-12-09 A | 286 | 100% |  | 2025-10-10 | 2025-10-10 | 1d |  |  |  |
| 289 | 1.8.5.1.9 | 4XH NC Glenwood |  | 1d | 2025-12-10 | 2025-12-10 | 286 |  |  | 2025-10-10 | 2025-10-10 | 1d | 122d | 0d |  |
| 290 | 1.8.5.1.10 | 4G Shore Road |  | 1d | 2025-12-10 | 2025-12-10 | 286 |  |  | 2025-10-13 | 2025-10-13 | 1d | 127d |  |  |
| 291 | 1.8.5.1.11 | 4GH Glen Head |  | 1d | 2025-12-11 | 2025-12-11 | 289 |  |  | 2025-10-13 | 2025-10-13 | 1d | 126d |  |  |
| 292 | 1.8.5.1.12 | 4B Roslyn |  | 1d | 2025-12-11 | 2025-12-11 | 289 |  |  | 2025-10-13 | 2025-10-13 | 1d | 122d | 0d |  |
| 293 | 1.8.5.1.13 | 5MK Jericho |  | 1d | 2025-12-11 | 2025-12-11 | 289 |  |  | 2025-10-14 | 2025-10-14 | 1d | 126d |  |  |
| 294 | 1.8.5.1.14 | 6UL Greenlawn |  | 1d | 2025-12-12 | 2025-12-12 | 292 |  |  | 2025-10-14 | 2025-10-14 | 1d | 125d |  |  |
| 295 | 1.8.5.1.15 | 6UL1 Greenlawn Shelter |  | 1d | 2025-12-12 | 2025-12-12 | 292 |  |  | 2025-10-15 | 2025-10-15 | 1d | 125d |  |  |
| 296 | 1.8.5.1.16 | 6Q Oakwood |  | 1d | 2025-12-12 | 2025-12-12 | 292 |  |  | 2025-10-15 | 2025-10-15 | 1d | 122d | 0d |  |
| 297 | 1.8.5.1.17 | 6P Pulaski |  | 1d | 2025-12-15 | 2025-12-15 | 296 |  |  | 2025-10-16 | 2025-10-16 | 1d | 124d |  |  |
| 298 | 1.8.5.1.18 | 6P Pulaski Shelter |  | 1d | 2025-12-15 | 2025-12-15 | 296 |  |  | 2025-10-16 | 2025-10-16 | 1d | 122d | 0d |  |
| 299 | 1.8.5.1.19 | 6Fo Northport Outdoor |  | 1d | 2025-12-16 | 2025-12-16 | 298 |  |  | 2025-10-17 | 2025-10-17 | 1d | 123d |  |  |
| 300 | 1.8.5.1.20 | 6Fi Northport Indoor |  | 1d | 2025-12-16 | 2025-12-16 | 298 |  |  | 2025-10-17 | 2025-10-17 | 1d | 123d |  |  |
| 301 | 1.8.5.1.21 | 6RL Elwood |  | 1d | 2025-12-16 | 2025-12-16 | 298 |  |  | 2025-10-17 | 2025-10-17 | 1d | 122d | 0d |  |
| 302 | 1.8.5.1.22 | 5K Syosset |  | 1d | 2025-12-17 | 2025-12-17 | 301 |  |  | 2025-10-20 | 2025-10-20 | 1d | 122d |  |  |
| 303 | 1.8.5.1.23 | 5K1 Syosset Shelter |  | 1d | 2025-12-17 | 2025-12-17 | 301 |  |  | 2025-10-20 | 2025-10-20 | 1d | 122d |  |  |
| 304 | 1.8.5.1.24 | 6BR Bagatelle |  | 1d | 2025-12-17 | 2025-12-17 | 301 |  |  | 2025-10-20 | 2025-10-20 | 1d | 122d |  |  |
| 305 | 1.8.5.1.25 | Melville |  | 1d | 2026-01-06 | 2026-01-06 |  |  |  | 2025-10-21 | 2025-10-21 | 1d | 120d | 0d | start no earlier than 2026-01-06 |
| 306 | 1.8.5.1.26 | 6DL Pilgrim |  | 1d | 2026-01-06 | 2026-01-06 | 305SS |  |  | 2025-10-21 | 2025-10-21 | 1d | 121d |  |  |
| 307 | 1.8.5.1.27 | 5HK Hix Hub (Primary) |  | 1d | 2026-01-06 | 2026-01-06 | 305SS |  |  | 2025-10-21 | 2025-10-21 | 1d | 121d |  |  |
| 308 | 1.8.5.1.28 | 5HK Hix Hub (Secondary) |  | 1d | 2026-01-06 | 2026-01-06 | 305SS |  |  | 2025-10-21 | 2025-10-21 | 1d | 120d | 0d |  |
| 309 | 1.8.5.1.29 | 5M Newbridge |  | 1d | 2026-01-07 | 2026-01-07 | 308 |  |  | 2025-10-22 | 2025-10-22 | 1d | 120d |  |  |
| 310 | 1.8.5.1.30 | ACC |  | 1d | 2026-01-07 | 2026-01-07 | 308 |  |  | 2025-10-22 | 2025-10-22 | 1d | 120d |  |  |
| 311 | 1.8.5.1.31 | 6U Ruland |  | 4d | 2026-01-08 A | 2026-01-13 A | 310 | 100% |  | 2025-10-22 | 2025-10-22 | 1d |  |  |  |

Notes:
- 282: Also visit Ruland to complete Melville
- 303: DC Power Needed

| ID | WBS | Task | Type | Duration | Start | Finish | Predecessors | Baseline start | Baseline finish | Baseline duration | Total slack |
| --- | --- | --- | --- | --- | --- | --- | --- | --- | --- | --- | --- |
| 312 | 1.8.5.2 | **Layer 3 Connect - Security and Radio** |  | 27d | 2026-04-06 | 2026-05-12 |  | 2025-10-23 | 2025-12-02 | 27d |  |
| 313 | 1.8.5.2.1 | Melville | manual | 1d | 2026-03-09 | 2026-03-09 |  | 2025-10-23 | 2025-10-23 | 1d |  |
| 314 | 1.8.5.2.2 | 6BR Bagatelle | manual | 1d | 2026-03-09 | 2026-03-09 |  | 2025-10-23 | 2025-10-23 | 1d |  |
| 315 | 1.8.5.2.3 | 6DL Pilgrim |  | 1d | 2026-04-06 | 2026-04-06 | 314 | 2025-10-24 | 2025-10-24 | 1d | 0d |
| 316 | 1.8.5.2.4 | 6P Pulaski |  | 1d | 2026-04-07 | 2026-04-07 | 315 | 2025-10-27 | 2025-10-27 | 1d | 56d |
| 317 | 1.8.5.2.5 | 6P Pulaski Shelter |  | 1d | 2026-04-07 | 2026-04-07 | 315 | 2025-10-27 | 2025-10-27 | 1d | 0d |
| 318 | 1.8.5.2.6 | 6Fo Northport Outdoor |  | 1d | 2026-04-08 | 2026-04-08 | 317 | 2025-10-28 | 2025-10-28 | 1d | 0d |
| 319 | 1.8.5.2.7 | 6Fi Northport Indoor |  | 2d | 2026-04-09 | 2026-04-10 | 318 | 2025-10-29 | 2025-10-30 | 2d | 53d |
| 320 | 1.8.5.2.8 | 6RL Elwood |  | 2d | 2026-04-09 | 2026-04-10 | 318 | 2025-10-29 | 2025-10-30 | 2d | 0d |
| 321 | 1.8.5.2.9 | 6UL Greenlawn |  | 1d | 2026-04-13 | 2026-04-13 | 320 | 2025-10-31 | 2025-10-31 | 1d | 52d |
| 322 | 1.8.5.2.10 | 6UL1 Greenlawn Shelter |  | 1d | 2026-04-13 | 2026-04-13 | 320 | 2025-10-31 | 2025-10-31 | 1d | 0d |
| 323 | 1.8.5.2.11 | 6Q Oakwood |  | 1d | 2026-04-14 | 2026-04-14 | 322 | 2025-11-03 | 2025-11-03 | 1d | 0d |
| 324 | 1.8.5.2.12 | 5K Syosset |  | 1d | 2026-04-15 | 2026-04-15 | 323 | 2025-11-04 | 2025-11-04 | 1d | 0d |
| 325 | 1.8.5.2.13 | 5K1 Syosset Shelter |  | 1d | 2026-04-16 | 2026-04-16 | 324 | 2025-11-05 | 2025-11-05 | 1d | 0d |
| 326 | 1.8.5.2.14 | 5HK Hix Hub (Primary) |  | 1d | 2026-04-17 | 2026-04-17 | 325 | 2025-11-06 | 2025-11-06 | 1d | 0d |
| 327 | 1.8.5.2.15 | 5HK Hix Hub (Secondary) |  | 2d | 2026-04-20 | 2026-04-21 | 326 | 2025-11-07 | 2025-11-10 | 2d | 0d |
| 328 | 1.8.5.2.16 | 5M Newbridge |  | 1d | 2026-04-22 | 2026-04-22 | 327 | 2025-11-11 | 2025-11-11 | 1d | 0d |
| 329 | 1.8.5.2.17 | ACC |  | 2d | 2026-04-23 | 2026-04-24 | 328 | 2025-11-12 | 2025-11-13 | 2d | 43d |
| 330 | 1.8.5.2.18 | 6U Ruland |  | 2d | 2026-04-23 | 2026-04-24 | 328 | 2025-11-12 | 2025-11-13 | 2d | 0d |
| 331 | 1.8.5.2.19 | 4H East Garden City |  | 1d | 2026-04-27 | 2026-04-27 | 330 | 2025-11-14 | 2025-11-14 | 1d | 0d |
| 332 | 1.8.5.2.20 | 4MG Mitchell Gardens |  | 1d | 2026-04-28 | 2026-04-28 | 331 | 2025-11-17 | 2025-11-17 | 1d | 0d |
| 333 | 1.8.5.2.21 | 4AH Carle Place |  | 1d | 2026-04-29 | 2026-04-29 | 332 | 2025-11-18 | 2025-11-18 | 1d | 0d |
| 334 | 1.8.5.2.22 | 3KG Herricks |  | 1d | 2026-04-30 | 2026-04-30 | 333 | 2025-11-19 | 2025-11-19 | 1d | 0d |
| 335 | 1.8.5.2.23 | 3AF Lake Success |  | 1d | 2026-05-01 | 2026-05-01 | 334 | 2025-11-20 | 2025-11-20 | 1d | 0d |
| 336 | 1.8.5.2.24 | 3AF1 Lake Success Shelter |  | 1d | 2026-05-04 | 2026-05-04 | 335 | 2025-11-21 | 2025-11-21 | 1d | 0d |
| 337 | 1.8.5.2.25 | 3D1 Manhasset Shelter |  | 1d | 2026-05-05 | 2026-05-05 | 336 | 2025-11-24 | 2025-11-24 | 1d | 36d |
| 338 | 1.8.5.2.26 | 3D Manhasset |  | 1d | 2026-05-05 | 2026-05-05 | 336 | 2025-11-24 | 2025-11-24 | 1d | 0d |
| 339 | 1.8.5.2.27 | 4XH NC Glenwood |  | 1d | 2026-05-06 | 2026-05-06 | 338 | 2025-11-25 | 2025-11-25 | 1d | 35d |
| 340 | 1.8.5.2.28 | 4G Shore Road |  | 1d | 2026-05-06 | 2026-05-06 | 338 | 2025-11-25 | 2025-11-25 | 1d | 0d |
| 341 | 1.8.5.2.29 | 4GH Glen Head |  | 1d | 2026-05-07 | 2026-05-07 | 340 | 2025-11-26 | 2025-11-26 | 1d | 0d |
| 342 | 1.8.5.2.30 | 4B Roslyn |  | 1d | 2026-05-08 | 2026-05-08 | 341 | 2025-12-01 | 2025-12-01 | 1d | 0d |
| 343 | 1.8.5.2.31 | 5MK Jericho |  | 1d | 2026-05-11 | 2026-05-11 | 342 | 2025-12-02 | 2025-12-02 | 1d | 0d |

| ID | WBS | Task | Duration | Start | Finish | Predecessors | Baseline start | Baseline finish | Baseline duration | Total slack |
| --- | --- | --- | --- | --- | --- | --- | --- | --- | --- | --- |
| 344 | 1.8.5.3 | **Layer 2/1 Cutover - Relay/RTU Cutover** | 32d | 2026-05-12 | 2026-06-25 |  | 2025-12-03 | 2026-01-20 | 32d | 0d |
| 345 | 1.8.5.3.1 | Melville | 1d | 2026-05-12 | 2026-05-12 | 343 | 2025-12-03 | 2025-12-03 | 1d | 31d |
| 346 | 1.8.5.3.2 | 6BR Bagatelle | 1d | 2026-05-12 | 2026-05-12 | 343 | 2025-12-03 | 2025-12-03 | 1d | 0d |
| 347 | 1.8.5.3.3 | 6DL Pilgrim | 1d | 2026-05-13 | 2026-05-13 | 346 | 2025-12-04 | 2025-12-04 | 1d | 0d |
| 348 | 1.8.5.3.4 | 6P Pulaski | 1d | 2026-05-14 | 2026-05-14 | 347 | 2025-12-05 | 2025-12-05 | 1d | 29d |
| 349 | 1.8.5.3.5 | 6P Pulaski Shelter | 1d | 2026-05-14 | 2026-05-14 | 347 | 2025-12-05 | 2025-12-05 | 1d | 0d |
| 350 | 1.8.5.3.6 | 6Fo Northport Outdoor | 1d | 2026-05-15 | 2026-05-15 | 349 | 2025-12-08 | 2025-12-08 | 1d | 0d |
| 351 | 1.8.5.3.7 | 6Fi Northport Indoor | 2d | 2026-05-18 | 2026-05-19 | 350 | 2025-12-09 | 2025-12-10 | 2d | 26d |
| 352 | 1.8.5.3.8 | 6RL Elwood | 2d | 2026-05-18 | 2026-05-19 | 350 | 2025-12-09 | 2025-12-10 | 2d | 0d |
| 353 | 1.8.5.3.9 | 6UL Greenlawn | 1d | 2026-05-20 | 2026-05-20 | 352 | 2025-12-11 | 2025-12-11 | 1d | 25d |
| 354 | 1.8.5.3.10 | 6UL1 Greenlawn Shelter | 1d | 2026-05-20 | 2026-05-20 | 352 | 2025-12-11 | 2025-12-11 | 1d | 0d |
| 355 | 1.8.5.3.11 | 6Q Oakwood | 1d | 2026-05-21 | 2026-05-21 | 354 | 2025-12-12 | 2025-12-12 | 1d | 0d |
| 356 | 1.8.5.3.12 | 5K Syosset | 1d | 2026-05-22 | 2026-05-22 | 355 | 2025-12-15 | 2025-12-15 | 1d | 0d |
| 357 | 1.8.5.3.13 | 5K1 Syosset Shelter | 2d | 2026-05-26 | 2026-05-27 | 356 | 2025-12-16 | 2025-12-17 | 2d | 0d |
| 358 | 1.8.5.3.14 | 5HK Hix Hub (Primary) | 1d | 2026-05-28 | 2026-05-28 | 357 | 2025-12-18 | 2025-12-18 | 1d | 0d |
| 359 | 1.8.5.3.15 | 5HK Hix Hub (Secondary) | 3d | 2026-05-29 | 2026-06-02 | 358 | 2025-12-19 | 2025-12-23 | 3d | 0d |
| 360 | 1.8.5.3.16 | 5M Newbridge | 3d | 2026-06-03 | 2026-06-05 | 359 | 2025-12-26 | 2025-12-30 | 3d | 0d |
| 361 | 1.8.5.3.17 | ACC | 3d | 2026-06-08 | 2026-06-10 | 360 | 2025-12-31 | 2026-01-05 | 3d | 11d |
| 362 | 1.8.5.3.18 | 6U Ruland | 3d | 2026-06-08 | 2026-06-10 | 360 | 2025-12-31 | 2026-01-05 | 3d | 0d |
| 363 | 1.8.5.3.19 | 4H East Garden City | 1d | 2026-06-11 | 2026-06-11 | 362 | 2026-01-06 | 2026-01-06 | 1d | 0d |
| 364 | 1.8.5.3.20 | 4MG Mitchell Gardens | 1d | 2026-06-12 | 2026-06-12 | 363 | 2026-01-07 | 2026-01-07 | 1d | 0d |
| 365 | 1.8.5.3.21 | 4AH Carle Place | 1d | 2026-06-15 | 2026-06-15 | 364 | 2026-01-08 | 2026-01-08 | 1d | 0d |
| 366 | 1.8.5.3.22 | 3KG Herricks | 1d | 2026-06-16 | 2026-06-16 | 365 | 2026-01-09 | 2026-01-09 | 1d | 0d |
| 367 | 1.8.5.3.23 | 3AF Lake Success | 1d | 2026-06-17 | 2026-06-17 | 366 | 2026-01-12 | 2026-01-12 | 1d | 0d |
| 368 | 1.8.5.3.24 | 3AF1 Lake Success Shelter | 1d | 2026-06-18 | 2026-06-18 | 367 | 2026-01-13 | 2026-01-13 | 1d | 0d |
| 369 | 1.8.5.3.25 | 3D1 Manhasset Shelter | 1d | 2026-06-19 | 2026-06-19 | 368 | 2026-01-14 | 2026-01-14 | 1d | 4d |
| 370 | 1.8.5.3.26 | 3D Manhasset | 1d | 2026-06-19 | 2026-06-19 | 368 | 2026-01-14 | 2026-01-14 | 1d | 0d |
| 371 | 1.8.5.3.27 | 4XH NC Glenwood | 1d | 2026-06-22 | 2026-06-22 | 370 | 2026-01-15 | 2026-01-15 | 1d | 3d |
| 372 | 1.8.5.3.28 | 4G Shore Road | 1d | 2026-06-22 | 2026-06-22 | 370 | 2026-01-15 | 2026-01-15 | 1d | 0d |
| 373 | 1.8.5.3.29 | 4GH Glen Head | 1d | 2026-06-23 | 2026-06-23 | 372 | 2026-01-16 | 2026-01-16 | 1d | 0d |
| 374 | 1.8.5.3.30 | 4B Roslyn | 1d | 2026-06-24 | 2026-06-24 | 373 | 2026-01-19 | 2026-01-19 | 1d | 0d |
| 375 | 1.8.5.3.31 | 5MK Jericho | 1d | 2026-06-25 | 2026-06-25 | 374 | 2026-01-20 | 2026-01-20 | 1d | 0d |
